# Realizzazione ed esercizio del Complesso CEMEX - ULTIMO INTEGRATO

Schedule from Primavera P6.

## Calendars

- Standard 6 Day work week with ITA Basic Holidays + 1 week closure (Xmas) (2023-2036): Mon-Sat 08:00-12:00, 13:00-17:00; Sun off. Exceptions (off unless hours are given): 2009-04-13, 2009-05-01, 2009-06-01 to 2009-06-02, 2009-08-07 08:00-16:00, 2009-08-10 to 2009-08-14 08:00-16:00, 2009-08-17 to 2009-08-21 08:00-16:00, 2009-08-24 08:00-16:00, 2009-12-07 to 2009-12-08, 2009-12-24 to 2009-12-25, 2009-12-28 to 2010-01-01, 2010-01-04 to 2010-01-06, 2010-06-02, 2010-08-09 to 2010-08-13, 2010-08-16 to 2010-08-20, 2010-11-01, 2010-12-08, 2010-12-24, 2010-12-27 to 2010-12-31, 2011-01-03 to 2011-01-05 08:00-16:00, 2011-01-06 to 2011-01-07, 2011-04-25, 2011-06-02, 2011-06-24, 2011-08-08 to 2011-08-12, 2011-08-15 to 2011-08-19, 2011-08-22 to 2011-08-26 08:00-16:00, 2011-11-01, 2011-12-08 to 2011-12-09, 2011-12-26 to 2011-12-30, 2012-01-02 to 2012-01-06, 2012-04-09, 2012-04-25, 2012-04-30 to 2012-05-01, 2012-08-13 to 2012-08-17, 2012-08-20 to 2012-08-24, 2012-11-01 to 2012-11-02, 2012-12-24 to 2012-12-28, 2012-12-31 to 2013-01-04, 2013-04-01, 2013-04-25, 2013-04-26 08:00-16:00, 2013-05-01, 2013-08-12 to 2013-08-16, 2013-08-19 to 2013-08-23, 2013-12-23 to 2013-12-27, 2013-12-30 to 2014-01-03, 2014-01-06, 2014-04-25, 2014-05-01 to 2014-05-02, 2014-06-02, 2014-08-11 to 2014-08-15, 2014-08-18 to 2014-08-22, 2014-12-08, 2014-12-24 to 2014-12-26, 2014-12-29 to 2015-01-02, 2015-01-05 to 2015-01-06, 2015-05-01, 2015-06-02, 2015-08-10 to 2015-08-14, 2015-08-17 to 2015-08-21, 2015-12-07 to 2015-12-08, 2015-12-24 to 2015-12-25, 2015-12-28 to 2016-01-01, 2016-01-04 to 2016-01-06, 2016-04-25, 2016-06-02 to 2016-06-03, 2016-08-08 to 2016-08-12, 2016-08-15 to 2016-08-19, 2016-10-31 to 2016-11-01, 2016-12-08 to 2016-12-09, 2016-12-26 to 2016-12-30, 2017-01-02 to 2017-01-06, 2017-04-25, 2017-05-01, 2017-06-01 08:00-16:00, 2017-06-02, 2017-08-15, 2017-11-01, 2017-12-08, 2017-12-25 to 2017-12-26, 2018-04-02, 2018-04-25, 2018-05-01, 2018-08-15, 2018-11-01, 2018-12-25 to 2018-12-26, 2019-01-01, 2019-04-22, 2019-04-25, 2019-05-01, 2019-08-15, 2019-11-01, 2019-12-25 to 2019-12-26, 2020-01-01, 2020-01-06, 2020-04-13, 2020-05-01, 2020-06-02, 2020-12-08, 2020-12-25, 2021-01-01, 2021-01-06, 2021-04-05, 2021-06-02, 2021-11-01, 2021-12-08, 2022-01-06, 2022-04-18, 2022-04-25, 2022-06-02, 2022-08-15, 2022-11-01, 2022-12-08, 2022-12-26, 2023-01-06, 2023-04-10, 2023-04-25, 2023-05-01, 2023-06-02, 2023-08-15, 2023-11-01, 2023-12-08, 2023-12-25 to 2023-12-30, 2024-01-01, 2024-04-01, 2024-04-25, 2024-05-01, 2024-08-15, 2024-11-01, 2024-12-25 to 2024-12-28, 2024-12-30 to 2025-01-01, 2025-01-06, 2025-04-21, 2025-04-25, 2025-05-01, 2025-06-02, 2025-08-15, 2025-12-08, 2025-12-25 to 2025-12-27, 2025-12-29 to 2026-01-01, 2026-01-06, 2026-04-06, 2026-05-01, 2026-06-02, 2026-12-08, 2026-12-25 to 2026-12-26, 2026-12-28 to 2027-01-01, 2027-01-06, 2027-03-29, 2027-06-02, 2027-11-01, 2027-12-08, 2027-12-25, 2027-12-27 to 2027-12-31, 2028-01-06, 2028-04-17, 2028-04-25, 2028-05-01, 2028-06-02, 2028-08-15, 2028-11-01, 2028-12-08, 2028-12-25 to 2028-12-30, 2029-01-01, 2029-01-06, 2029-04-02, 2029-04-25, 2029-05-01, 2029-06-02, 2029-08-15, 2029-11-01, 2029-12-08, 2029-12-25 to 2029-12-29, 2029-12-31 to 2030-01-01, 2030-04-22, 2030-04-25, 2030-05-01, 2030-08-15, 2030-11-01, 2030-12-25 to 2030-12-28, 2030-12-30 to 2031-01-01, 2031-01-06, 2031-04-14, 2031-04-25, 2031-05-01, 2031-06-02, 2031-08-15, 2031-11-01, 2031-12-08, 2031-12-25 to 2031-12-27, 2031-12-29 to 2032-01-01, 2032-01-06, 2032-03-29, 2032-05-01, 2032-06-02, 2032-11-01, 2032-12-08, 2032-12-25, 2032-12-27 to 2033-01-01, 2033-01-06, 2033-04-18, 2033-04-25, 2033-06-02, 2033-08-15, 2033-11-01, 2033-12-08, 2033-12-26 to 2033-12-31, 2034-01-06, 2034-04-10, 2034-04-25, 2034-05-01, 2034-06-02, 2034-08-15, 2034-11-01, 2034-12-08, 2034-12-25 to 2034-12-30, 2035-01-01, 2035-01-06, 2035-03-26, 2035-04-25, 2035-05-01, 2035-06-02, 2035-08-15, 2035-11-01, 2035-12-06, 2035-12-25 to 2035-12-29, 2035-12-31 to 2036-01-01, 2036-04-14, 2036-04-25, 2036-05-01, 2036-06-02, 2036-08-15, 2036-11-01, 2036-12-06, 2036-12-25 to 2036-12-27, 2036-12-29 to 2036-12-31.
- 5D 8h ITA H + 2W 2036: Mon-Fri 08:00-12:00, 13:00-17:00; Sat-Sun off. Exceptions (off unless hours are given): 2009-04-13, 2009-05-01, 2009-06-01 to 2009-06-02, 2009-08-07 08:00-16:00, 2009-08-10 to 2009-08-14 08:00-16:00, 2009-08-17 to 2009-08-21 08:00-16:00, 2009-08-24 08:00-16:00, 2009-12-07 to 2009-12-08, 2009-12-24 to 2009-12-25, 2009-12-28 to 2010-01-01, 2010-01-04 to 2010-01-06, 2010-06-02, 2010-08-09 to 2010-08-13, 2010-08-16 to 2010-08-20, 2010-11-01, 2010-12-08, 2010-12-24, 2010-12-27 to 2010-12-31, 2011-01-03 to 2011-01-05 08:00-16:00, 2011-01-06 to 2011-01-07, 2011-04-25, 2011-06-02, 2011-06-24, 2011-08-08 to 2011-08-12, 2011-08-15 to 2011-08-19, 2011-08-22 to 2011-08-26 08:00-16:00, 2011-11-01, 2011-12-08 to 2011-12-09, 2011-12-26 to 2011-12-30, 2012-01-02 to 2012-01-06, 2012-04-09, 2012-04-25, 2012-04-30 to 2012-05-01, 2012-08-13 to 2012-08-17, 2012-08-20 to 2012-08-24, 2012-11-01 to 2012-11-02, 2012-12-24 to 2012-12-28, 2012-12-31 to 2013-01-04, 2013-04-01, 2013-04-25, 2013-04-26 08:00-16:00, 2013-05-01, 2013-08-12 to 2013-08-16, 2013-08-19 to 2013-08-23, 2013-12-23 to 2013-12-27, 2013-12-30 to 2014-01-03, 2014-01-06, 2014-04-25, 2014-05-01 to 2014-05-02, 2014-06-02, 2014-08-11 to 2014-08-15, 2014-08-18 to 2014-08-22, 2014-12-08, 2014-12-24 to 2014-12-26, 2014-12-29 to 2015-01-02, 2015-01-05 to 2015-01-06, 2015-05-01, 2015-06-02, 2015-08-10 to 2015-08-14, 2015-08-17 to 2015-08-21, 2015-12-07 to 2015-12-08, 2015-12-24 to 2015-12-25, 2015-12-28 to 2016-01-01, 2016-01-04 to 2016-01-06, 2016-04-25, 2016-06-02 to 2016-06-03, 2016-08-08 to 2016-08-12, 2016-08-15 to 2016-08-19, 2016-10-31 to 2016-11-01, 2016-12-08 to 2016-12-09, 2016-12-26 to 2016-12-30, 2017-01-02 to 2017-01-06, 2017-04-25, 2017-05-01, 2017-06-01 08:00-16:00, 2017-06-02, 2017-08-15, 2017-11-01, 2017-12-08, 2017-12-25 to 2017-12-26, 2018-04-02, 2018-04-25, 2018-05-01, 2018-08-15, 2018-11-01, 2018-12-25 to 2018-12-26, 2019-01-01, 2019-04-22, 2019-04-25, 2019-05-01, 2019-08-15, 2019-11-01, 2019-12-25 to 2019-12-26, 2020-01-01, 2020-01-06, 2020-04-13, 2020-05-01, 2020-06-02, 2020-12-08, 2020-12-25, 2021-01-01, 2021-01-06, 2021-04-05, 2021-06-02, 2021-11-01, 2021-12-08, 2022-01-06, 2022-04-18, 2022-04-25, 2022-06-02, 2022-08-15, 2022-11-01, 2022-12-08, 2022-12-26, 2023-01-06, 2023-04-10, 2023-04-25, 2023-05-01, 2023-06-02, 2023-08-15, 2023-11-01, 2023-12-08, 2023-12-25 to 2023-12-26, 2024-01-01, 2024-04-01, 2024-04-25, 2024-05-01, 2024-08-12 to 2024-08-16, 2024-11-01, 2024-12-24 to 2024-12-27, 2025-01-01 to 2025-01-03, 2025-01-06, 2025-04-21, 2025-04-25, 2025-05-01, 2025-06-02, 2025-08-11 to 2025-08-15, 2025-12-08, 2025-12-24 to 2025-12-26, 2025-12-29 to 2026-01-02, 2026-01-06, 2026-04-06, 2026-05-01, 2026-06-02, 2026-08-10 to 2026-08-11 08:00-16:00, 2026-08-12 to 2026-08-14, 2026-08-17 to 2026-08-18, 2026-12-08, 2026-12-23 08:00-16:00, 2026-12-24 to 2026-12-25, 2026-12-28 to 2027-01-01, 2027-01-06, 2027-03-29, 2027-06-02, 2027-08-12 to 2027-08-13, 2027-08-16 to 2027-08-18, 2027-11-01, 2027-12-08, 2027-12-27 to 2027-12-31, 2028-01-06, 2028-04-17, 2028-04-25, 2028-05-01, 2028-06-02, 2028-08-14 to 2028-08-18, 2028-11-01, 2028-12-08, 2028-12-25 to 2028-12-29, 2029-01-01 to 2029-01-02, 2029-04-02, 2029-04-25, 2029-05-01, 2029-08-13 to 2029-08-17, 2029-11-01, 2029-12-24 to 2029-12-28, 2029-12-31 to 2030-01-01, 2030-04-22, 2030-04-25, 2030-05-01, 2030-08-12 to 2030-08-16, 2030-11-01, 2030-12-25 to 2030-12-26, 2031-01-01, 2031-01-06, 2031-04-25, 2031-05-01, 2031-06-02, 2031-08-11 to 2031-08-15, 2031-12-24 to 2031-12-26, 2031-12-29, 2032-01-01 to 2032-01-02, 2032-01-06, 2032-03-29, 2032-06-02, 2032-08-09 to 2032-08-13, 2032-11-01, 2032-12-08, 2032-12-24, 2032-12-27 to 2032-12-30, 2033-01-06, 2033-04-18, 2033-04-25, 2033-06-02, 2033-08-15 to 2033-08-19, 2033-11-01, 2033-12-08, 2033-12-26 to 2033-12-30, 2034-01-06, 2034-04-10, 2034-04-25, 2034-05-01, 2034-06-02, 2034-08-14 to 2034-08-18, 2034-11-01, 2034-12-08, 2034-12-25 to 2034-12-29, 2035-01-01, 2035-03-26, 2035-04-25, 2035-05-01, 2035-08-13 to 2035-08-17, 2035-11-01, 2035-12-24 to 2035-12-28, 2036-01-01, 2036-04-14, 2036-04-25, 2036-05-01, 2036-06-02, 2036-08-11 to 2036-08-15, 2036-12-08, 2036-12-24 to 2036-12-26, 2036-12-29 to 2037-01-01, 2037-01-06.
- Standard 5 Day Workweek with ITA Basic Holidays (2016-2031): Mon-Fri 08:00-12:00, 13:00-17:00; Sat-Sun off. Exceptions (off unless hours are given): 2009-04-13, 2009-05-01, 2009-06-01 to 2009-06-02, 2009-08-07 08:00-16:00, 2009-08-10 to 2009-08-14 08:00-16:00, 2009-08-17 to 2009-08-21 08:00-16:00, 2009-08-24 08:00-16:00, 2009-12-07 to 2009-12-08, 2009-12-24 to 2009-12-25, 2009-12-28 to 2010-01-01, 2010-01-04 to 2010-01-06, 2010-06-02, 2010-08-09 to 2010-08-13, 2010-08-16 to 2010-08-20, 2010-11-01, 2010-12-08, 2010-12-24, 2010-12-27 to 2010-12-31, 2011-01-03 to 2011-01-05 08:00-16:00, 2011-01-06 to 2011-01-07, 2011-04-25, 2011-06-02, 2011-06-24, 2011-08-08 to 2011-08-12, 2011-08-15 to 2011-08-19, 2011-08-22 to 2011-08-26 08:00-16:00, 2011-11-01, 2011-12-08 to 2011-12-09, 2011-12-26 to 2011-12-30, 2012-01-02 to 2012-01-06, 2012-04-09, 2012-04-25, 2012-04-30 to 2012-05-01, 2012-08-13 to 2012-08-17, 2012-08-20 to 2012-08-24, 2012-11-01 to 2012-11-02, 2012-12-24 to 2012-12-28, 2012-12-31 to 2013-01-04, 2013-04-01, 2013-04-25, 2013-04-26 08:00-16:00, 2013-05-01, 2013-08-12 to 2013-08-16, 2013-08-19 to 2013-08-23, 2013-12-23 to 2013-12-27, 2013-12-30 to 2014-01-03, 2014-01-06, 2014-04-25, 2014-05-01 to 2014-05-02, 2014-06-02, 2014-08-11 to 2014-08-15, 2014-08-18 to 2014-08-22, 2014-12-08, 2014-12-24 to 2014-12-26, 2014-12-29 to 2015-01-02, 2015-01-05 to 2015-01-06, 2015-05-01, 2015-06-02, 2015-08-10 to 2015-08-14, 2015-08-17 to 2015-08-21, 2015-12-07 to 2015-12-08, 2015-12-24 to 2015-12-25, 2015-12-28 to 2016-01-01, 2016-01-04 to 2016-01-06, 2016-04-25, 2016-06-02 to 2016-06-03, 2016-08-08 to 2016-08-12, 2016-08-15 to 2016-08-19, 2016-10-31 to 2016-11-01, 2016-12-08 to 2016-12-09, 2016-12-26 to 2016-12-30, 2017-01-02 to 2017-01-06, 2017-04-25, 2017-05-01, 2017-06-01 08:00-16:00, 2017-06-02, 2017-08-15, 2017-11-01, 2017-12-08, 2017-12-25 to 2017-12-26, 2018-04-02, 2018-04-25, 2018-05-01, 2018-08-15, 2018-11-01, 2018-12-25 to 2018-12-26, 2019-01-01, 2019-04-22, 2019-04-25, 2019-05-01, 2019-08-15, 2019-11-01, 2019-12-25 to 2019-12-26, 2020-01-01, 2020-01-06, 2020-04-13, 2020-05-01, 2020-06-02, 2020-12-08, 2020-12-25, 2021-01-01, 2021-01-06, 2021-04-05, 2021-06-02, 2021-11-01, 2021-12-08, 2022-01-06, 2022-04-18, 2022-04-25, 2022-06-02, 2022-08-15, 2022-11-01, 2022-12-08, 2022-12-26, 2023-01-06, 2023-04-10, 2023-04-25, 2023-05-01, 2023-06-02, 2023-08-15, 2023-11-01, 2023-12-08, 2023-12-25 to 2023-12-26, 2024-01-01, 2024-04-01, 2024-04-25, 2024-05-01, 2024-08-15, 2024-11-01, 2024-12-25 to 2024-12-26, 2025-01-01, 2025-01-06, 2025-04-21, 2025-04-25, 2025-05-01, 2025-06-02, 2025-08-15, 2025-12-08, 2025-12-25 to 2025-12-26, 2026-01-01, 2026-01-06, 2026-04-06, 2026-05-01, 2026-06-02, 2026-12-08, 2026-12-25, 2027-01-01, 2027-01-06, 2027-03-29, 2027-06-02, 2027-11-01, 2027-12-08, 2028-01-06, 2028-04-17, 2028-04-25, 2028-05-01, 2028-06-02, 2028-08-15, 2028-11-01, 2028-12-08, 2028-12-25 to 2028-12-26, 2029-01-01, 2029-04-02, 2029-04-25, 2029-05-01, 2029-08-15, 2029-11-01, 2029-12-25 to 2029-12-26, 2030-01-01, 2030-04-22, 2030-04-25, 2030-05-01, 2030-08-15, 2030-11-01, 2030-12-25 to 2030-12-26, 2031-01-01, 2031-01-06, 2031-04-14, 2031-04-25, 2031-05-01, 2031-06-02, 2031-08-15, 2031-12-08, 2031-12-25.

## Resources

| Resource | Group | Rate |
| --- | --- | --- |
| CNC Miller (Soraluce) (203) | equipment | 441.8 |

## Schedule

| ID | WBS | Activity | Type | Duration | Predecessors | Total float | Free float | Constraint | Calendar | Note | CEMEX LOCALE | CEMEX RESPONSABILITY | CEMEX PARTITE | CEMEX SISTEMI |
| --- | --- | --- | --- | --- | --- | --- | --- | --- | --- | --- | --- | --- | --- | --- |
|  | 1 | **Milestones** |  |  |  |  |  |  |  |  |  |  |  |  |
|  | 2 | **Milestone di progetto** |  |  |  |  |  |  |  |  |  |  |  |  |
| CEM.MLS.P.00030 |  | Avvio realizzazione componenti Uranus | milestone | 0d | CEM.MLS.C.00010, CEP.ASM.O.00060 FF | 213d | 90d |  |  | Non contrattuale | 0 | A/D | P4 | 57A |
| CEM.MLS.P.00040 |  | Avvio realizzazione componenti ASME III & ASME VIII | milestone | 0d | CEM.MLS.C.00010, CEP.ASM.O.00020 FF, CEP.ASM.O.00040 FF, CEP.ASM.O.00060 FF, CEP.LAB.O.20020 FF | 1d | 0d |  |  | Non contrattuale | 0 | A/D | P4 | 0 |
| CEM.MLS.P.00050 |  | Disponibilità dei sottoservizi e sistema di raccolta acque per il complesso Cemex | milestone | 0d | CEE.CIV.N.00160 FF, CEE.CIV.S.000050 FF, CEE.CIV.S.000100 FF, CEE.CIV.S.000070 FF, CEE.CIV.S.000130 FF, CEE.CIV.S.000160 FF, CEE.CIV.S.000200 FF, CEE.CIV.S.0000220 FF | 1058d | 689d |  |  | Non contrattuale | 0 | COS | P15 |  |
| CEM.MLS.P.00060 |  | Completamento esecuzione getto calcestruzzo soletta 6 m | milestone | 0d | CEM.MLS.C.00010, CEP.CIV.S.06040 | 347d | 50d |  |  | Non contrattuale | 0 | COS | P1 |  |
| CEM.MLS.P.00070 |  | Completamento esecuzione getto calcestruzzo soletta 12 m | milestone | 0d | CEM.MLS.P.00060 FS+151d, CEP.CIV.S.12040, CEM.MLS.C.00030 FF | 297d | 0d |  |  | Non contrattuale | 0 | COS | P1 |  |
| CEM.MLS.P.00080 |  | Completamento esecuzione getto calcestruzzo soletta 18 m | milestone | 0d | CEM.MLS.P.00070 FS+151d, CEP.CIV.S.18040 | 297d | 0d |  |  | Non contrattuale | 0 | COS | P1 |  |
| CEM.MLS.P.00085 |  | Disponibilità vapore fornito dalla centrale termica Eurex | milestone | 0d |  | 430d | 500d | start on or after 17/06/2029 |  |  | 0 | SOGIN |  |  |
| CEM.MLS.P.00090 |  | Completamento installazione carriponte | milestone | 0d | CEP.CRA.I.12090 FF, CEP.CRA.I.01120 FF, CEP.CRA.I.03120 FF, CEP.CRA.I.02120 FF, CEP.CRA.I.04120 FF, CEM.MLS.P.00080 FF+185d, CED.CRA.I.01120 FF, CED.I&C.Q.08010 FF, CED.CRA.I.02120 FF, CED.I&C.Q.00060 FF | 372d | 442d |  |  | Non contrattuale | 0 | A/D | P2 | 53A |
| CEM.MLS.P.00100 |  | Completamento installazione componenti ASME III | milestone | 0d | CEM.MLS.P.00080, CEP.INS.02.00090, CEP.INS.03.00030, CEP.INS.05.00080, CEP.INS.04.00120, CEP.INS.53.00080 FF, CEP.I&C.A.00050 FF, CEP.I&C.A.06030 FF, CEP.INS.02.00100 FF, CEM.MLS.C.00060 FF | 154d | 224d |  |  | Non contrattuale, controllare i Successori | 0 | DEM | P4 |  |
| CEM.MLS.P.00110 |  | Completamento installazione componenti ASME VIII | milestone | 0d | CEM.MLS.P.00080 FS+244d, CEP.INS.01.00170, CEP.INS.06.00120, CEP.INS.16.00050, CEP.INS.21.00070, CEP.I&C.A.06030 FF, CEP.I&C.A.00050 FF | 226d | 296d |  |  | Non contrattuale | 0 | A/D | P4 | 0 |
| CEM.MLS.P.00120 |  | Avvio gestione impianto in modalità mock-up | milestone | 0d | CED.I&C.T.10010 FF, CED.MOV.T.10010 FF, CED.RAD.T.10010 FF, CED.ELE.T.10010 FF, CED.COM.T.10010 FF, CED.ANT.T.10010 FF, CEM.MLS.C.00010, CEP.ELE.T.12050, CEP.I&C.T.12110, CEP.COM.T.12610, CEP.INS.T.12250, CEP.INS.T.12240, CEP.INS.T.12260, CEP.HVA.T.12420, CEP.I&C.T.12120, CEP.CES.M.00010, CEP.INS.T.12270, CEP.CES.M.110, CEP.FUS.M.00010, CEP.FUS.M.110 | -70d | 0d |  |  | Non contrattuale | 0 | A/D | P12 | 0 |
| CEM.MLS.P.00130 |  | Fine prove Mock-up | milestone | 0d | CEC.MCK.T.00000 FF | -70d | 0d |  |  |  | 0 | A/D | P12 | 0 |
| CEM.MLS.P.00135 |  | Inizio prove combinate | milestone | 0d | CEP.HVA.T.12430, CED.CHI.69.00060, CED.CHI.69.00050, CED.CHI.69.00040, CED.CHI.69.00030, CED.CHI.69.00020, CED.CHI.69.00010, CEP.GEN.T.40140, CEP.CHI.23.00010, CEP.CHI.02.00040 | -59d | 0d |  | Standard 5 Day Workweek with ITA Basic Holidays (2016-2031) |  | 0 | A/D | P12 | 0 |
| CEM.MLS.P.00140 |  | Inizio prove non nucleari | milestone | 0d | CEM.MLS.P.00100 FF, CEM.MLS.P.00110 FF, CEP.FUS.M.00010 FF, CEM.MLS.C.00070 FF, CEP.FUS.M.110 FF, CEP.FUS.M.120 FF, CEM.MLS.P.00090 FF, CEM.MLS.C.00010, CEP.FUS.M.00110 FF | 1d | 0d |  |  |  | 0 | A/D | P12 | 0 |
| CEM.MLS.P.00150 |  | Completamento prove non nucleari | milestone | 0d | CEC.ELE.T.12760 FF, CEC.ELE.T.12750 FF, CEC.ELE.T.12730 FF, CEC.ELE.T.12740 FF | 1d | 0d |  |  |  | 0 | SOGIN |  |  |
| CEM.MLS.P.00160 |  | Presentazione del piano prove nucleari | milestone | 0d | CEM.MLS.P.00150 | 1d | 0d |  | 5D 8h ITA H + 2W 2036 |  | 0 | A/D | P13 | 0 |
| CEM.MLS.P.00165 |  | Inizio prove nucleari | milestone | 0d | CEC.CMS.P.00010 | 1d | 0d |  | Standard 5 Day Workweek with ITA Basic Holidays (2016-2031) |  | 0 |  | P13 | 0 |
| CEM.MLS.P.00170 |  | Completamento prove nucleari | milestone | 0d | CEC.CMS.P.00020 FF | 1d |  |  |  |  | 0 | SOGIN |  |  |
| CEM.MLS.P.00180 |  | Inizio esercizio fase di cementazione rifiuti da riprocessamento combustibile irraggiato | milestone | 0d | CEM.MLS.P.00190 FF | 0d |  |  |  |  | 0 | SOGIN |  |  |
| CEM.MLS.P.00190 |  | Rilascio licenza d'esercizio | milestone | 0d | CEM.MLS.P.00170, CEC.CMS.E.00005 FF | 0d |  |  |  |  | 0 | SOGIN |  |  |
| CEM.MLS.P.00200 |  | Termine assistenza a esercizio fase di cementazione da rifiuti riprocessamento combustibile irraggiato | milestone | 0d | CEC.CMS.E.00010 FF, CEM.MLS.P.00180 | 0d |  |  |  |  | 0 | ANN | P13 | 0 |
| CEM.MLS.P.00210 |  | Inizio esercizio fase di cementazione rifiuti dal decommissioning | milestone | 0d | CEM.MLS.P.00200 | 0d |  |  |  |  | 0 | SOGIN |  |  |
| CEM.MLS.P.00230 |  | Termine assistenza a esercizio fase di cementazione rifiuti dal decommissioning | milestone | 0d | CEC.CMS.E.00020 FF, CEM.MLS.P.00210 | 0d |  |  |  |  | 0 | A/D | P13 | 0 |
| CEM.MLS.P.00240 |  | Conclusione dell'esercizio del'impianto Cemex | milestone | 0d | CEM.MLS.P.00230 FF | 0d |  |  |  |  | 0 | SOGIN |  |  |

| ID | WBS | Activity | Type | Duration | Predecessors | Total float | Free float | Constraint | Calendar | CEMEX LOCALE | CEMEX RESPONSABILITY | CEMEX SISTEMI | CEMEX PARTITE | CEMEX REVISIONE | CEMEX ACTIVITY TYPE |
| --- | --- | --- | --- | --- | --- | --- | --- | --- | --- | --- | --- | --- | --- | --- | --- |
|  | 1 | **Milestone contrattuali** |  |  |  |  |  |  |  |  |  |  |  |  |  |
| CEM.MLS.C.00001 |  | Perfezionamento del contratto | milestone | 0d |  | -61d | 0d | start on or after 01/10/2026 | 5D 8h ITA H + 2W 2036 | 0 | A/D | 0 |  |  |  |
| CEM.MLS.C.00002 |  | Kick Off Meeting | milestone | 0d | CEM.MLS.C.00001 FS+7d | -79d | 0d |  |  | 0 | A/D | 0 |  |  |  |
| CEM.MLS.C.00003 |  | Benestare cliente Piano della Qualità | milestone | 0d | CEM.MLS.C.00002 FF+17d | -66d | 0d |  | Standard 5 Day Workweek with ITA Basic Holidays (2016-2031) | 0 | SOGIN | 0 |  |  |  |
| CEM.MLS.C.00004 |  | Benestare cliente Piano e Programma di Progettazione e Committenza | milestone | 0d | CEM.MLS.C.00002 FF+17d | -66d | 0d |  | Standard 5 Day Workweek with ITA Basic Holidays (2016-2031) | 0 | SOGIN | 0 |  |  |  |
| CEM.MLS.C.00005 |  | Benestare cliente documentazione ambientale | milestone | 0d | CEM.MLS.C.00002 FF+17d | -66d | 0d |  | Standard 5 Day Workweek with ITA Basic Holidays (2016-2031) | 0 | SOGIN | 0 |  |  |  |
| CEM.MLS.C.00010 |  | Consegna dei lavori | milestone | 0d | CEM.MLS.C.00003, CEM.MLS.C.00004, CEM.ENG.I.00010, CEM.MLS.C.00005 | -61d | 0d |  | 5D 8h ITA H + 2W 2036 | 0 | SOGIN |  |  |  |  |
| CEM.MLS.C.00020 |  | Avvio cantiere | milestone | 0d | CEM.MLS.C.00010, CEP.MOB.I.00010, CEM.ENG.I.00060 | -3d | 0d | start on 26/02/2027 |  | 0 | COS |  | P1 |  |  |
| CEM.MLS.C.00030 |  | Completamento solaio quota 6.00m dell’edificio di processo | milestone | 0d | CEM.MLS.C.00020, CEP.CIV.S.06040 FF | 1d | 201d | finish on or before 24/11/2027 |  | 0 | COS |  | P1 |  |  |
| CEM.MLS.C.00040 |  | Termine collaudi in officina delle rulliere | milestone | 0d | CEP.RUL.D.10030 FF | 112d | 1795d | finish on or before 05/02/2029 | 5D 8h ITA H + 2W 2036 | 0 | ANN | 53A | P2 |  |  |
| CEM.MLS.C.00050 |  | Termine collaudi in officina componenti speciali in ASME III | milestone | 0d | CEP.ASM.G.188 FF, CEP.ASM.G.00088 FF, CEP.ASM.H.00028 FF, CEP.ASM.H.00018 FF, CEP.ASM.J.00028 FF, CEP.ASM.J.00018 FF, CEP.ASM.E.00078 FF, CEP.ASM.E.00068 FF, CEP.ASM.E.00058 FF, CEP.ASM.E.00048 FF, CEP.ASM.E.00038 FF, CEP.ASM.E.00028 FF, CEP.ASM.E.00018 FF, CEP.ASM.G.00148 FF, CEP.ASM.G.00138 FF, CEP.ASM.G.00028 FF, CEP.ASM.G.00018 FF, CEP.ASM.F.00018 FF | 80d | 0d | finish on or before 03/12/2029 | 5D 8h ITA H + 2W 2036 | 0 | ANN | 0 | P4 |  |  |
| CEM.MLS.C.00060 |  | Termine installazione ASME III fino a quota 6.00m dell’edificio di processo | milestone | 0d | CEP.INS.02.00008 FF, CEP.INS.02.00015 FF, CEP.INS.02.00020 FF, CEP.INS.02.00030 FF, CEP.INS.02.00040 FF, CEP.INS.02.00050 FF, CEP.INS.02.00060 FF, CEP.INS.02.00070 FF, CEP.INS.03.00010 FF, CEP.INS.03.00020 FF, CEP.INS.05.00010 FF, CEP.INS.05.00020 FF, CEP.INS.04.00010 FF, CEP.INS.04.00020 FF, CEP.INS.04.00040 FF, CEP.INS.04.00050 FF, CEP.INS.04.00060 FF, CEP.INS.04.00070 FF, CEP.INS.04.00080 FF, CEP.INS.04.00100 FF, CEP.INS.05.00030 FF, CEP.INS.05.00050 FF, CEP.INS.05.00070 FF, CEP.INS.02.00073 FF, CEP.INS.02.00075 FF, CEP.INS.02.00080 FF, CEP.INS.04.00110 FF, CEP.INS.53.00030 FF, CEP.INS.53.00040 FF, CEP.INS.53.00050 FF, CEP.INS.53.00060 FF, CEP.INS.53.00100 FF, CEP.INS.53.00020 FF, CEP.INS.53.00010 FF, CEP.INS.53.00025 FF, CEP.INS.24.00020 FF, CEM.MLS.C.00050 FF+190d | 84d | 0d | finish on or before 21/09/2030 | 5D 8h ITA H + 2W 2036 | 0 | DEM |  | P4 | MOD |  |
| CEM.MLS.C.00070 |  | Fine prove combinate e consegna dell'impianto all'esercente | milestone | 0d | CEM.MLS.C.00050 FF, CED.CIV.F.00040 FF, CED.CIV.M.00140 FF, CEM.MLS.P.00120, CEP.CIV.M.00000 FF, CEP.CIV.M.00040 FF, CEC.COM.T.00000 FF, CEM.ENG.I.00070 FF | -70d | 0d | finish on or before 10/11/2031 |  | 0 | A/D | 0 |  |  |  |
|  | 2 | **Attività propedeutiche di avvio lavori** |  |  |  |  |  |  |  |  |  |  |  |  |  |
|  | 1 | **Documentazione Generale** |  |  |  |  |  |  |  |  |  |  |  |  |  |
| CEM.ENG.I.00010 |  | Documentazione VIA, ambientale, acustica, autorizzativa e di gestione dei rifiuti |  | 21d | CEM.MLS.C.00001 SS | -61d | 0d |  | 5D 8h ITA H + 2W 2036 | 0 | A/D | 0 |  |  | DES |
| CEM.ENG.I.00020 |  | Documentazione generale |  | 20d | CEM.ENG.I.00030 | 33d | 0d |  | 5D 8h ITA H + 2W 2036 | 0 | A/D | 0 |  |  | DES |
|  | 2 | **Analisi dati progettuali di input** |  |  |  |  |  |  |  |  |  |  |  |  |  |
| CEM.ENG.I.00030 |  | Consegna dati di input mancanti | milestone | 0d | CEM.MLS.C.00010 | 0d |  |  | 5D 8h ITA H + 2W 2036 | 0 | SOGIN |  |  |  |  |
| CEM.ENG.I.00040 |  | Analisi dati di input e sopralluoghi |  | 20d | CEM.ENG.I.00030 SS | 0d |  |  | 5D 8h ITA H + 2W 2036 | 0 | A/D | 0 |  |  | DES |
| CEM.ENG.I.00050 |  | Documenti di costruzione/installazione |  | 40d | CEM.ENG.I.00040 SS | 33d | 0d |  | 5D 8h ITA H + 2W 2036 | 0 | A/D | 0 |  |  | DES |
|  | 3 | **Mobilitazione per avvio lavori** |  |  |  |  |  |  |  |  |  |  |  |  |  |
| CEP.MOB.I.00010 |  | Mobilitazione |  | 20d | CEM.MLS.C.00010, CEM.ENG.I.00020, CEM.ENG.I.00050 FF | 33d | 36d |  | 5D 8h ITA H + 2W 2036 | 0 | COS |  | P1 |  |  |
|  | 4 | **Progettazione BIM** |  |  |  |  |  |  |  |  |  |  |  |  |  |
| CEM.ENG.I.00060 |  | Predisposizione Modello BIM |  | 70d | CEM.MLS.C.00010, CEM.ENG.I.00050 FF | 3d | 0d |  | 5D 8h ITA H + 2W 2036 | 0 | SOGIN |  |  |  |  |
| CEM.ENG.I.00070 |  | Implementazione BIM costruttivo | level of effort | 1216d | CEM.MLS.C.00020 SS | -59d | 0d |  | 5D 8h ITA H + 2W 2036 | 0 |  |  |  |  |  |

Notes:
- CEM.MLS.C.00001: Note: T0
- CEM.MLS.C.00002: Note: 10 gg consecutivi da perfezionamento contratto
- CEM.MLS.C.00003: Note: Da emettere entro 15 giorni dal Kick-off Meeting (Spec Tecn Cap. 26).
- CEM.MLS.C.00004: Note: Da emettere entro 15 giorni dal Kick-off Meeting (Spec Tecn Cap. 26).
- CEM.MLS.C.00005: Note: Da emettere entro 15 giorni dal Kick-off Meeting (Spec Tecn Cap. 26).
- CEM.MLS.C.00010: Note: 20 gg consecutivi da KoM
- CEM.MLS.C.00020: Note: Penale ritardo. 120 gg consecutivi da consegna lavori
- CEM.MLS.C.00030: Note: Penale ritardo. 270 gg consecutivi da avvio cantiere
- CEM.MLS.C.00040: Note: Penale ritardo. 710 gg consecutivi da avvio cantiere
- CEM.MLS.C.00050: Note: Penale ritardo. 1010 gg consecutivi da avvio cantiere
- CEM.MLS.C.00060: Note: Penale ritardo. 292 gg consecutivi da termine collaudi ASME III
- CEM.MLS.C.00070: Note: Penale ritardo. 1838 gg consecutivi dalla consegna dei lavori
- CEM.ENG.I.00010: Note: Da consegnare entro 1 mese dall’affidamento dell’incarico. Spec Tecn (Cap. 9.2).
- CEM.ENG.I.00020: Note: Da rivedere
- CEM.ENG.I.00050: Note: Da rivedere
- CEM.ENG.I.00060: Note: Aumentato da di 50d
- CEM.ENG.I.00070: Note: aggiunto

| ID | WBS | Activity | Duration | Predecessors | Total float | Free float | Calendar | CEMEX 2025 - Activity code Sogin | CEMEX LOCALE | CEMEX DISCIPLINE | CEMEX ACTIVITY TYPE | CEMEX RESPONSABILITY | CEMEX PARTITE | Note | CEMEX SISTEMI |
| --- | --- | --- | --- | --- | --- | --- | --- | --- | --- | --- | --- | --- | --- | --- | --- |
|  | 12 | **Forniture** |  |  |  |  |  |  |  |  |  |  |  |  |  |
|  | 4 | **Fabbricazione apparecchiature, componenti, sistemi - Approvvigionamento forniture-EDIFICIO PROCESSO** |  |  |  |  |  |  |  |  |  |  |  |  |  |
|  | 1 | **Realizzazione inghisaggi da gettare in opera (penetrazioni, conduit, drenaggi, controtelai, etc)** |  |  |  |  |  |  |  |  |  |  |  |  |  |
| CEP.CIV.O.00010 |  | Specifiche d'Acquisto, inghisaggi da gettare in opera | 40d | CEM.MLS.C.00010 | -61d | 0d | 5D 8h ITA H + 2W 2036 | CX1200 | 0 | CIV | SUP | COS | P1 |  |  |
| CEP.CIV.O.00020 |  | Ordini e approvvigionamento materiali, inghisaggi da gettare in opera | 180d | CEP.CIV.O.00010 | -75d | 0d |  | CX1200 | 0 | CIV | SUP | COS | P1 |  |  |
| CEP.CIV.O.00030 |  | Costruzione in officina, inghisaggi da gettare in opera | 278d | CEP.CIV.O.00020 SS+5d | 70d | 140d |  | CX1200 | 0 | CIV |  | COS | P1 |  |  |
| CEP.CIV.O.00040 |  | Fornitura inserti da inghisare nella soletta a quota 0,00 | 50d | CEP.CIV.O.00020 | -63d | 0d | Standard 5 Day Workweek with ITA Basic Holidays (2016-2031) | CX1310 | 0 |  |  | COS | P1 |  |  |
| CEP.CIV.O.00050 |  | Fornitura inserti da inghisare per le pareti quota da 6.00 a 12.00 e da quota 12.00 a 18.00 | 80d | CEP.CIV.O.00020, CEP.CIV.O.00040 | -63d | 0d | Standard 5 Day Workweek with ITA Basic Holidays (2016-2031) | CX1370 | 0 |  |  | COS | P1 | Diminuito di 5d |  |
|  | 11 | **Realizzazione porte schermanti, finestre schermanti, portoni anti-missile** |  |  |  |  |  |  |  |  |  |  |  |  |  |
| CEP.CIV.F.00010 |  | Specifiche d'Acquisto porte schermanti, finestre schermanti, portoni anti-missile | 20d | CEP.CIV.O.00010 | 68d | 0d | 5D 8h ITA H + 2W 2036 | CX1300 | 0 | CIV | SUP | DEM | P1 | predecessore da controllare |  |
| CEP.CIV.F.00020 |  | Ordini porte schermanti, finestre schermanti, portoni anti-missile | 40d | CEP.CIV.F.00010 | 68d | 0d | 5D 8h ITA H + 2W 2036 | CX1300 | 0 | CIV | SUP | DEM | P1 |  |  |
| CEP.CIV.F.00025 |  | Emissione specifiche e disegni porte schermanti, finestre schermanti, portoni anti-missile | 130d | CEP.CIV.F.00020 | 68d | 0d | 5D 8h ITA H + 2W 2036 | CX1300 | 0 | CIV |  | DEM | P1 | aggiornato da offerta finestre/porte |  |
| CEP.CIV.F.00030 |  | Approvvigionamento e costruzione in officina, porte schermanti, finestre schermanti, portoni anti-missile | 200d | CEP.CIV.F.00025 | 83d | 0d |  | CX1300 | 0 | CIV |  | DEM | P1 | aggiornato da offerta finestre/porte |  |
| CEP.CIV.F.00035 |  | Imballaggio e documentazione finale, porte schermanti, finestre schermanti, portoni anti-missile | 30d | CEP.CIV.F.00030 | 83d | 0d |  | CX1300 | 0 | CIV |  | DEM | P1 | aggiornato da offerta finestre/porte |  |
| CEP.CIV.F.00070 |  | Trasporto in sito per processo e deposito, porte schermanti, finestre schermanti, portoni anti-missile | 14d | CEP.CIV.F.00035 | 83d | 91d |  | CX1300 | 0 | CIV |  | DEM | P1 |  |  |
|  | 25 | **Realizzazione Carriponte e paranchi** |  |  |  |  |  |  |  |  |  |  |  |  |  |
|  | 5 | **Qualifiche sismiche Carriponte** |  |  |  |  |  |  |  |  |  |  |  |  |  |
| CEP.CRA.Q.00010 |  | General Arrangments carriponte | 20d | CEP.CRA.O.01020, CEP.CRA.O.02020, CEP.CRA.O.03020, CEP.CRA.O.04020, CEP.CRA.O.12020 | 232d | 0d |  | CX1210 | 0 | CRA | SUP | ANN | P2 |  | 53A |
| CEP.CRA.Q.00020 |  | Modello carroponte e valutazione degli spettri amplificati | 50d | CEP.CRA.Q.00010 | 232d | 0d |  | CX1210 | 0 | CRA | SUP | ANN | P2 |  | 53A |
| CEP.CRA.Q.00030 |  | Approvvigionamento componenti energizzati carriponte | 80d | CEP.CRA.O.01020, CEP.CRA.O.02020, CEP.CRA.O.03020, CEP.CRA.O.04020, CEP.CRA.O.12020, CEP.CRA.Q.00010 | 349d | 0d |  | CX1210 | 0 | CRA | SUP | ANN | P2 |  | 53A |
| CEP.CRA.Q.00040 |  | Qualifiche sismiche componenti energizzati carriponte | 5d | CEP.CRA.Q.00030, CEP.CRA.Q.00020 | 349d | 0d |  | CX1210 | 0 | CRA | TEST | ANN | P2 |  | 53A |
| CEP.CRA.Q.00050 |  | Test report Carriponte | 10d | CEP.CRA.Q.00040 | 349d | 25d |  | CX1210 | 0 | CRA | SUP | ANN | P2 |  | 53A |
| CEP.CRA.Q.00060 |  | Approvazione del Test report Carriponte | 20d | CEP.CRA.Q.00050, CEP.CRA.Q.00070 | 260d | 0d | 5D 8h ITA H + 2W 2036 | CX1210 | 0 | CRA | SUP | SOGIN | P2 |  |  |
| CEP.CRA.Q.00100 |  | Analisi sismica strutture carroponte | 40d | CEP.CRA.O.01020, CEP.CRA.O.02020, CEP.CRA.O.03020, CEP.CRA.O.04020, CEP.CRA.O.12020, CEP.CRA.Q.00020 | 232d | 0d |  | CX1210 | 0 | CRA | SUP | ANN | P2 |  | 53A |
| CEP.CRA.Q.00110 |  | Approvazione Analisi sismica strutture carroponte | 20d | CEP.CRA.Q.00100 | 285d | 25d | 5D 8h ITA H + 2W 2036 | CX1210 | 0 | CRA | SUP | SOGIN | P2 |  |  |

| ID | WBS | Activity | Type | Duration | Predecessors | Total float | Free float | Calendar | CEMEX 2025 - Activity code Sogin | CEMEX LOCALE | CEMEX DISCIPLINE | CEMEX ACTIVITY TYPE | CEMEX RESPONSABILITY | CEMEX PARTITE | CEMEX SISTEMI | Note |
| --- | --- | --- | --- | --- | --- | --- | --- | --- | --- | --- | --- | --- | --- | --- | --- | --- |
|  | 1 | **Qualifiche ambientali Carriponte** |  |  |  |  |  |  |  |  |  |  |  |  |  |  |
| CEP.CRA.Q.00070 |  | Qualifica ambientale carriponte |  | 140d | CEP.CRA.O.02020, CEP.CRA.O.03020, CEP.CRA.O.04020, CED.CRA.O.01020, CED.CRA.O.02020 | 324d | 0d |  | CX1210 | 0 | CRA | SUP | ANN | P2 |  |  |
|  | 2 | **Realizzazione carriponte 53A-DW001 (L07), 53A-DW002 (L12), 53A-DW003 (L13), 53A-DW004 (L14)** |  |  |  |  |  |  |  |  |  |  |  |  |  |  |
|  | 0 | **Ordini per Carriponte** |  |  |  |  |  |  |  |  |  |  |  |  |  |  |
| CEP.CRA.O.01010 |  | Specifica d'Acquisto carroponte 53A-DW001 |  | 10d | CEM.ENG.I.00040 | 188d | 0d | 5D 8h ITA H + 2W 2036 | CX1210 | 0 | CRA | SUP | ANN | P2 | 53A |  |
| CEP.CRA.O.01020 |  | Ordine carroponte 53A-DW001 |  | 40d | CEP.CRA.O.01010 | 188d | 0d | 5D 8h ITA H + 2W 2036 | CX1210 | 0 | CRA | SUP | ANN | P2 | 53A |  |
| CEP.CRA.O.02010 |  | Specifica d'Acquisto carroponte 53A-DW002 |  | 10d | CEM.ENG.I.00040 | 188d | 0d | 5D 8h ITA H + 2W 2036 | CX1210 | 0 | CRA | SUP | ANN | P2 | 53A |  |
| CEP.CRA.O.02020 |  | Ordine carroponte 53A-DW002 |  | 40d | CEP.CRA.O.02010 | 188d | 0d | 5D 8h ITA H + 2W 2036 | CX1210 | 0 | CRA | SUP | ANN | P2 | 53A |  |
| CEP.CRA.O.03010 |  | Specifica d'Acquisto carroponte 53A-DW003 |  | 10d | CEM.ENG.I.00040 | 188d | 0d | 5D 8h ITA H + 2W 2036 | CX1210 | 0 | CRA | SUP | ANN | P2 | 53A |  |
| CEP.CRA.O.03020 |  | Ordine carroponte 53A-DW003 |  | 40d | CEP.CRA.O.03010 | 188d | 0d | 5D 8h ITA H + 2W 2036 | CX1210 | 0 | CRA | SUP | ANN | P2 | 53A |  |
| CEP.CRA.O.04010 |  | Specifica d'Acquisto carroponte 53A-DW004 |  | 10d | CEM.ENG.I.00040 | 188d | 0d | 5D 8h ITA H + 2W 2036 | CX1210 | 0 | CRA | SUP | ANN | P2 | 53A |  |
| CEP.CRA.O.04020 |  | Ordine carroponte 53A-DW004 |  | 40d | CEP.CRA.O.04010 | 188d | 0d | 5D 8h ITA H + 2W 2036 | CX1210 | 0 | CRA | SUP | ANN | P2 | 53A |  |
|  | 1 | **Realizzazione carroponte 53A-DW001 (Carroponte, SCC, Mezzi di presa)** |  |  |  |  |  |  |  |  |  |  |  |  |  |  |
| CEP.CRA.M.14070 |  | Disponibilità carroponte 53A-DW001 in sito | milestone | 0d | CEP.CRA.S.01010, CEP.CRA.D.01080 | 315d | 43d |  | CX1210 | 0 | CRA | SUP | ANN | P2 | 53A |  |
|  | 1 | **Progettazione di dettaglio 53A-DW001** |  |  |  |  |  |  |  |  |  |  |  |  |  |  |
| CEP.CRA.D.01010 |  | Disegni costruttivi carroponte 53A-DW001 |  | 40d | CEP.CRA.O.01020, CEP.CRA.D.01030 FF | 188d | 0d | 5D 8h ITA H + 2W 2036 | CX1210 | 0 | CRA | SUP | ANN | P2 | 53A |  |
| CEP.CRA.D.01030 |  | Report di calcolo carroponte 53A-DW001 |  | 30d | CEP.CRA.Q.00100 | 188d | 0d | 5D 8h ITA H + 2W 2036 | CX1210 | 0 | CRA | SUP | ANN | P2 | 53A |  |
| CEP.CRA.D.01040 |  | Procedure carroponte 53A-DW001 |  | 30d | CEP.CRA.D.01010 | 257d | 0d | 5D 8h ITA H + 2W 2036 | CX1210 | 0 | CRA | SUP | ANN | P2 | 53A |  |
| CEP.CRA.D.01050 |  | Piani di controllo carroponte 53A-DW001 |  | 30d | CEP.CRA.D.01010 | 257d | 0d | 5D 8h ITA H + 2W 2036 | CX1210 | 0 | CRA | SUP | ANN | P2 | 53A |  |
| CEP.CRA.D.01060 |  | Approvazione del cliente per fabbricazione carroponte 53A-DW001 |  | 10d | CEP.CRA.D.01050, CEP.CRA.D.01040, CEP.CRA.D.01030 | 257d | 0d | 5D 8h ITA H + 2W 2036 | CX1210 | 0 | CRA | SUP | SOGIN | P2 |  |  |
|  | 2 | **Approvvigionamento materiali 53A-DW001** |  |  |  |  |  |  |  |  |  |  |  |  |  |  |
| CEP.CRA.M.01010 |  | Approvvigionamento lamiera e profili per carroponte 53A-DW001 |  | 120d | CEP.CRA.D.01060 | 314d | 0d |  | CX1210 | 0 | CRA | SUP | ANN | P2 | 53A | aumentato di 90d |
| CEP.CRA.M.01020 |  | Approvvigionamento componenti commerciali per carroponte 53A-DW001 |  | 90d | CEP.CRA.D.01060 | 434d | 120d |  | CX1210 | 0 | CRA | SUP | ANN | P2 | 53A |  |
|  | 3 | **Fabbricazione 53A-DW001** |  |  |  |  |  |  |  |  |  |  |  |  |  |  |
| CEP.CRA.F.01010 |  | Lavorazioni preliminari carroponte 53A-DW001 |  | 30d | CEP.CRA.M.01010, CEP.CRA.Q.00060, CEP.CRA.Q.00110 | 314d | 0d |  | CX1210 | 0 | CRA | SUP | ANN | P2 | 53A | aumentato di 100d |
| CEP.CRA.F.01020 |  | Assemblaggio carroponte 53A-DW001 |  | 60d | CEP.CRA.F.01010, CEP.CRA.M.01020 FF | 314d | 0d |  | CX1210 | 0 | CRA | SUP | ANN | P2 | 53A |  |
| CEP.CRA.F.01030 |  | NDE carroponte 53A-DW001 |  | 20d | CEP.CRA.F.01020 | 314d | 0d |  | CX1210 | 0 | CRA | SUP | ANN | P2 | 53A |  |

| ID | WBS | Activity | Type | Duration | Predecessors | Total float | Free float | Calendar | CEMEX 2025 - Activity code Sogin | CEMEX LOCALE | CEMEX DISCIPLINE | CEMEX ACTIVITY TYPE | CEMEX RESPONSABILITY | CEMEX PARTITE | CEMEX SISTEMI | Note |
| --- | --- | --- | --- | --- | --- | --- | --- | --- | --- | --- | --- | --- | --- | --- | --- | --- |
|  | 4 | **Prove di officina 53A-DW001** |  |  |  |  |  |  |  |  |  |  |  |  |  |  |
| CEP.CRA.T.01010 |  | Prove di officina carroponte 53A-DW001 |  | 30d | CEP.CRA.F.01030 | 314d | 1d |  | CX1210 | 0 | CRA | SUP | ANN | P2 | 53A |  |
|  | 5 | **Documentazione finale 53A-DW001** |  |  |  |  |  |  |  |  |  |  |  |  |  |  |
| CEP.CRA.D.01070 |  | Emissione Dossier di Fine Fabbricazione (DFF) carroponte 53A-DW001 |  | 20d | CEP.CRA.T.01010 | 257d | 0d | 5D 8h ITA H + 2W 2036 | CX1210 | 0 | CRA | SUP | ANN | P2 | 53A |  |
| CEP.CRA.D.01080 |  | Approvazione del cliente carroponte 53A-DW001 |  | 20d | CEP.CRA.D.01070 | 257d | 0d | 5D 8h ITA H + 2W 2036 | CX1210 | 0 | CRA | SUP | SOGIN | P2 |  |  |
|  | 6 | **Packaging e trasporto in sito 53A-DW001** |  |  |  |  |  |  |  |  |  |  |  |  |  |  |
| CEP.CRA.S.01010 |  | Imballaggio e trasporto in sito carroponte 53A-DW001 |  | 10d | CEP.CRA.T.01010, CEP.CRA.D.01080 FF | 315d | 0d |  | CX1210 | 0 | CRA | SUP | ANN | P2 | 53A |  |
|  | 2 | **Realizzazione carroponte 53A-DW002 (Carroponte, SCC, Mezzi di presa)** |  |  |  |  |  |  |  |  |  |  |  |  |  |  |
| CEP.CRA.M.14060 |  | Disponibilità carroponte 53A-DW002 in sito | milestone | 0d | CEP.CRA.S.02010, CEP.CRA.D.02080 | 266d | 0d |  | CX1210 | 0 | CRA | SUP | ANN | P2 | 53A |  |
|  | 1 | **Progettazione di dettaglio 53A-DW002** |  |  |  |  |  |  |  |  |  |  |  |  |  |  |
| CEP.CRA.D.02010 |  | Disegni carroponte 53A-DW002 |  | 40d | CEP.CRA.O.02020, CEP.CRA.D.03010 | 188d | 0d | 5D 8h ITA H + 2W 2036 | CX1210 | 0 | CRA | SUP | ANN | P2 | 53A |  |
| CEP.CRA.D.02020 |  | Report di calcolo carroponte 53A-DW002 |  | 30d | CEP.CRA.D.02010 SS+30d | 225d | 10d | 5D 8h ITA H + 2W 2036 | CX1210 | 0 | CRA | SUP | ANN | P2 | 53A |  |
| CEP.CRA.D.02030 |  | Procedure carroponte 53A-DW002 |  | 30d | CEP.CRA.D.02010 | 215d | 0d | 5D 8h ITA H + 2W 2036 | CX1210 | 0 | CRA | SUP | ANN | P2 | 53A |  |
| CEP.CRA.D.02040 |  | Piani di controllo carroponte 53A-DW002 |  | 30d | CEP.CRA.D.02010 | 215d | 0d | 5D 8h ITA H + 2W 2036 | CX1210 | 0 | CRA | SUP | ANN | P2 | 53A |  |
| CEP.CRA.D.02060 |  | Approvazione del cliente per fabbricazione carroponte 53A-DW002 |  | 10d | CEP.CRA.D.02040, CEP.CRA.D.02030, CEP.CRA.D.02020 | 215d | 0d | 5D 8h ITA H + 2W 2036 | CX1210 | 0 | CRA | SUP | SOGIN | P2 |  |  |
|  | 2 | **Approvvigionamento materiali 53A-DW002** |  |  |  |  |  |  |  |  |  |  |  |  |  |  |
| CEP.CRA.M.02010 |  | Approvvigionamento lamiera e profili per carroponte 53A-DW002 |  | 135d | CEP.CRA.D.02060 | 265d | 0d |  | CX1210 | 0 | CRA | SUP | ANN | P2 | 53A | Aumentato di 105d |
| CEP.CRA.M.02020 |  | Approvvigionamento componenti commerciali per carroponte 53A-DW002 |  | 90d | CEP.CRA.D.02060 | 400d | 135d |  | CX1210 | 0 | CRA | SUP | ANN | P2 | 53A |  |
|  | 3 | **Fabbricazione 53A-DW002** |  |  |  |  |  |  |  |  |  |  |  |  |  |  |
| CEP.CRA.F.02010 |  | Lavorazioni preliminari carroponte 53A-DW002 |  | 30d | CEP.CRA.M.02010, CEP.CRA.Q.00060, CEP.CRA.Q.00110 | 265d | 0d |  | CX1210 | 0 | CRA | SUP | ANN | P2 | 53A | Aumentato di 100d |
| CEP.CRA.F.02020 |  | Assemblaggio carroponte 53A-DW002 |  | 60d | CEP.CRA.F.02010, CEP.CRA.M.02020 FF | 265d | 0d |  | CX1210 | 0 | CRA | SUP | ANN | P2 | 53A |  |
| CEP.CRA.F.02030 |  | NDE carroponte 53A-DW002 |  | 20d | CEP.CRA.F.02020 | 265d | 0d |  | CX1210 | 0 | CRA | SUP | ANN | P2 | 53A |  |
|  | 4 | **Prove di officina 53A-DW002** |  |  |  |  |  |  |  |  |  |  |  |  |  |  |
| CEP.CRA.T.02010 |  | Prove di officina carroponte 53A-DW002 |  | 30d | CEP.CRA.F.02030 | 265d | 0d |  | CX1210 | 0 | CRA | SUP | ANN | P2 | 53A |  |

| ID | WBS | Activity | Type | Duration | Predecessors | Total float | Free float | Calendar | CEMEX 2025 - Activity code Sogin | CEMEX LOCALE | CEMEX DISCIPLINE | CEMEX ACTIVITY TYPE | CEMEX RESPONSABILITY | CEMEX PARTITE | CEMEX SISTEMI | Note |
| --- | --- | --- | --- | --- | --- | --- | --- | --- | --- | --- | --- | --- | --- | --- | --- | --- |
|  | 5 | **Documentazione finale 53A-DW002** |  |  |  |  |  |  |  |  |  |  |  |  |  |  |
| CEP.CRA.D.02070 |  | Emissione Dossier di Fine Fabbricazione (DFF) carroponte 53A-DW002 |  | 20d | CEP.CRA.T.02010 | 217d | 0d | 5D 8h ITA H + 2W 2036 | CX1210 | 0 | CRA | SUP | ANN | P2 | 53A |  |
| CEP.CRA.D.02080 |  | Approvazione del cliente carroponte 53A-DW002 |  | 20d | CEP.CRA.D.02070 | 217d | 0d | 5D 8h ITA H + 2W 2036 | CX1210 | 0 | CRA | SUP | SOGIN | P2 |  |  |
|  | 6 | **Packaging e trasporto in sito 53A-DW002** |  |  |  |  |  |  |  |  |  |  |  |  |  |  |
| CEP.CRA.S.02010 |  | Imballaggio e trasporto in sito carroponte 53A-DW002 |  | 10d | CEP.CRA.T.02010, CEP.CRA.D.02080 FF | 266d | 0d |  | CX1210 | 0 | CRA | SUP | ANN | P2 | 53A |  |
|  | 3 | **Realizzazione carroponte 53A-DW003 (Carroponte, SCC, Mezzi di presa)** |  |  |  |  |  |  |  |  |  |  |  |  |  |  |
| CEP.CRA.M.14050 |  | Disponibilità carroponte 53A-DW003 in sito | milestone | 0d | CEP.CRA.S.03010, CEP.CRA.D.03080 | 279d | 7d |  | CX1210 | 0 | CRA | SUP | ANN | P2 | 53A |  |
|  | 1 | **Progettazione di dettaglio 53A-DW003** |  |  |  |  |  |  |  |  |  |  |  |  |  |  |
| CEP.CRA.D.03010 |  | Disegni carroponte 53A-DW003 |  | 40d | CEP.CRA.O.03020, CEP.CRA.D.01010 | 188d | 0d | 5D 8h ITA H + 2W 2036 | CX1210 | 0 | CRA | SUP | ANN | P2 | 53A |  |
| CEP.CRA.D.03020 |  | Report di calcolo carroponte 53A-DW003 |  | 30d | CEP.CRA.D.03010 SS+30d | 239d | 10d | 5D 8h ITA H + 2W 2036 | CX1210 | 0 | CRA | SUP | ANN | P2 | 53A |  |
| CEP.CRA.D.03030 |  | Procedure carroponte 53A-DW003 |  | 30d | CEP.CRA.D.03010 | 229d | 0d | 5D 8h ITA H + 2W 2036 | CX1210 | 0 | CRA | SUP | ANN | P2 | 53A |  |
| CEP.CRA.D.03040 |  | Piani di controllo carroponte 53A-DW003 |  | 30d | CEP.CRA.D.03010 | 229d | 0d | 5D 8h ITA H + 2W 2036 | CX1210 | 0 | CRA | SUP | ANN | P2 | 53A |  |
| CEP.CRA.D.03060 |  | Approvazione del cliente per fabbricazione carroponte 53A-DW003 |  | 10d | CEP.CRA.D.03040, CEP.CRA.D.03030, CEP.CRA.D.03020 | 229d | 0d | 5D 8h ITA H + 2W 2036 | CX1210 | 0 | CRA | SUP | SOGIN | P2 |  |  |
|  | 2 | **Approvvigionamento materiali 53A-DW003** |  |  |  |  |  |  |  |  |  |  |  |  |  |  |
| CEP.CRA.M.03010 |  | Approvvigionamento lamiera e profili per carroponte 53A-DW003 |  | 135d | CEP.CRA.D.03060 | 281d | 0d |  | CX1210 | 0 | CRA | SUP | ANN | P2 | 53A | Aumentato di 105d |
| CEP.CRA.M.03020 |  | Approvvigionamento componenti commerciali per carroponte 53A-DW003 |  | 90d | CEP.CRA.D.03060 | 416d | 135d |  | CX1210 | 0 | CRA | SUP | ANN | P2 | 53A |  |
|  | 3 | **Fabbricazione 53A-DW003** |  |  |  |  |  |  |  |  |  |  |  |  |  |  |
| CEP.CRA.F.03010 |  | Lavorazioni preliminari carroponte 53A-DW003 |  | 30d | CEP.CRA.M.03010, CEP.CRA.Q.00060, CEP.CRA.Q.00110 | 281d | 0d |  | CX1210 | 0 | CRA | SUP | ANN | P2 | 53A | Aumentato di 100d |
| CEP.CRA.F.03020 |  | Assemblaggio carroponte 53A-DW003 |  | 60d | CEP.CRA.M.03020 FF, CEP.CRA.F.03010 | 281d | 0d |  | CX1210 | 0 | CRA | SUP | ANN | P2 | 53A |  |
| CEP.CRA.F.03030 |  | NDE carroponte 53A-DW003 |  | 20d | CEP.CRA.F.03020 | 281d | 0d |  | CX1210 | 0 | CRA | SUP | ANN | P2 | 53A |  |
|  | 4 | **Prove di officina 53A-DW003** |  |  |  |  |  |  |  |  |  |  |  |  |  |  |
| CEP.CRA.T.03010 |  | Prove di officina carroponte 53A-DW003 |  | 30d | CEP.CRA.F.03030 | 281d | 0d |  | CX1210 | 0 | CRA | SUP | ANN | P2 | 53A |  |
|  | 5 | **Documentazione finale 53A-DW003** |  |  |  |  |  |  |  |  |  |  |  |  |  |  |
| CEP.CRA.D.03070 |  | Emissione Dossier di Fine Fabbricazione (DFF) carroponte 53A-DW003 |  | 20d | CEP.CRA.T.03010 | 230d | 0d | 5D 8h ITA H + 2W 2036 | CX1210 | 0 | CRA | SUP | ANN | P2 | 53A |  |
| CEP.CRA.D.03080 |  | Approvazione del cliente carroponte 53A-DW003 |  | 20d | CEP.CRA.D.03070 | 230d | 0d | 5D 8h ITA H + 2W 2036 | CX1210 | 0 | CRA | SUP | SOGIN | P2 |  |  |

| ID | WBS | Activity | Type | Duration | Predecessors | Total float | Free float | Calendar | CEMEX 2025 - Activity code Sogin | CEMEX LOCALE | CEMEX DISCIPLINE | CEMEX ACTIVITY TYPE | CEMEX RESPONSABILITY | CEMEX PARTITE | CEMEX SISTEMI | Note |
| --- | --- | --- | --- | --- | --- | --- | --- | --- | --- | --- | --- | --- | --- | --- | --- | --- |
|  | 6 | **Packaging e trasporto in sito 53A-DW003** |  |  |  |  |  |  |  |  |  |  |  |  |  |  |
| CEP.CRA.S.03010 |  | Imballaggio e trasporto in sito carroponte 53A-DW003 |  | 10d | CEP.CRA.T.03010, CEP.CRA.D.03080 FF | 279d | 0d |  | CX1210 | 0 | CRA | SUP | ANN | P2 | 53A |  |
|  | 4 | **Realizzazione carroponte 53A-DW004** |  |  |  |  |  |  |  |  |  |  |  |  |  |  |
| CEP.CRA.M.14040 |  | Disponibilità carroponte 53A-DW004 in sito | milestone | 0d | CEP.CRA.S.04010, CEP.CRA.D.04080 | 232d | 0d |  | CX1210 | 0 | CRA | SUP | ANN | P2 | 53A |  |
|  | 1 | **Progettazione di dettaglio 53A-DW004** |  |  |  |  |  |  |  |  |  |  |  |  |  |  |
| CEP.CRA.D.04010 |  | Disegni carroponte 53A-DW004 |  | 40d | CEP.CRA.O.04020, CEP.CRA.D.03010, CEP.CRA.D.02010 | 188d | 0d | 5D 8h ITA H + 2W 2036 | CX1210 | 0 | CRA | SUP | ANN | P2 | 53A |  |
| CEP.CRA.D.04020 |  | Report di calcolo carroponte 53A-DW004 |  | 30d | CEP.CRA.D.04010 SS+30d | 198d | 10d | 5D 8h ITA H + 2W 2036 | CX1210 | 0 | CRA | SUP | ANN | P2 | 53A |  |
| CEP.CRA.D.04030 |  | Procedure carroponte 53A-DW004 |  | 30d | CEP.CRA.D.04010 | 188d | 0d | 5D 8h ITA H + 2W 2036 | CX1210 | 0 | CRA | SUP | ANN | P2 | 53A |  |
| CEP.CRA.D.04040 |  | Piani di controllo carroponte 53A-DW004 |  | 30d | CEP.CRA.D.04010 | 188d | 0d | 5D 8h ITA H + 2W 2036 | CX1210 | 0 | CRA | SUP | ANN | P2 | 53A |  |
| CEP.CRA.D.04060 |  | Approvazione del cliente per fabbricazione carroponte 53A-DW004 |  | 10d | CEP.CRA.D.04040, CEP.CRA.D.04030, CEP.CRA.D.04020 | 188d | 0d | 5D 8h ITA H + 2W 2036 | CX1210 | 0 | CRA | SUP | SOGIN | P2 |  |  |
|  | 2 | **Approvvigionamento materiali 53A-DW004** |  |  |  |  |  |  |  |  |  |  |  |  |  |  |
| CEP.CRA.M.04010 |  | Approvvigionamento lamiera e profili per carroponte 53A-DW004 |  | 150d | CEP.CRA.D.04060 | 233d | 0d |  | CX1210 | 0 | CRA | SUP | ANN | P2 | 53A | Aumentato di 120d |
| CEP.CRA.M.04020 |  | Approvvigionamento componenti commerciali per carroponte 53A-DW004 |  | 90d | CEP.CRA.D.04060 | 383d | 150d |  | CX1210 | 0 | CRA | SUP | ANN | P2 | 53A |  |
|  | 3 | **Fabbricazione 53A-DW004** |  |  |  |  |  |  |  |  |  |  |  |  |  |  |
| CEP.CRA.F.04010 |  | Lavorazioni preliminari carroponte 53A-DW004 |  | 30d | CEP.CRA.M.04010, CEP.CRA.Q.00060, CEP.CRA.Q.00110 | 233d | 0d |  | CX1210 | 0 | CRA | SUP | ANN | P2 | 53A | Aumentato di 100d |
| CEP.CRA.F.04020 |  | Assemblaggio carroponte 53A-DW004 |  | 60d | CEP.CRA.M.04020 FF, CEP.CRA.F.04010 | 233d | 0d |  | CX1210 | 0 | CRA | SUP | ANN | P2 | 53A | diminuito di 10d |
| CEP.CRA.F.04030 |  | NDE carroponte 53A-DW004 |  | 20d | CEP.CRA.F.04020 | 233d | 0d |  | CX1210 | 0 | CRA | SUP | ANN | P2 | 53A |  |
|  | 4 | **Prove di officina 53A-DW004** |  |  |  |  |  |  |  |  |  |  |  |  |  |  |
| CEP.CRA.T.04010 |  | Prove di officina carroponte 53A-DW004 |  | 30d | CEP.CRA.F.04030 | 233d | 0d |  | CX1210 | 0 | CRA | SUP | ANN | P2 | 53A |  |
|  | 5 | **Documentazione finale 53A-DW004** |  |  |  |  |  |  |  |  |  |  |  |  |  |  |
| CEP.CRA.D.04070 |  | Emissione Dossier di Fine Fabbricazione (DFF) carroponte 53A-DW004 |  | 20d | CEP.CRA.T.04010 | 190d | 0d | 5D 8h ITA H + 2W 2036 | CX1210 | 0 | CRA | SUP | ANN | P2 | 53A |  |
| CEP.CRA.D.04080 |  | Approvazione del cliente carroponte 53A-DW004 |  | 20d | CEP.CRA.D.04070 | 190d | 0d | 5D 8h ITA H + 2W 2036 | CX1210 | 0 | CRA | SUP | SOGIN | P2 |  |  |
|  | 6 | **Packaging e trasporto in sito 53A-DW004** |  |  |  |  |  |  |  |  |  |  |  |  |  |  |
| CEP.CRA.S.04010 |  | Imballaggio e trasporto in sito carroponte 53A-DW004 |  | 10d | CEP.CRA.T.04010, CEP.CRA.D.04080 FF | 232d | 0d |  | CX1210 | 0 | CRA | SUP | ANN | P2 | 53A |  |

| ID | WBS | Activity | Type | Duration | Predecessors | Total float | Free float | Calendar | CEMEX 2025 - Activity code Sogin | CEMEX LOCALE | CEMEX DISCIPLINE | CEMEX ACTIVITY TYPE | CEMEX RESPONSABILITY | CEMEX PARTITE | CEMEX SISTEMI | Note |
| --- | --- | --- | --- | --- | --- | --- | --- | --- | --- | --- | --- | --- | --- | --- | --- | --- |
|  | 4 | **Realizzazione carroponte 53A-DW012 e carrello 53A-DW014** |  |  |  |  |  |  |  |  |  |  |  |  |  |  |
|  | 0 | **Ordini per Carroponte e carrello** |  |  |  |  |  |  |  |  |  |  |  |  |  |  |
| CEP.CRA.O.12010 |  | Specifica d'Acquisto carroponte 53A-DW012 |  | 10d | CEM.ENG.I.00040 | 188d | 0d | 5D 8h ITA H + 2W 2036 | CX1210 | 0 | CRA | SUP | ANN | P2 | 53A |  |
| CEP.CRA.O.12020 |  | Ordine carroponte 53A-DW012 |  | 40d | CEP.CRA.O.12010 | 188d | 0d | 5D 8h ITA H + 2W 2036 | CX1210 | 0 | CRA | SUP | ANN | P2 | 53A |  |
| CEP.CRA.O.14010 |  | Specifica d'Acquisto carrello 53A-DW014 |  | 10d | CEM.ENG.I.00040 | 656d | 0d | 5D 8h ITA H + 2W 2036 | CX1210 | 0 | CRA | SUP | ANN | P2 |  |  |
| CEP.CRA.O.14020 |  | Ordine carrello 53A-DW014 |  | 40d | CEP.CRA.O.14010 | 656d | 241d | 5D 8h ITA H + 2W 2036 | CX1210 | 0 | CRA | SUP | ANN | P2 |  |  |
|  | 1 | **Realizzazione carroponte 53A-DW012** |  |  |  |  |  |  |  |  |  |  |  |  |  |  |
| CEP.CRA.M.12110 |  | Disponibilità carroponte 53A-DW012 in sito | milestone | 0d | CEP.CRA.D.12080, CEP.CRA.S.12010 | 354d | 123d |  | CX1210 | 0 | CRA | SUP | ANN | P2 | 53A |  |
|  | 1 | **Progettazione di dettaglio 53A-DW012** |  |  |  |  |  |  |  |  |  |  |  |  |  |  |
| CEP.CRA.D.12010 |  | Disegni carroponte 53A-DW012 |  | 40d | CEP.CRA.O.12020 | 317d | 0d | 5D 8h ITA H + 2W 2036 | CX1210 | 0 | CRA | SUP | ANN | P2 | 53A |  |
| CEP.CRA.D.12020 |  | Report di calcolo carroponte 53A-DW012 |  | 30d | CEP.CRA.D.12010 SS+30d | 327d | 10d | 5D 8h ITA H + 2W 2036 | CX1210 | 0 | CRA | SUP | ANN | P2 | 53A |  |
| CEP.CRA.D.12030 |  | Procedure carroponte 53A-DW012 |  | 30d | CEP.CRA.D.12010 | 317d | 0d | 5D 8h ITA H + 2W 2036 | CX1210 | 0 | CRA | SUP | ANN | P2 | 53A |  |
| CEP.CRA.D.12040 |  | Piani di controllo carroponte 53A-DW012 |  | 30d | CEP.CRA.D.12010 | 317d | 0d | 5D 8h ITA H + 2W 2036 | CX1210 | 0 | CRA | SUP | ANN | P2 | 53A |  |
| CEP.CRA.D.12060 |  | Approvazione del cliente per fabbricazione carroponte 53A-DW012 |  | 10d | CEP.CRA.D.12040, CEP.CRA.D.12030, CEP.CRA.D.12020 | 317d | 0d | 5D 8h ITA H + 2W 2036 | CX1210 | 0 | CRA | SUP | SOGIN | P2 |  |  |
|  | 2 | **Approvvigionamento materiali 53A-DW012** |  |  |  |  |  |  |  |  |  |  |  |  |  |  |
| CEP.CRA.M.12010 |  | Approvvigionamento lamiera e profili per carroponte 53A-DW012 |  | 30d | CEP.CRA.D.12060 | 393d | 44d |  | CX1210 | 0 | CRA | SUP | ANN | P2 | 53A | Aumentato di 100d |
| CEP.CRA.M.12020 |  | Approvvigionamento componenti commerciali per carroponte 53A-DW012 |  | 90d | CEP.CRA.D.12060 | 493d | 144d |  | CX1210 | 0 | CRA | SUP | ANN | P2 | 53A |  |
|  | 3 | **Fabbricazione 53A-DW012** |  |  |  |  |  |  |  |  |  |  |  |  |  |  |
| CEP.CRA.F.12010 |  | Lavorazioni preliminari carroponte 53A-DW012 |  | 100d | CEP.CRA.M.12010, CEP.CRA.Q.00060, CEP.CRA.Q.00110 | 349d | 0d |  | CX1210 | 0 | CRA | SUP | ANN | P2 | 53A | Aumentato di 70d |
| CEP.CRA.F.12020 |  | Assemblaggio carroponte 53A-DW012 |  | 60d | CEP.CRA.M.12020 FF, CEP.CRA.F.12010 | 349d | 0d |  | CX1210 | 0 | CRA | SUP | ANN | P2 | 53A |  |
| CEP.CRA.F.12030 |  | NDE carroponte 53A-DW012 |  | 20d | CEP.CRA.F.12020 | 349d | 0d |  | CX1210 | 0 | CRA | SUP | ANN | P2 | 53A |  |
|  | 4 | **Prove di officina 53A-DW012** |  |  |  |  |  |  |  |  |  |  |  |  |  |  |
| CEP.CRA.T.12010 |  | Prove di officina carroponte 53A-DW012 |  | 30d | CEP.CRA.F.12030 | 349d | 0d |  | CX1210 | 0 | CRA | SUP | ANN | P2 | 53A |  |
|  | 5 | **Documentazione finale 53A-DW012** |  |  |  |  |  |  |  |  |  |  |  |  |  |  |
| CEP.CRA.D.12070 |  | Emissione Dossier di Fine Fabbricazione (DFF) carroponte 53A-DW012 |  | 20d | CEP.CRA.T.12010 | 286d | 0d | 5D 8h ITA H + 2W 2036 | CX1210 | 0 | CRA | SUP | ANN | P2 | 53A |  |
| CEP.CRA.D.12080 |  | Approvazione del cliente carroponte 53A-DW012 |  | 20d | CEP.CRA.D.12070 | 286d | 0d | 5D 8h ITA H + 2W 2036 | CX1210 | 0 | CRA | SUP | SOGIN | P2 |  |  |

| ID | WBS | Activity | Type | Duration | Predecessors | Total float | Free float | Calendar | CEMEX 2025 - Activity code Sogin | CEMEX LOCALE | CEMEX DISCIPLINE | CEMEX ACTIVITY TYPE | CEMEX RESPONSABILITY | CEMEX PARTITE | CEMEX SISTEMI | Note |
| --- | --- | --- | --- | --- | --- | --- | --- | --- | --- | --- | --- | --- | --- | --- | --- | --- |
|  | 6 | **Packaging e trasporto in sito 53A-DW012** |  |  |  |  |  |  |  |  |  |  |  |  |  |  |
| CEP.CRA.S.12010 |  | Imballaggio e trasporto in sito carroponte 53A-DW012 |  | 10d | CEP.CRA.T.12010, CEP.CRA.D.12080 FF | 354d | 0d |  | CX1210 | 0 | CRA | SUP | ANN | P2 | 53A |  |
|  | 2 | **Realizzazione carrello 53A-DW014** |  |  |  |  |  |  |  |  |  |  |  |  |  |  |
| CEP.CRA.M.14030 |  | Disponibilità carrello 53A-DW014 in sito | milestone | 0d | CEP.CRA.S.14010, CEP.CRA.D.14080 | 509d | 397d |  | CX1210 | 0 | CRA | SUP | ANN | P2 |  |  |
|  | 1 | **Progettazione di dettaglio 53A-DW014** |  |  |  |  |  |  |  |  |  |  |  |  |  |  |
| CEP.CRA.D.14010 |  | Disegni carrello 53A-DW014 |  | 40d | CEP.CRA.O.14020, CEP.CRA.D.04010 | 415d | 0d | 5D 8h ITA H + 2W 2036 | CX1210 | 0 | CRA | SUP | ANN | P2 |  |  |
| CEP.CRA.D.14020 |  | Report di calcolo carrello 53A-DW014 |  | 30d | CEP.CRA.D.14010 SS+30d | 425d | 10d | 5D 8h ITA H + 2W 2036 | CX1210 | 0 | CRA | SUP | ANN | P2 |  |  |
| CEP.CRA.D.14030 |  | Procedure carrello 53A-DW014 |  | 30d | CEP.CRA.D.14010 | 415d | 0d | 5D 8h ITA H + 2W 2036 | CX1210 | 0 | CRA | SUP | ANN | P2 |  |  |
| CEP.CRA.D.14040 |  | Piani di controllo carrello 53A-DW014 |  | 30d | CEP.CRA.D.14010 | 415d | 0d | 5D 8h ITA H + 2W 2036 | CX1210 | 0 | CRA | SUP | ANN | P2 |  |  |
| CEP.CRA.D.14060 |  | Approvazione del cliente per fabbricazione carrello 53A-DW014 |  | 20d | CEP.CRA.D.14040, CEP.CRA.D.14030, CEP.CRA.D.14020 | 415d | 0d | 5D 8h ITA H + 2W 2036 | CX1210 | 0 | CRA | SUP | SOGIN | P2 |  | era solo 10, portata a 20 |
|  | 2 | **Approvvigionamento materiali 53A-DW014** |  |  |  |  |  |  |  |  |  |  |  |  |  |  |
| CEP.CRA.M.14010 |  | Approvvigionamento materiali carrello 53A-DW014 |  | 30d | CEP.CRA.D.14060 | 509d | 0d |  | CX1210 | 0 | CRA | SUP | ANN | P2 | 53A |  |
| CEP.CRA.M.14020 |  | Approvvigionamento componenti commerciali per carrello 53A-DW014 |  | 90d | CEP.CRA.D.14060 | 539d | 30d |  | CX1210 | 0 | CRA | SUP | ANN | P2 | 53A |  |
|  | 3 | **Fabbricazione 53A-DW014** |  |  |  |  |  |  |  |  |  |  |  |  |  |  |
| CEP.CRA.F.14010 |  | Lavorazioni preliminari carrello 53A-DW014 |  | 30d | CEP.CRA.M.14010, CEP.CRA.Q.00060, CEP.CRA.Q.00110 | 509d | 0d |  | CX1210 | 0 | CRA | SUP | ANN | P2 | 53A |  |
| CEP.CRA.F.14020 |  | Assemblaggio carrello 53A-DW014 |  | 60d | CEP.CRA.M.14020 FF, CEP.CRA.F.14010 | 509d | 0d |  | CX1210 | 0 | CRA | SUP | ANN | P2 | 53A |  |
| CEP.CRA.F.14030 |  | NDE carrello 53A-DW014 |  | 20d | CEP.CRA.F.14020 | 509d | 0d |  | CX1210 | 0 | CRA | SUP | ANN | P2 | 53A |  |
|  | 4 | **Prove di officina 53A-DW014** |  |  |  |  |  |  |  |  |  |  |  |  |  |  |
| CEP.CRA.T.14010 |  | Prove di officina carrello 53A-DW014 |  | 30d | CEP.CRA.F.14030 | 509d | 0d |  | CX1210 | 0 | CRA | SUP | ANN | P2 | 53A |  |
|  | 5 | **Documentazione finale 53A-DW014** |  |  |  |  |  |  |  |  |  |  |  |  |  |  |
| CEP.CRA.D.14070 |  | Emissione Dossier di Fine Fabbricazione (DFF) carrello 53A-DW014 |  | 20d | CEP.CRA.T.14010 | 415d | 0d | 5D 8h ITA H + 2W 2036 | CX1210 | 0 | CRA | SUP | ANN | P2 | 53A |  |
| CEP.CRA.D.14080 |  | Approvazione del cliente carrello 53A-DW014 |  | 20d | CEP.CRA.D.14070 | 415d | 0d | 5D 8h ITA H + 2W 2036 | CX1210 | 0 | CRA | SUP | SOGIN | P2 |  |  |
|  | 6 | **Packaging e trasporto in sito 53A-DW014** |  |  |  |  |  |  |  |  |  |  |  |  |  |  |
| CEP.CRA.S.14010 |  | Imballaggio e trasporto in sito carrello 53A-DW014 |  | 10d | CEP.CRA.T.14010, CEP.CRA.D.14080 FF | 509d | 0d |  | CX1210 | 0 | CRA | SUP | ANN | P2 | 53A |  |

| ID | WBS | Activity | Duration | Predecessors | Total float | Free float | Calendar | CEMEX LOCALE | CEMEX RESPONSABILITY | CEMEX PARTITE | CEMEX SISTEMI | CEMEX 2025 - Activity code Sogin | CEMEX DISCIPLINE | CEMEX ACTIVITY TYPE |
| --- | --- | --- | --- | --- | --- | --- | --- | --- | --- | --- | --- | --- | --- | --- |
|  | 3 | **Realizzazione paranchi 53A** |  |  |  |  |  |  |  |  |  |  |  |  |
| CEP.CRA.D.14145 |  | Disponibilità in sito paranchi 53A | 5d | CEP.CRA.D.14160, CEP.CRA.D.14130 | 634d | 0d | Standard 5 Day Workweek with ITA Basic Holidays (2016-2031) | 0 | ANN | P2 | 53A |  |  |  |
|  | 1 | **Ordine per paranchi 53A** |  |  |  |  |  |  |  |  |  |  |  |  |
| CEP.CRA.O.14030 |  | Specifica d'Acquisto paranco elettrico 53A-DW019 | 10d | CEM.ENG.I.00040 | 612d | 0d | 5D 8h ITA H + 2W 2036 | 0 | ANN | P2 | 53A | CX1210 | CRA | SUP |
| CEP.CRA.O.14040 |  | Ordine paranchi elettrici | 40d | CEP.CRA.O.14030 | 612d | 0d | 5D 8h ITA H + 2W 2036 | 0 | ANN | P2 | 53A | CX1210 | CRA | SUP |
| CEP.CRA.O.14050 |  | Specifica d'Acquisto paranco elettrico 53A-DW022 | 10d | CEM.ENG.I.00040 | 2163d | 0d | 5D 8h ITA H + 2W 2036 | 0 | ANN | P2 | 53A | CX1210 | CRA | SUP |
| CEP.CRA.O.14060 |  | Ordine paranco elettrico 53A-DW022 | 40d | CEP.CRA.O.14050 | 2163d |  | 5D 8h ITA H + 2W 2036 | 0 | ANN | P2 | 53A | CX1210 | CRA | SUP |
| CEP.CRA.O.14070 |  | Specifica d'Acquisto paranco elettrico 53A-DW023/DW027 | 10d | CEM.ENG.I.00040 | 2163d | 0d | 5D 8h ITA H + 2W 2036 | 0 | ANN | P2 | 53A | CX1210 | CRA | SUP |
| CEP.CRA.O.14080 |  | Ordine paranco elettrico 53A-DW023/DW027 | 40d | CEP.CRA.O.14070 | 2163d |  | 5D 8h ITA H + 2W 2036 | 0 | ANN | P2 | 53A | CX1210 | CRA | SUP |
| CEP.CRA.O.14090 |  | Specifica d'Acquisto paranco elettrico 53A-DW024 | 10d | CEM.ENG.I.00040 | 2163d | 0d | 5D 8h ITA H + 2W 2036 | 0 | ANN | P2 | 53A | CX1210 | CRA | SUP |
| CEP.CRA.O.14100 |  | Ordine paranco elettrico 53A-DW024 | 40d | CEP.CRA.O.14090 | 2163d |  | 5D 8h ITA H + 2W 2036 | 0 | ANN | P2 | 53A | CX1210 | CRA | SUP |
| CEP.CRA.O.14110 |  | Specifica d'Acquisto paranco elettrico 53A-DW025 | 10d | CEM.ENG.I.00040 | 2163d | 0d | 5D 8h ITA H + 2W 2036 | 0 | ANN | P2 | 53A | CX1210 | CRA | SUP |
| CEP.CRA.O.14120 |  | Ordine paranco elettrico 53A-DW025 | 40d | CEP.CRA.O.14110 | 2163d |  | 5D 8h ITA H + 2W 2036 | 0 | ANN | P2 | 53A | CX1210 | CRA | SUP |
| CEP.CRA.O.14130 |  | Specifica d'Acquisto paranco elettrico 53A-DW026 | 10d | CEM.ENG.I.00040 | 2163d | 0d | 5D 8h ITA H + 2W 2036 | 0 | ANN | P2 | 53A | CX1210 | CRA | SUP |
| CEP.CRA.O.14140 |  | Ordine paranco elettrico 53A-DW026 | 40d | CEP.CRA.O.14130 | 2163d |  | 5D 8h ITA H + 2W 2036 | 0 | ANN | P2 | 53A | CX1210 | CRA | SUP |
|  | 3 | **Progettazione di dettaglio paranchi 53A** |  |  |  |  |  |  |  |  |  |  |  |  |
| CEP.CRA.D.14090 |  | Disegni paranchi elettrici | 40d | CEP.CRA.O.14040 | 612d | 0d | 5D 8h ITA H + 2W 2036 | 0 | ANN | P2 | 53A | CX1210 | CRA | SUP |
| CEP.CRA.D.14100 |  | Report di calcolo paranchi elettrici | 30d | CEP.CRA.D.14090 SS+30d | 622d | 10d | 5D 8h ITA H + 2W 2036 | 0 | ANN | P2 | 53A | CX1210 | CRA | SUP |
| CEP.CRA.D.14110 |  | Procedure paranchi elettrici | 30d | CEP.CRA.D.14090 | 612d | 0d | 5D 8h ITA H + 2W 2036 | 0 | ANN | P2 | 53A | CX1210 | CRA | SUP |
| CEP.CRA.D.14120 |  | Piani di controllo paranchi elettrici | 30d | CEP.CRA.D.14090 | 612d | 0d | 5D 8h ITA H + 2W 2036 | 0 | ANN | P2 | 53A | CX1210 | CRA | SUP |
| CEP.CRA.D.14130 |  | Approvazione del cliente per fabbricazione paranchi elettrici | 10d | CEP.CRA.D.14120, CEP.CRA.D.14110, CEP.CRA.D.14100 | 612d | 0d | 5D 8h ITA H + 2W 2036 | 0 | SOGIN | P2 | 53A | CX1210 | CRA | SUP |
|  | 5 | **Approvvigionamento e trasporto in sito paranchi 53A** |  |  |  |  |  |  |  |  |  |  |  |  |
| CEP.CRA.D.14140 |  | Approvvigionamento materiali paranchi e costruzione 53A | 160d | CEP.CRA.D.14130 | 634d | 0d | Standard 5 Day Workweek with ITA Basic Holidays (2016-2031) | 0 | ANN | P2 | 53A |  |  |  |
| CEP.CRA.D.14150 |  | Prove di officina paranchi 53A | 50d | CEP.CRA.D.14140 | 634d | 0d | Standard 5 Day Workweek with ITA Basic Holidays (2016-2031) | 0 | ANN | P2 | 53A |  |  |  |
| CEP.CRA.D.14160 |  | Imballaggio e trasporto paranchi 53A | 10d | CEP.CRA.D.14170 SS | 634d | 0d | Standard 5 Day Workweek with ITA Basic Holidays (2016-2031) | 0 | ANN | P2 | 53A |  |  |  |
| CEP.CRA.D.14170 |  | Approvazione cliente paranchi 53A | 20d | CEP.CRA.D.14150 | 634d | 0d | Standard 5 Day Workweek with ITA Basic Holidays (2016-2031) | 0 | SOGIN | P2 |  |  |  |  |

| ID | WBS | Activity | Type | Duration | Predecessors | Total float | Free float | Calendar | CEMEX LOCALE | CEMEX DISCIPLINE | CEMEX ACTIVITY TYPE | CEMEX RESPONSABILITY | CEMEX PARTITE | CEMEX SISTEMI | CEMEX 2025 - Activity code Sogin | Note |
| --- | --- | --- | --- | --- | --- | --- | --- | --- | --- | --- | --- | --- | --- | --- | --- | --- |
|  | 22 | **Realizzazione SAS** |  |  |  |  |  |  |  |  |  |  |  |  |  |  |
| CEP.SAS.M.10010 |  | Disponibilità SAS in sito | milestone | 0d | CEP.SAS.P.10010 FF, CEP.SAS.D.10040 FF | 351d | 192d |  | 0 | ROL | SUP | ANN | P2 | 53A |  |  |
|  | 7 | **Ordini SAS** |  |  |  |  |  |  |  |  |  |  |  |  |  |  |
| CEP.SAS.O.10010 |  | Specifica d'Acquisto SAS |  | 15d | CEM.ENG.I.00040 | 283d | 0d | 5D 8h ITA H + 2W 2036 | 0 | ROL | SUP | ANN | P2 | 53A | CX1240 |  |
| CEP.SAS.O.10020 |  | Ordine SAS |  | 60d | CEP.SAS.O.10010 | 283d | 0d | 5D 8h ITA H + 2W 2036 | 0 | ROL | SUP | ANN | P2 | 53A | CX1240 |  |
|  | 1 | **Documentazione iniziale SAS** |  |  |  |  |  |  |  |  |  |  |  |  |  |  |
| CEP.SAS.D.10010 |  | Progettazione costruttiva SAS |  | 30d | CEP.SAS.O.10020 | 283d | 0d | 5D 8h ITA H + 2W 2036 | 0 | ROL | SUP | ANN | P2 | 53A | CX1240 |  |
| CEP.SAS.D.10020 |  | Approvazione progettazione costruttiva SAS |  | 20d | CEP.SAS.D.10010 | 283d | 0d | 5D 8h ITA H + 2W 2036 | 0 | ROL | SUP | SOGIN | P2 |  | CX1240 |  |
|  | 2 | **Qualifiche SAS** |  |  |  |  |  |  |  |  |  |  |  |  |  |  |
| CEP.SAS.Q.10010 |  | Studio di analogia SAS |  | 25d | CEP.SAS.O.10020 | 363d | 0d |  | 0 | ROL | SUP | ANN | P2 | 53A | CX1240 |  |
| CEP.SAS.Q.10020 |  | Emissione studio di analogia SAS |  | 20d | CEP.SAS.Q.10010 | 363d | 15d |  | 0 | ROL | SUP | ANN | P2 | 53A | CX1240 |  |
| CEP.SAS.Q.10030 |  | Protocollo di prova e porcedura di qualifica SAS |  | 10d | CEP.SAS.Q.10020, CEP.SAS.D.10020 | 348d | 0d |  | 0 | ROL | SUP | ANN | P2 | 53A | CX1240 |  |
| CEP.SAS.Q.10040 |  | Approvazione piano di qualifica SAS |  | 20d | CEP.SAS.Q.10030 | 284d | 0d | 5D 8h ITA H + 2W 2036 | 0 | ROL | SUP | SOGIN | P2 |  | CX1240 |  |
| CEP.SAS.Q.10050 |  | Approvvigionamento materiali mock-up SAS |  | 40d | CEP.SAS.Q.10040 | 353d | 0d |  | 0 | ROL | SUP | ANN | P2 | 53A | CX1240 | Stima da offerta 2023 |
| CEP.SAS.Q.10060 |  | Fabbricazione mock-up SAS |  | 60d | CEP.SAS.Q.10050 | 353d | 0d |  | 0 | ROL | SUP | ANN | P2 | 53A | CX1240 | Stima da offerta 2023 |
| CEP.SAS.Q.10070 |  | FAT mock-up SAS |  | 5d | CEP.SAS.Q.10060 | 353d | 2d |  | 0 | ROL | SUP | ANN | P2 | 53A | CX1240 | Stima da offerta 2023 |
| CEP.SAS.Q.10080 |  | Test ambientale e sismico SAS |  | 5d | CEP.SAS.Q.10070, CEP.RUL.Q.10080 | 351d | 0d |  | 0 | ROL | TEST | ANN | P2 | 53A | CX1240 | verifica per ambientale |
| CEP.SAS.Q.10090 |  | Test report SAS |  | 5d | CEP.SAS.Q.10080 | 351d | 0d |  | 0 | ROL | SUP | ANN | P2 | 53A | CX1240 |  |
| CEP.SAS.Q.10100 |  | Approvazione Qualifica SAS |  | 20d | CEP.SAS.Q.10090 | 287d | 0d | 5D 8h ITA H + 2W 2036 | 0 | ROL | SUP | SOGIN | P2 |  | CX1240 |  |
|  | 3 | **Approvvigionamento materiali SAS** |  |  |  |  |  |  |  |  |  |  |  |  |  |  |
| CEP.SAS.A.10010 |  | Approvvigionamento materiali SAS |  | 145d | CEP.SAS.Q.10100 | 351d | 0d |  | 0 | ROL | SUP | ANN | P2 | 53A | CX1240 | aumentato di 70 |
|  | 4 | **Fabbricazione SAS** |  |  |  |  |  |  |  |  |  |  |  |  |  |  |
| CEP.SAS.F.10010 |  | Fabbricazione SAS |  | 160d | CEP.SAS.A.10010 | 351d | 0d |  | 0 | ROL | SUP | ANN | P2 | 53A | CX1240 | aumentato di 70 |
| CEP.SAS.F.10020 |  | FAT SAS |  | 10d | CEP.SAS.F.10010 | 351d | 0d |  | 0 | ROL | SUP | ANN | P2 | 53A | CX1240 | aggiornato da offerta 2023 |

| ID | WBS | Activity | Type | Duration | Predecessors | Total float | Free float | Calendar | CEMEX 2025 - Activity code Sogin | CEMEX LOCALE | CEMEX DISCIPLINE | CEMEX ACTIVITY TYPE | CEMEX RESPONSABILITY | CEMEX PARTITE | CEMEX SISTEMI | Note |
| --- | --- | --- | --- | --- | --- | --- | --- | --- | --- | --- | --- | --- | --- | --- | --- | --- |
|  | 6 | **Packaging e trasporto in sito SAS** |  |  |  |  |  |  |  |  |  |  |  |  |  |  |
| CEP.SAS.P.10010 |  | Imballaggio e Trasporto SAS |  | 10d | CEP.SAS.F.10020, CEP.SAS.D.10040 FF | 351d | 0d |  | CX1240 | 0 | ROL | SUP | ANN | P2 | 53A |  |
|  | 5 | **Documentazione finale SAS** |  |  |  |  |  |  |  |  |  |  |  |  |  |  |
| CEP.SAS.D.10030 |  | Dossier di fine fabbricazione SAS |  | 20d | CEP.SAS.F.10020 | 288d | 0d | 5D 8h ITA H + 2W 2036 | CX1240 | 0 | ROL | SUP | ANN | P2 | 53A |  |
| CEP.SAS.D.10040 |  | Approvazione del dossier di fine fabbricazione SAS |  | 20d | CEP.SAS.D.10030, CEP.SAS.Q.10100 | 288d | 0d | 5D 8h ITA H + 2W 2036 | CX1240 | 0 | ROL | SUP | SOGIN | P2 |  |  |
|  | 3 | **Realizzazione rulliere del tunnel di cementazione** |  |  |  |  |  |  |  |  |  |  |  |  |  |  |
| CEP.RUL.M.10010 |  | Disponibilità rulliere in sito | milestone | 0d | CEP.RUL.P.10010 FF, CEP.RUL.D.10040 FF | 501d | 342d |  | CX1240 | 0 | ROL | SUP | ANN | P2 | 53A |  |
|  | 7 | **Ordini rulliere** |  |  |  |  |  |  |  |  |  |  |  |  |  |  |
| CEP.RUL.O.10010 |  | Specifica d'Acquisto ruliiere |  | 15d | CEM.ENG.I.00040 | 112d | 0d | 5D 8h ITA H + 2W 2036 | CX1240 | 0 | ROL | SUP | ANN | P2 | 53A |  |
| CEP.RUL.O.10020 |  | Ordine rulliere |  | 60d | CEP.RUL.O.10010 | 112d | 0d | 5D 8h ITA H + 2W 2036 | CX1240 | 0 | ROL | SUP | ANN | P2 | 53A |  |
|  | 1 | **Documentazione iniziale rulliere** |  |  |  |  |  |  |  |  |  |  |  |  |  |  |
| CEP.RUL.D.10010 |  | Progettazione costruttiva rulliere |  | 40d | CEP.RUL.O.10020 | 112d | 0d | 5D 8h ITA H + 2W 2036 | CX1240 | 0 | ROL | SUP | ANN | P2 | 53A |  |
| CEP.RUL.D.10020 |  | Approvazione progettazione costruttiva rulliere |  | 20d | CEP.RUL.D.10010 | 112d | 0d | 5D 8h ITA H + 2W 2036 | CX1240 | 0 | ROL | SUP | SOGIN | P2 |  |  |
|  | 2 | **Qualifiche rulliere** |  |  |  |  |  |  |  |  |  |  |  |  |  |  |
| CEP.RUL.Q.10010 |  | Studio di analogia rulliere |  | 25d | CEP.RUL.O.10020 | 168d | 0d |  | CX1240 | 0 | ROL | SUP | ANN | P2 | 53A |  |
| CEP.RUL.Q.10020 |  | Emissione studio di analogia rulliere |  | 20d | CEP.RUL.Q.10010 | 168d | 27d |  | CX1240 | 0 | ROL | SUP | ANN | P2 | 53A |  |
| CEP.RUL.Q.10030 |  | Protocollo di prova e porcedura di qualifica rulliere |  | 10d | CEP.RUL.Q.10020, CEP.RUL.D.10020 | 141d | 0d |  | CX1240 | 0 | ROL | SUP | ANN | P2 | 53A |  |
| CEP.RUL.Q.10040 |  | Approvazione piano di qualifica rulliere |  | 20d | CEP.RUL.Q.10030 | 112d | 0d | 5D 8h ITA H + 2W 2036 | CX1240 | 0 | ROL | SUP | SOGIN | P2 |  |  |
| CEP.RUL.Q.10050 |  | Approvvigionamento materiali mock-up rulliere |  | 30d | CEP.RUL.Q.10040 | 141d | 0d |  | CX1240 | 0 | ROL | SUP | ANN | P2 | 53A |  |
| CEP.RUL.Q.10060 |  | Fabbricazione mock-up rulliere |  | 30d | CEP.RUL.Q.10050 | 141d | 0d |  | CX1240 | 0 | ROL | SUP | ANN | P2 | 53A |  |
| CEP.RUL.Q.10070 |  | FAT mock-up rulliere |  | 10d | CEP.RUL.Q.10060 | 141d | 0d |  | CX1240 | 0 | ROL | SUP | ANN | P2 | 53A |  |
| CEP.RUL.Q.10080 |  | Test ambientale/sismico rulliere |  | 25d | CEP.RUL.Q.10070 | 141d | 0d |  | CX1240 | 0 | ROL | TEST | ANN | P2 | 53A | aumentato di 60d |
| CEP.RUL.Q.10090 |  | Test report rulliere |  | 25d | CEP.RUL.Q.10080 FF+30d, CEP.RUL.Q.10080 SS+30d | 141d | 0d |  | CX1240 | 0 | ROL | SUP | ANN | P2 | 53A |  |
| CEP.RUL.Q.10100 |  | Approvazione Qualifica rulliere |  | 20d | CEP.RUL.Q.10090 | 116d | 0d | 5D 8h ITA H + 2W 2036 | CX1240 | 0 | ROL | SUP | SOGIN | P2 |  |  |

| ID | WBS | Activity | Duration | Predecessors | Total float | Free float | Calendar | CEMEX 2025 - Activity code Sogin | CEMEX LOCALE | CEMEX DISCIPLINE | CEMEX ACTIVITY TYPE | CEMEX RESPONSABILITY | CEMEX PARTITE | CEMEX SISTEMI | Note | CEMEX REVISIONE |
| --- | --- | --- | --- | --- | --- | --- | --- | --- | --- | --- | --- | --- | --- | --- | --- | --- |
|  | 3 | **Approvvigionamento materiali rulliere** |  |  |  |  |  |  |  |  |  |  |  |  |  |  |
| CEP.RUL.A.10010 |  | Approvvigionamento materiali rulliere | 30d | CEP.RUL.Q.10100 | 141d | 0d |  | CX1240 | 0 | ROL | SUP | ANN | P2 | 53A |  |  |
|  | 4 | **Fabbricazione rulliere** |  |  |  |  |  |  |  |  |  |  |  |  |  |  |
| CEP.RUL.F.10010 |  | Fabbricazione rulliere | 95d | CEP.RUL.A.10010 | 141d | 0d |  | CX1240 | 0 | ROL | SUP | ANN | P2 | 53A |  |  |
| CEP.RUL.F.10020 |  | FAT rulliere | 15d | CEP.RUL.F.10010 | 141d | 1d |  | CX1240 | 0 | ROL | SUP | ANN | P2 | 53A |  |  |
|  | 6 | **Packaging e trasporto in sito rulliere** |  |  |  |  |  |  |  |  |  |  |  |  |  |  |
| CEP.RUL.P.10010 |  | Imballaggio e Trasporto rulliere | 10d | CEP.RUL.D.10040 FF | 501d | 0d |  | CX1240 | 0 | ROL | SUP | ANN | P2 | 53A |  |  |
|  | 5 | **Documentazione finale rulliere** |  |  |  |  |  |  |  |  |  |  |  |  |  |  |
| CEP.RUL.D.10030 |  | Dossier di fine fabbricazione rulliere | 20d | CEP.RUL.F.10020 SS, CEP.RUL.F.10020 | 112d | 0d | 5D 8h ITA H + 2W 2036 | CX1240 | 0 | ROL | SUP | ANN | P2 | 53A |  |  |
| CEP.RUL.D.10040 |  | Approvazione del dossier di fine fabbricazione rulliere | 20d | CEP.RUL.D.10030, CEP.RUL.Q.10100 | 412d | 0d | 5D 8h ITA H + 2W 2036 | CX1240 | 0 | ROL | SUP | SOGIN | P2 |  |  |  |
|  | 5 | **Realizzazione apparecchiature di processo (ASME VIII)** |  |  |  |  |  |  |  |  |  |  |  |  |  |  |
| CEP.ASM.A.00075 |  | Qualifica sismica analitica Separatore particolati e aerosol 51D-BD001X | 90d | CEM.MLS.P.00040, CEP.ASM.O.00020 | 459d | 0d |  | CX1170 | 45 | PRO | SUP | ANN | P4 | 51D | aggiunto |  |
| CEP.ASM.A.00085 |  | Separatore particolati e aerosol 51D-BD001X (fornitura e trasporto) | 222d | CEP.ASM.A.00075, CEP.ASM.O.00020, CEM.MLS.P.00040 | 459d | 373d |  | CX1170 | 45 | PRO | SUP | ANN | P4 | 51D | "stima 2023 Ricci; aumentato di 22d" |  |
| CEP.ASM.A.00100 |  | Qualifica sismica analitica serbatoio di raccolta acque di lavaggio (ASME VIII) 51C-BL001X | 270d | CEP.ASM.O.00020, CEM.MLS.P.00040 | 457d | 0d |  | CX1170 | 10 | PRO | SUP | ANN | P4 | 51C | Da offerta 2023 Baglioni |  |
| CEP.ASM.A.00105 |  | Serbatoio di raccolta acque di lavaggio (ASME VIII) 51C-BL001X (fornitura e trasporto) | 300d | CEP.ASM.A.00100 | 457d | 298d |  | CX1170 | 10 | PRO | SUP | ANN | P4 | 51C | "Da offerta 2023 Baglioni; aumentato di 30d" |  |
|  | 6 | **Ordini** |  |  |  |  |  |  |  |  |  |  |  |  |  |  |
| CEP.ASM.O.00010 |  | Specifica d'Acquisto apparecchiature ASME VIII | 15d | CEM.ENG.I.00040 | 0d |  | 5D 8h ITA H + 2W 2036 | CX1170 | 0 | PRO | SUP | A/D | P4 | 0 |  |  |
| CEP.ASM.O.00020 |  | Ordini apparecchiature ASME VIII | 27d | CEP.ASM.O.00010 | 0d |  | 5D 8h ITA H + 2W 2036 | CX1170 | 0 | PRO | SUP | A/D | P4 | 0 |  |  |
|  | 1 | **Room L01** |  |  |  |  |  |  |  |  |  |  |  |  |  |  |
| AASE |  | Qualifica sismica analitica Filtri meccanici 51D-FG005-6-7-8B/A | 90d | CEP.ASM.O.00020 | 530d | 0d |  | CX1170 | 1 | PRO | SUP | DEM | P4 | 51D | aggiunto |  |
| CEP.ASM.A.00010 |  | 2 Filtri meccanici a servizio della vasca 67A-PT003A/B (ASME VIII (fornitura e trasporto) | 245d | AASE, CEM.MLS.P.00040, CEP.ASM.O.00020 | 530d | 0d |  | CX1170 | 1 | PRO | SUP | DEM | P4 | 51D | stima 2020 | MOD |
| CEP.ASM.A.00030 |  | Separatore a scambio ionico (ASME VIII) 51D-FG009X (fornitura e trasporto) | 400d | CEM.MLS.P.00040, CEP.ASM.A.00010 SS, CEP.ASM.O.00020 | 530d | 96d |  | CX1170 | 1 | PRO | SUP | ANN | P4 | 51D | "stima 2020; aumentato di 40d" |  |
| CEP.ASM.A.00040 |  | 2 Filtri meccanici a servizio della vasca 67A-PT002X (ASME VIII) (fornitura e trasporto) | 245d | CEM.MLS.P.00040, CEP.ASM.A.00010 SS+25d, CEP.ASM.O.00020 | 647d | 0d |  | CX1170 | 1 | PRO | SUP | DEM | P4 | 51D | stima 2020 | MOD |
| CEP.ASM.A.00060 |  | 2 Filtri meccanici a servizio della vasca 67A-PT001X (ASME VIII) (fornitura e trasporto) | 245d | CEM.MLS.P.00040, CEP.ASM.A.00040 SS+25d, CEP.ASM.O.00020 | 647d | 213d |  | CX1170 | 1 | PRO | SUP | DEM | P4 | 51D | stima 2020 | MOD |

| ID | WBS | Activity | Type | Duration | Predecessors | Total float | Free float | Calendar | Resources | Note | CEMEX 2025 - Activity code Sogin | CEMEX LOCALE | CEMEX DISCIPLINE | CEMEX ACTIVITY TYPE | CEMEX RESPONSABILITY | CEMEX PARTITE | CEMEX SISTEMI | CEMEX REVISIONE |
| --- | --- | --- | --- | --- | --- | --- | --- | --- | --- | --- | --- | --- | --- | --- | --- | --- | --- | --- |
|  | 2 | **Room L06** |  |  |  |  |  |  |  |  |  |  |  |  |  |  |  |  |
| CEP.ASM.B.00000 |  | Qualifica sismica analitica 54A e B-BL001-2X |  | 90d | CEP.ASM.O.00020 | 610d | 0d |  |  | aggiunto | CX1170 | 6 | PRO | SUP | DEM | P4 | 54A |  |
| CEP.ASM.B.00010 |  | Guardia idraulica idrossido di sodio (ASME VIII) 54A-BL002X (fornitura e trasporto) |  | 270d | CEP.ASM.B.00000, CEM.MLS.P.00040, CEP.ASM.O.00020 | 653d | 201d |  |  | Da offerta 2023 Baglioni | CX1170 | 6 | PRO | SUP | DEM | P4 | 54A |  |
| CEP.ASM.B.00020 |  | Guardia idraulica acido nitrico (ASME VIII) 54B-BL002X (fornitura e trasporto) |  | 270d | CEP.ASM.B.00000, CEM.MLS.P.00040, CEP.ASM.O.00020 | 658d | 206d |  |  | Da offerta 2023 Baglioni | CX1170 | 6 | PRO | SUP | DEM | P4 | 54A |  |
| CEP.ASM.B.00030 |  | Serbatoio stoccaggio idrossido di sodio (ASME VIII) 54A-BL001X (fornitura e trasporto) |  | 270d | CEP.ASM.B.00000, CEM.MLS.P.00040, CEP.ASM.O.00020 | 663d | 211d |  |  | Da offerta 2023 Baglioni | CX1170 | 6 | PRO | SUP | DEM | P4 | 54A | MOD |
| CEP.ASM.B.00040 |  | Serbatoio stoccaggio acido nitrico (ASME VIII) 54B-BL001X (fornitura e trasporto) |  | 270d | CEP.ASM.B.00000 FS+60d, CEM.MLS.P.00040, CEP.ASM.O.00020 | 610d | 158d |  |  | Da offerta 2023 Baglioni | CX1170 | 6 | PRO | SUP | DEM | P4 | 54A | MOD |
|  | 3 | **Room L21** |  |  |  |  |  |  |  |  |  |  |  |  |  |  |  |  |
| CEP.ASM.C.00000 |  | Qualifica sismica analitica serbatoi 67A-BL004X-5A/B |  | 90d | CEP.ASM.O.00020 | 673d | 0d |  |  | aggiunto | CX1170 | 21 | PRO | SUP | DEM | P4 | 67A |  |
| CEP.ASM.C.00010 |  | Serbatoio separatore di fase fanghi (ASME VIII) 67A-BL004X (fornitura e trasporto) |  | 270d | CEP.ASM.C.00000, CEM.MLS.P.00040, CEP.ASM.O.00020 | 677d | 225d |  |  | Da offerta 2023 Baglioni | CX1170 | 21 | PRO | SUP | DEM | P4 | 67A | MOD |
| CEP.ASM.C.00020 |  | Serbatoio stoccaggio aque chiarificate (ASME VIII) 67A-BL005B (fornitura e trasporto) |  | 270d | CEP.ASM.C.00000 FS+60d, CEM.MLS.P.00040, CEP.ASM.O.00020 | 673d | 180d |  |  | Da offerta 2023 Baglioni | CX1170 | 21 | PRO | SUP | DEM | P4 | 67A | MOD |
| CEP.ASM.C.00030 |  | Serbatoio stoccaggio aque chiarificate (ASME VIII) 67A-BL005A (fornitura e trasporto) |  | 270d | CEP.ASM.C.00000 FS+60d, CEM.MLS.P.00040, CEP.ASM.O.00020 | 680d | 187d |  |  | Da offerta 2023 Baglioni | CX1170 | 21 | PRO | SUP | DEM | P4 | 67A | MOD |
|  | 4 | **Room L26** |  |  |  |  |  |  |  |  |  |  |  |  |  |  |  |  |
| CEP.ASM.D.00000 |  | Qualifica sismica analitica Serbatoi 54A/B-BL003-4X (fornitura e trasporto) |  | 90d | CEP.ASM.O.00020 | 263d | 0d |  |  | aggiunto | CX1170 | 26 | PRO | SUP | DEM | P4 | 54A |  |
| CEP.ASM.D.00010 |  | Serbatoio preparazione soda (ASME VIII) 54A-BL003X (fornitura e trasporto) |  | 270d | CEP.ASM.D.00000, CEM.MLS.P.00040, CEP.ASM.O.00020 | 316d | 269d |  |  | Da offerta 2023 Baglioni | CX1170 | 26 | PRO | SUP | DEM | P4 | 54A | MOD |
| CEP.ASM.D.00020 |  | Serbatoio dosaggio soda (ASME VIII) 54A-BL004X (fornitura e trasporto) |  | 270d | CEP.ASM.D.00000 FS+60d, CEM.MLS.P.00040, CEP.ASM.O.00020 | 263d | 216d |  |  | Da offerta 2023 Baglioni | CX1170 | 26 | PRO | SUP | DEM | P4 | 54A | MOD |
| CEP.ASM.D.00030 |  | Serbatoio preparazione acido nitrico (ASME VIII) 54B-BL003X (fornitura e trasporto) |  | 270d | CEP.ASM.D.00000 FS+60d, CEM.MLS.P.00040, CEP.ASM.O.00020 | 270d | 223d |  |  | Da offerta 2023 Baglioni | CX1170 | 26 | PRO | SUP | DEM | P4 | 54A | MOD |
|  | 6 | **Realizzazione apparecchiature di processo (ASME III)** |  |  |  |  |  |  |  |  |  |  |  |  |  |  |  |  |
|  | 7 | **Ordini** |  |  |  |  |  |  |  |  |  |  |  |  |  |  |  |  |
| CEP.ASM.O.00030 |  | Specifica d'Acquisto apparecchiature ASME III |  | 15d | CEM.ENG.I.00040 | 0d |  | 5D 8h ITA H + 2W 2036 |  |  | CX1160 | 0 | PRO | SUP | ANN | P4 | 0 |  |
| CEP.ASM.O.00040 |  | Ordini apparecchiature ASME III |  | 27d | CEP.ASM.O.00030 | 0d |  | 5D 8h ITA H + 2W 2036 |  |  | CX1160 | 0 | PRO | SUP | ANN | P4 | 0 |  |
| CEP.ASM.O.00050 |  | Specifica d'Acquisto apparecchiature URANUS |  | 15d | CEM.ENG.I.00040 | 0d |  | 5D 8h ITA H + 2W 2036 |  |  | CX1160 | 0 | PRO | SUP | ANN | P4 | 57A |  |
| CEP.ASM.O.00060 |  | Ordini apparecchiature URANUS |  | 27d | CEP.ASM.O.00050 | 0d |  | 5D 8h ITA H + 2W 2036 |  |  | CX1160 | 0 | PRO | SUP | ANN | P4 | 57A |  |
|  | 2 | **Evaporatore URANUS S1 (ASME III) 57A-BC002X** |  |  |  |  |  |  |  |  |  |  |  |  |  |  |  |  |
| A1000 |  | New Activity | WBS summary | 632d |  | 69d | 1634d | Standard 5 Day Workweek with ITA Basic Holidays (2016-2031) | CNC Miller (Soraluce) (203) [5688 h] |  |  |  |  |  |  |  |  |  |

| ID | WBS | Activity | Duration | Predecessors | Total float | Free float | Calendar | Note | CEMEX 2025 - Activity code Sogin | CEMEX LOCALE | CEMEX DISCIPLINE | CEMEX ACTIVITY TYPE | CEMEX RESPONSABILITY | CEMEX PARTITE | CEMEX SISTEMI |
| --- | --- | --- | --- | --- | --- | --- | --- | --- | --- | --- | --- | --- | --- | --- | --- |
|  | 1 | **Relizzazione** |  |  |  |  |  |  |  |  |  |  |  |  |  |
| CEP.ASM.F.00000 |  | Qualifica sismica analitica Evaporatore URANUS S1 (ASME III) 57A-BC002X | 130d | CEP.ASM.O.00060 | 83d | 0d |  | aggiunto | CX1160 | 3 | PRO | SUP | ANN | P4 | 57A |
| CEP.ASM.F.00010 |  | Fornitura Evaporatore URANUS S1 (ASME III) 57A-BC002X | 582d | CEP.ASM.F.00000, CEM.MLS.P.00030 | 83d | 0d |  | Cronoprogramma Sogin 950 giorni di calendario. | CX1160 | 3 | PRO | SUP | ANN | P4 | 57A |
| CEP.ASM.F.00012 |  | Collaudo Evaporatore URANUS S1 (ASME III) 57A-BC002X | 3d | CEP.ASM.F.00010 | 83d | 0d |  |  | CX1160 | 3 | PRO | SUP | ANN | P4 | 57A |
|  | 2 | **Imballaggio e trasporto** |  |  |  |  |  |  |  |  |  |  |  |  |  |
| CEP.ASM.F.00014 |  | Imballaggio e trasporto Evaporatore URANUS S1 (ASME III) 57A-BC002X | 10d | CEP.ASM.F.00012, CEP.ASM.F.00018 FF | 84d | 0d |  |  | CX1160 | 3 | PRO | SUP | ANN | P4 | 57A |
|  | 3 | **Documentazione finale** |  |  |  |  |  |  |  |  |  |  |  |  |  |
| CEP.ASM.F.00016 |  | Emissione dossier di fine fabbricazione Evaporatore URANUS S1 (ASME III) 57A-BC002X | 10d | CEP.ASM.F.00012 | 65d | 0d | 5D 8h ITA H + 2W 2036 |  | CX1160 | 3 | PRO | SUP | ANN | P4 | 57A |
| CEP.ASM.F.00018 |  | Approvazione dossier di fine fabbricazione Evaporatore URANUS S1 (ASME III) 57A-BC002X | 20d | CEP.ASM.F.00016 | 65d | 0d | 5D 8h ITA H + 2W 2036 |  | CX1160 | 3 | PRO | SUP | ANN | P4 | 57A |
|  | 3 | **Colonna di distillazione URANUS S1 (ASME III) 57A-BD005X** |  |  |  |  |  |  |  |  |  |  |  |  |  |
|  | 1 | **Relizzazione** |  |  |  |  |  |  |  |  |  |  |  |  |  |
| CEP.ASM.G.00000 |  | Qualifica sismica analitica Colonna di distillazione URANUS S1 (ASME III) 57A-BD005X | 90d | CEP.ASM.O.00060 | 278d | 0d |  | aggiunto | CX1160 | 4 | PRO | SUP | ANN | P4 | 57A |
| CEP.ASM.G.00010 |  | Fornitura Colonna di distillazione URANUS S1 (ASME III) 57A-BD005X | 427d | CEP.ASM.G.00000, CEM.MLS.P.00030, CEP.ASM.O.00060 | 278d | 0d |  | Loterios 2023, con dettaglio +33 | CX1160 | 4 | PRO | SUP | ANN | P4 | 57A |
| CEP.ASM.G.00012 |  | Collaudo Colonna di distillazione URANUS S1 (ASME III) 57A-BD005X | 3d | CEP.ASM.G.00010 | 278d | 0d |  |  | CX1160 | 4 | PRO | SUP | ANN | P4 | 57A |
|  | 2 | **Imballaggio e trasporto** |  |  |  |  |  |  |  |  |  |  |  |  |  |
| CEP.ASM.G.00014 |  | Imballaggio e trasporto Colonna di distillazione URANUS S1 (ASME III) 57A-BD005X | 10d | CEP.ASM.G.00012, CEP.ASM.G.00018 FF | 278d | 171d |  |  | CX1160 | 4 | PRO | SUP | ANN | P4 | 57A |
|  | 3 | **Documentazione finale** |  |  |  |  |  |  |  |  |  |  |  |  |  |
| CEP.ASM.G.00016 |  | Emissione dossier di fine fabbricazione Colonna di distillazione URANUS S1 (ASME III) 57A-BD005X | 10d | CEP.ASM.G.00012 | 227d | 0d | 5D 8h ITA H + 2W 2036 |  | CX1160 | 4 | PRO | SUP | ANN | P4 | 57A |
| CEP.ASM.G.00018 |  | Approvazione dossier di fine fabbricazione Colonna di distillazione URANUS S1 (ASME III) 57A-BD005X | 20d | CEP.ASM.G.00016 | 227d | 0d | 5D 8h ITA H + 2W 2036 |  | CX1160 | 4 | PRO | SUP | ANN | P4 | 57A |
|  | 20 | **Ribollitore colonna distillazione URANUS S1 (ASME III) 57A-BA007X** |  |  |  |  |  |  |  |  |  |  |  |  |  |
|  | 1 | **Relizzazione** |  |  |  |  |  |  |  |  |  |  |  |  |  |
| CEP.ASM.G.00020 |  | Qualifica sismica analitica Ribollitore colonna distillazione URANUS S1 (ASME III) 57A-BA007X | 90d | CEP.ASM.O.00060 | 308d | 0d |  | aggiunto | CX1160 | 4 | PRO | SUP | ANN | P4 | 57A |
| CEP.ASM.G.00021 |  | Fornitura Ribollitore colonna distillazione URANUS S1 (ASME III) 57A-BA007X | 415d | CEP.ASM.G.00020, CEM.MLS.P.00030, CEP.ASM.O.00060 | 308d | 0d |  | Loterios 2023, con dettaglio + 30 | CX1160 | 4 | PRO | SUP | ANN | P4 | 57A |
| CEP.ASM.G.00022 |  | Collaudo Ribollitore colonna distillazione URANUS S1 (ASME III) 57A-BA007X | 3d | CEP.ASM.G.00021 | 308d | 0d |  |  | CX1160 | 4 | PRO | SUP | ANN | P4 | 57A |

| ID | WBS | Activity | Duration | Predecessors | Total float | Free float | Calendar | CEMEX 2025 - Activity code Sogin | CEMEX LOCALE | CEMEX DISCIPLINE | CEMEX ACTIVITY TYPE | CEMEX RESPONSABILITY | CEMEX PARTITE | CEMEX SISTEMI | Note |
| --- | --- | --- | --- | --- | --- | --- | --- | --- | --- | --- | --- | --- | --- | --- | --- |
|  | 2 | **Imballaggio e trasporto** |  |  |  |  |  |  |  |  |  |  |  |  |  |
| CEP.ASM.G.00024 |  | Imballaggio e trasporto Ribollitore colonna distillazione URANUS S1 (ASME III) 57A-BA007X | 10d | CEP.ASM.G.00022, CEP.ASM.G.00028 FF | 500d | 248d |  | CX1160 | 4 | PRO | SUP | ANN | P4 | 57A |  |
|  | 3 | **Documentazione finale** |  |  |  |  |  |  |  |  |  |  |  |  |  |
| CEP.ASM.G.00026 |  | Emissione dossier di fine fabbricazione Ribollitore colonna distillazione URANUS S1 (ASME III) 57A-BA007X | 10d | CEP.ASM.G.00022 | 252d | 0d | 5D 8h ITA H + 2W 2036 | CX1160 | 4 | PRO | SUP | ANN | P4 | 57A |  |
| CEP.ASM.G.00028 |  | Approvazione dossier di fine fabbricazioneRibollitore colonna distillazione URANUS S1 (ASME III) 57A-BA007X | 20d | CEP.ASM.G.00026 | 252d | 0d | 5D 8h ITA H + 2W 2036 | CX1160 | 4 | PRO | SUP | ANN | P4 | 57A |  |
|  | 17 | **Serbatoio recupero acido nitrico URANUS 65 (ASME III) 57A-BL008X** |  |  |  |  |  |  |  |  |  |  |  |  |  |
|  | 1 | **Relizzazione** |  |  |  |  |  |  |  |  |  |  |  |  |  |
| CEP.ASM.G.00129 |  | Qualifica sismica analitica Serbatoio recupero acido nitrico URANUS 65 (ASME III) 57A-BL008X | 90d | CEP.ASM.O.00060 | 388d | 0d |  | CX1160 | 4 | PRO | SUP | ANN | P4 | 57A | aggiunto |
| CEP.ASM.G.00130 |  | Fornitura Serbatoio recupero acido nitrico URANUS 65 (ASME III) 57A-BL008X | 335d | CEP.ASM.G.00129, CEM.MLS.P.00030, CEP.ASM.O.00060 | 388d | 0d |  | CX1160 | 4 | PRO | SUP | ANN | P4 | 57A | "Da offerta 2023 Baglioni; aumentato di 65d." |
| CEP.ASM.G.00132 |  | Collaudo Serbatoio recupero acido nitrico URANUS 65 (ASME III) 57A-BL008X | 3d | CEP.ASM.G.00130 | 388d | 0d |  | CX1160 | 4 | PRO | SUP | ANN | P4 | 57A |  |
|  | 2 | **Imballaggio e trasporto** |  |  |  |  |  |  |  |  |  |  |  |  |  |
| CEP.ASM.G.00134 |  | Imballaggio e trasporto Serbatoio recupero acido nitrico URANUS 65 (ASME III) 57A-BL008X | 10d | CEP.ASM.G.00132, CEP.ASM.G.00138 FF | 604d | 352d |  | CX1160 | 4 | PRO | SUP | ANN | P4 | 57A |  |
|  | 3 | **Documentazione finale** |  |  |  |  |  |  |  |  |  |  |  |  |  |
| CEP.ASM.G.00136 |  | Emissione dossier di fine fabbricazione Serbatoio recupero acido nitrico URANUS 65 (ASME III) 57A-BL008X | 10d | CEP.ASM.G.00132 | 314d | 0d | 5D 8h ITA H + 2W 2036 | CX1160 | 4 | PRO | SUP | ANN | P4 | 57A |  |
| CEP.ASM.G.00138 |  | Approvazione dossier di fine fabbricazione Serbatoio recupero acido nitrico URANUS 65 (ASME III) 57A-BL008X | 20d | CEP.ASM.G.00136 | 314d | 0d | 5D 8h ITA H + 2W 2036 | CX1160 | 4 | PRO | SUP | ANN | P4 | 57A |  |
|  | 18 | **Serbatoio diluzione acido nitrico URANUS 65 (ASME III) 57A-BL015X** |  |  |  |  |  |  |  |  |  |  |  |  |  |
|  | 1 | **Relizzazione** |  |  |  |  |  |  |  |  |  |  |  |  |  |
| CEP.ASM.G.00139 |  | Qualifica sismica analitica Serbatoio diluzione acido nitrico URANUS 65 (ASME III) 57A-BL015X | 90d | CEP.ASM.O.00060 | 388d | 0d |  | CX1160 | 4 | PRO | SUP | ANN | P4 | 57A | aggiunto |
| CEP.ASM.G.00140 |  | Fornitura Serbatoio diluzione acido nitrico URANUS 65 (ASME III) 57A-BL015X | 335d | CEP.ASM.G.00139, CEM.MLS.P.00030, CEP.ASM.O.00060 | 388d | 0d |  | CX1160 | 4 | PRO | SUP | ANN | P4 | 57A | "Da offerta 2023 Baglioni; aumentato di 65d." |
| CEP.ASM.G.00142 |  | Collaudo Serbatoio diluzione acido nitrico URANUS 65 (ASME III) 57A-BL015X | 3d | CEP.ASM.G.00140 | 388d | 0d |  | CX1160 | 4 | PRO | SUP | ANN | P4 | 57A |  |
|  | 2 | **Imballaggio e trasporto** |  |  |  |  |  |  |  |  |  |  |  |  |  |
| CEP.ASM.G.00144 |  | Imballaggio e trasporto Serbatoio diluzione acido nitrico URANUS 65 (ASME III) 57A-BL015X | 10d | CEP.ASM.G.00142, CEP.ASM.G.00148 FF | 597d | 345d |  | CX1160 | 4 | PRO | SUP | ANN | P4 | 57A |  |
|  | 3 | **Documentazione finale** |  |  |  |  |  |  |  |  |  |  |  |  |  |
| CEP.ASM.G.00146 |  | Emissione dossier di fine fabbricazione Serbatoio diluzione acido nitrico URANUS 65 (ASME III) 57A-BL015X | 10d | CEP.ASM.G.00142 | 314d | 0d | 5D 8h ITA H + 2W 2036 | CX1160 | 4 | PRO | SUP | ANN | P4 | 57A |  |
| CEP.ASM.G.00148 |  | Approvazione dossier di fine fabbricazione Serbatoio diluzione acido nitrico URANUS 65 (ASME III) 57A-BL015X | 20d | CEP.ASM.G.00146 | 314d | 0d | 5D 8h ITA H + 2W 2036 | CX1160 | 4 | PRO | SUP | ANN | P4 | 57A |  |

| ID | WBS | Activity | Duration | Predecessors | Total float | Free float | Calendar | Note | quantity | CEMEX 2025 - Activity code Sogin | CEMEX LOCALE | CEMEX DISCIPLINE | CEMEX ACTIVITY TYPE | CEMEX RESPONSABILITY | CEMEX PARTITE | CEMEX SISTEMI |
| --- | --- | --- | --- | --- | --- | --- | --- | --- | --- | --- | --- | --- | --- | --- | --- | --- |
|  | 5 | **Serbatoio di testa (ASME III) 51A-BL001A** |  |  |  |  |  |  |  |  |  |  |  |  |  |  |
|  | 1 | **Relizzazione** |  |  |  |  |  |  |  |  |  |  |  |  |  |  |
| CEP.ASM.E.00000 |  | Qualifica sismica analitica e ambientale Serbatoio di testa (ASME III) 51A-BL001A | 130d | CEP.ASM.O.00040 | 175d | 0d |  | aggiunto | 2 | CX1160 | 2 | PRO | SUP | ANN | P4 | 51A |
| CEP.ASM.E.00010 |  | Fornitura Serbatoio di testa (ASME III) 51A-BL001A | 372d | CEP.ASM.E.00000, CEM.MLS.P.00040, CEP.ASM.O.00040 | 175d | 0d |  | "Loterios 2023, con dettaglio; aumentato di 72d;" | 2 | CX1160 | 2 | PRO | SUP | ANN | P4 | 51A |
| CEP.ASM.E.00012 |  | Collaudo Serbatoio di testa (ASME III) 51A-BL001A | 3d | CEP.ASM.E.00010 | 175d | 0d |  |  |  | CX1160 | 2 | PRO | SUP | ANN | P4 | 51A |
|  | 2 | **Imballaggio e trasporto** |  |  |  |  |  |  |  |  |  |  |  |  |  |  |
| CEP.ASM.E.00014 |  | Imballaggio e trasporto Serbatoio di testa (ASME III) 51A-BL001A | 10d | CEP.ASM.E.00012, CEP.ASM.E.00018 FF | 174d | 117d |  |  |  | CX1160 | 2 | PRO | SUP | ANN | P4 | 51A |
|  | 3 | **Documentazione finale** |  |  |  |  |  |  |  |  |  |  |  |  |  |  |
| CEP.ASM.E.00016 |  | Emissione dossier di fine fabbricazione Serbatoio di testa (ASME III) 51A-BL001A | 10d | CEP.ASM.E.00012 | 144d | 0d | 5D 8h ITA H + 2W 2036 |  |  | CX1160 | 2 | PRO | SUP | ANN | P4 | 51A |
| CEP.ASM.E.00018 |  | Approvazione dossier di fine fabbricazione Serbatoio di testa (ASME III) 51A-BL001A | 20d | CEP.ASM.E.00016 | 144d | 0d | 5D 8h ITA H + 2W 2036 |  |  | CX1160 | 2 | PRO | SUP | ANN | P4 | 51A |
|  | 8 | **Serbatoio di testa (ASME III) 51A-BL001B** |  |  |  |  |  |  |  |  |  |  |  |  |  |  |
|  | 1 | **Relizzazione** |  |  |  |  |  |  |  |  |  |  |  |  |  |  |
| CEP.ASM.E.00015 |  | Qualifica sismica analitica e ambientale Serbatoio di testa (ASME III) 51A-BL001B | 130d | CEP.ASM.O.00040 | 182d | 0d |  | aggiunto |  | CX1160 | 2 | PRO | SUP | ANN | P4 | 51A |
| CEP.ASM.E.00020 |  | Fornitura Serbatoio di testa (ASME III) 51A-BL001B | 372d | CEP.ASM.E.00015, CEM.MLS.P.00040, CEP.ASM.O.00040 | 182d | 0d |  | "Loterios 2023, con dettaglio; aumentato di 72d;" |  | CX1160 | 2 | PRO | SUP | ANN | P4 | 51A |
| CEP.ASM.E.00022 |  | Collaudo Serbatoio di testa (ASME III) 51A-BL001B | 3d | CEP.ASM.E.00020 | 182d | 0d |  |  |  | CX1160 | 2 | PRO | SUP | ANN | P4 | 51A |
|  | 2 | **Imballaggio e trasporto** |  |  |  |  |  |  |  |  |  |  |  |  |  |  |
| CEP.ASM.E.00024 |  | Imballaggio e trasporto Serbatoio di testa (ASME III) 51A-BL001B | 10d | CEP.ASM.E.00022, CEP.ASM.E.00028 FF | 181d | 124d |  |  |  | CX1160 | 2 | PRO | SUP | ANN | P4 | 51A |
|  | 3 | **Documentazione finale** |  |  |  |  |  |  |  |  |  |  |  |  |  |  |
| CEP.ASM.E.00026 |  | Emissione dossier di fine fabbricazione Serbatoio di testa (ASME III) 51A-BL001B | 10d | CEP.ASM.E.00022 | 150d | 0d | 5D 8h ITA H + 2W 2036 |  |  | CX1160 | 2 | PRO | SUP | ANN | P4 | 51A |
| CEP.ASM.E.00028 |  | Approvazione dossier di fine fabbricazione Serbatoio di testa (ASME III) 51A-BL001B | 20d | CEP.ASM.E.00026 | 150d | 0d | 5D 8h ITA H + 2W 2036 |  |  | CX1160 | 2 | PRO | SUP | ANN | P4 | 51A |
|  | 9 | **Serbatoio raccolta concentrato da evaporatore (ASME III) 51A-BL009X** |  |  |  |  |  |  |  |  |  |  |  |  |  |  |
|  | 1 | **Relizzazione** |  |  |  |  |  |  |  |  |  |  |  |  |  |  |
| CEP.ASM.E.00029 |  | Qualifica sismica analitica e ambientale Serbatoio raccolta concentrato da evaporatore (ASME III) 51A-BL009X | 130d | CEP.ASM.O.00040 | 155d | 0d |  | aggiunto |  | CX1160 | 2 | PRO | SUP | ANN | P4 | 51A |
| CEP.ASM.E.00030 |  | Fornitura Serbatoio raccolta concentrato da evaporatore (ASME III) 51A-BL009X | 410d | CEP.ASM.E.00029, CEM.MLS.P.00040, CEP.ASM.O.00040 | 155d | 0d |  | "Loterios 2023, con dettaglio; aumentato di 110d;" |  | CX1160 | 2 | PRO | SUP | ANN | P4 | 51A |
| CEP.ASM.E.00032 |  | Collaudo Serbatoio raccolta concentrato da evaporatore (ASME III) 51A-BL009X | 3d | CEP.ASM.E.00030 | 155d | 0d |  |  |  | CX1160 | 2 | PRO | SUP | ANN | P4 | 51A |

| ID | WBS | Activity | Duration | Predecessors | Total float | Free float | Calendar | CEMEX 2025 - Activity code Sogin | CEMEX LOCALE | CEMEX DISCIPLINE | CEMEX ACTIVITY TYPE | CEMEX RESPONSABILITY | CEMEX PARTITE | CEMEX SISTEMI | Note |
| --- | --- | --- | --- | --- | --- | --- | --- | --- | --- | --- | --- | --- | --- | --- | --- |
|  | 2 | **Imballaggio e trasporto** |  |  |  |  |  |  |  |  |  |  |  |  |  |
| CEP.ASM.E.00034 |  | Imballaggio e trasporto Serbatoio raccolta concentrato da evaporatore (ASME III) 51A-BL009X | 10d | CEP.ASM.E.00032, CEP.ASM.E.00038 FF | 155d | 98d |  | CX1160 | 2 | PRO | SUP | ANN | P4 | 51A |  |
|  | 3 | **Documentazione finale** |  |  |  |  |  |  |  |  |  |  |  |  |  |
| CEP.ASM.E.00036 |  | Emissione dossier di fine fabbricazione Serbatoio raccolta concentrato da evaporatore (ASME III) 51A-BL009X | 10d | CEP.ASM.E.00032 | 129d | 0d | 5D 8h ITA H + 2W 2036 | CX1160 | 2 | PRO | SUP | ANN | P4 | 51A |  |
| CEP.ASM.E.00038 |  | Approvazione dossier di fine fabbricazione Serbatoio raccolta concentrato da evaporatore (ASME III) 51A-BL009X | 20d | CEP.ASM.E.00036 | 129d | 0d | 5D 8h ITA H + 2W 2036 | CX1160 | 2 | PRO | SUP | ANN | P4 | 51A |  |
|  | 10 | **Serbatoio raccolta rifiuti liquidi (ASME III) 51A-BL002X** |  |  |  |  |  |  |  |  |  |  |  |  |  |
|  | 1 | **Relizzazione** |  |  |  |  |  |  |  |  |  |  |  |  |  |
| CEP.ASM.E.00039 |  | Qualifica sismica analitica e ambientale Serbatoio raccolta rifiuti liquidi (ASME III) 51A-BL002X | 130d | CEP.ASM.O.00040 | 162d | 0d |  | CX1160 | 2 | PRO | SUP | ANN | P4 | 51A | aggiunto |
| CEP.ASM.E.00040 |  | Fornitura Serbatoio raccolta rifiuti liquidi (ASME III) 51A-BL002X | 410d | CEP.ASM.E.00039, CEM.MLS.P.00040, CEP.ASM.O.00040 | 162d | 0d |  | CX1160 | 2 | PRO | SUP | ANN | P4 | 51A | "Loterios 2023, con dettaglio; aumentato di 110d;" |
| CEP.ASM.E.00042 |  | Collaudo Serbatoio raccolta rifiuti liquidi (ASME III) 51A-BL002X | 3d | CEP.ASM.E.00040 | 162d | 0d |  | CX1160 | 2 | PRO | SUP | ANN | P4 | 51A |  |
|  | 2 | **Imballaggio e trasporto** |  |  |  |  |  |  |  |  |  |  |  |  |  |
| CEP.ASM.E.00044 |  | Imballaggio e trasporto Serbatoio raccolta rifiuti liquidi (ASME III) 51A-BL002X | 10d | CEP.ASM.E.00042, CEP.ASM.E.00048 FF | 162d | 105d |  | CX1160 | 2 | PRO | SUP | ANN | P4 | 51A |  |
|  | 3 | **Documentazione finale** |  |  |  |  |  |  |  |  |  |  |  |  |  |
| CEP.ASM.E.00046 |  | Emissione dossier di fine fabbricazione Serbatoio raccolta rifiuti liquidi (ASME III) 51A-BL002X | 10d | CEP.ASM.E.00042 | 135d | 0d | 5D 8h ITA H + 2W 2036 | CX1160 | 2 | PRO | SUP | ANN | P4 | 51A |  |
| CEP.ASM.E.00048 |  | Approvazione dossier di fine fabbricazione Serbatoio raccolta rifiuti liquidi (ASME III) 51A-BL002X | 20d | CEP.ASM.E.00046 | 135d | 0d | 5D 8h ITA H + 2W 2036 | CX1160 | 2 | PRO | SUP | ANN | P4 | 51A |  |
|  | 11 | **Serbatoio alimentazione evaporatore (ASME III) 57A-BL001X** |  |  |  |  |  |  |  |  |  |  |  |  |  |
|  | 1 | **Relizzazione** |  |  |  |  |  |  |  |  |  |  |  |  |  |
| CEP.ASM.E.00049 |  | Qualifica sismica analitica Serbatoio alimentazione evaporatore (ASME III) 57A-BL001X | 90d | CEP.ASM.O.00040 | 252d | 0d |  | CX1160 | 2 | PRO | SUP | ANN | P4 | 57A | aggiunto |
| CEP.ASM.E.00050 |  | Fornitura Serbatoio alimentazione evaporatore (ASME III) 57A-BL001X | 372d | CEP.ASM.E.00049, CEM.MLS.P.00040, CEP.ASM.O.00040 | 252d | 0d |  | CX1160 | 2 | PRO | SUP | ANN | P4 | 57A | "Loterios 2023, con dettaglio; aumentato di 72d;" |
| CEP.ASM.E.00052 |  | Collaudo Serbatoio alimentazione evaporatore (ASME III) 57A-BL001X | 3d | CEP.ASM.E.00050 | 252d | 0d |  | CX1160 | 2 | PRO | SUP | ANN | P4 | 57A |  |
|  | 2 | **Imballaggio e trasporto** |  |  |  |  |  |  |  |  |  |  |  |  |  |
| CEP.ASM.E.00054 |  | Imballaggio e trasporto Serbatoio alimentazione evaporatore (ASME III) 57A-BL001X | 10d | CEP.ASM.E.00052, CEP.ASM.E.00058 FF | 253d | 196d |  | CX1160 | 2 | PRO | SUP | ANN | P4 | 57A |  |
|  | 3 | **Documentazione finale** |  |  |  |  |  |  |  |  |  |  |  |  |  |
| CEP.ASM.E.00056 |  | Emissione dossier di fine fabbricazione Serbatoio alimentazione evaporatore (ASME III) 57A-BL001X | 10d | CEP.ASM.E.00052 | 210d | 0d | 5D 8h ITA H + 2W 2036 | CX1160 | 2 | PRO | SUP | ANN | P4 | 57A |  |
| CEP.ASM.E.00058 |  | Approvazione dossier di fine fabbricazione Serbatoio alimentazione evaporatore (ASME III) 57A-BL001X | 20d | CEP.ASM.E.00056 | 210d | 0d | 5D 8h ITA H + 2W 2036 | CX1160 | 2 | PRO | SUP | ANN | P4 | 57A |  |

| ID | WBS | Activity | Duration | Predecessors | Total float | Free float | Calendar | Note | CEMEX 2025 - Activity code Sogin | CEMEX LOCALE | CEMEX DISCIPLINE | CEMEX ACTIVITY TYPE | CEMEX RESPONSABILITY | CEMEX PARTITE | CEMEX SISTEMI |
| --- | --- | --- | --- | --- | --- | --- | --- | --- | --- | --- | --- | --- | --- | --- | --- |
|  | 12 | **Guardia idraulica (ASME III) 51A-BL013X** |  |  |  |  |  |  |  |  |  |  |  |  |  |
|  | 1 | **Relizzazione** |  |  |  |  |  |  |  |  |  |  |  |  |  |
| CEP.ASM.E.00059 |  | Qualifica sismica analitica e ambientale Guardia idraulica (ASME III) 51A-BL013X | 130d | CEP.ASM.O.00040 | 151d | 0d |  | aggiunto | CX1160 | 2 | PRO | SUP | ANN | P4 | 51A |
| CEP.ASM.E.00060 |  | Fornitura Guardia idraulica (ASME III) 51A-BL013X | 410d | CEP.ASM.E.00059, CEM.MLS.P.00040, CEP.ASM.O.00040 | 151d | 0d |  | Da offerta 2023 Baglioni, aumentato di 140 | CX1160 | 2 | PRO | SUP | ANN | P4 | 51A |
| CEP.ASM.E.00062 |  | Collaudo Guardia idraulica (ASME III) 51A-BL013X | 3d | CEP.ASM.E.00060 | 151d | 0d |  |  | CX1160 | 2 | PRO | SUP | ANN | P4 | 51A |
|  | 2 | **Imballaggio e trasporto** |  |  |  |  |  |  |  |  |  |  |  |  |  |
| CEP.ASM.E.00064 |  | Imballaggio e trasporto Guardia idraulica (ASME III) 51A-BL013X | 10d | CEP.ASM.E.00062, CEP.ASM.E.00068 FF | 150d | 93d |  |  | CX1160 | 2 | PRO | SUP | ANN | P4 | 51A |
|  | 3 | **Documentazione finale** |  |  |  |  |  |  |  |  |  |  |  |  |  |
| CEP.ASM.E.00066 |  | Emissione dossier di fine fabbricazione Guardia idraulica (ASME III) 51A-BL013X | 10d | CEP.ASM.E.00062 | 125d | 0d | 5D 8h ITA H + 2W 2036 |  | CX1160 | 2 | PRO | SUP | ANN | P4 | 51A |
| CEP.ASM.E.00068 |  | Approvazione dossier di fine fabbricazione Guardia idraulica (ASME III) 51A-BL013X | 20d | CEP.ASM.E.00066 | 125d | 0d | 5D 8h ITA H + 2W 2036 |  | CX1160 | 2 | PRO | SUP | ANN | P4 | 51A |
|  | 13 | **Guardia idraulica (ASME III) 57A-BL016X** |  |  |  |  |  |  |  |  |  |  |  |  |  |
|  | 1 | **Relizzazione** |  |  |  |  |  |  |  |  |  |  |  |  |  |
| CEP.ASM.E.00065 |  | Qualifica sismica analitica e ambientale Guardia idraulica (ASME III) 57A-BL016X | 130d | CEP.ASM.O.00040 | 309d | 0d |  | aggiunto | CX1160 | 2 | PRO | SUP | ANN | P4 | 57A |
| CEP.ASM.E.00070 |  | Fornitura Guardia idraulica (ASME III) 57A-BL016X | 270d | CEP.ASM.E.00065, CEM.MLS.P.00040, CEP.ASM.O.00040 | 309d | 0d |  | Da offerta 2023 Baglioni | CX1160 | 2 | PRO | SUP | ANN | P4 | 57A |
| CEP.ASM.E.00072 |  | Collaudo Guardia idraulica (ASME III) 57A-BL016X | 3d | CEP.ASM.E.00070 | 309d | 0d |  |  | CX1160 | 2 | PRO | SUP | ANN | P4 | 57A |
|  | 2 | **Imballaggio e trasporto** |  |  |  |  |  |  |  |  |  |  |  |  |  |
| CEP.ASM.E.00074 |  | Imballaggio e trasporto Guardia idraulica (ASME III) 57A-BL016X | 10d | CEP.ASM.E.00072, CEP.ASM.E.00078 FF | 309d | 252d |  |  | CX1160 | 2 | PRO | SUP | ANN | P4 | 57A |
|  | 3 | **Documentazione finale** |  |  |  |  |  |  |  |  |  |  |  |  |  |
| CEP.ASM.E.00076 |  | Emissione dossier di fine fabbricazione Guardia idraulica (ASME III) 57A-BL016X | 10d | CEP.ASM.E.00072 | 253d | 0d | 5D 8h ITA H + 2W 2036 |  | CX1160 | 2 | PRO | SUP | ANN | P4 | 57A |
| CEP.ASM.E.00078 |  | Approvazione dossier di fine fabbricazione Guardia idraulica (ASME III) 57A-BL016X | 20d | CEP.ASM.E.00076 | 253d | 0d | 5D 8h ITA H + 2W 2036 |  | CX1160 | 2 | PRO | SUP | ANN | P4 | 57A |
|  | 14 | **Serbatoio alimentazione fusti (ASME III) 51A-BL004X** |  |  |  |  |  |  |  |  |  |  |  |  |  |
|  | 1 | **Relizzazione** |  |  |  |  |  |  |  |  |  |  |  |  |  |
| CEP.ASM.J.00005 |  | Qualifica sismica analitica e ambientale Serbatoio alimentazione fusti (ASME III) 51A-BL004X | 130d | CEP.ASM.O.00040 | 178d | 0d |  | aggiunto | CX1160 | 53 | PRO | SUP | ANN | P4 | 51A |
| CEP.ASM.J.00010 |  | Fornitura Serbatoio alimentazione fusti (ASME III) 51A-BL004X | 410d | CEP.ASM.J.00005, CEM.MLS.P.00040, CEP.ASM.O.00040 | 178d | 0d |  | "Da fornitore, con dettaglio; aumentato di 95d" | CX1160 | 53 | PRO | SUP | ANN | P4 | 51A |
| CEP.ASM.J.00012 |  | Collaudo Serbatoio alimentazione fusti (ASME III) 51A-BL004X | 3d | CEP.ASM.J.00010 | 178d | 0d |  |  | CX1160 | 53 | PRO | SUP | ANN | P4 | 51A |

| ID | WBS | Activity | Duration | Predecessors | Total float | Free float | Calendar | CEMEX 2025 - Activity code Sogin | CEMEX LOCALE | CEMEX DISCIPLINE | CEMEX ACTIVITY TYPE | CEMEX RESPONSABILITY | CEMEX PARTITE | CEMEX SISTEMI | Note |
| --- | --- | --- | --- | --- | --- | --- | --- | --- | --- | --- | --- | --- | --- | --- | --- |
|  | 2 | **Imballaggio e trasporto** |  |  |  |  |  |  |  |  |  |  |  |  |  |
| CEP.ASM.J.00014 |  | Imballaggio e trasporto Serbatoio alimentazione fusti (ASME III) 51A-BL004X | 10d | CEP.ASM.J.00012, CEP.ASM.J.00018 FF | 181d | 124d |  | CX1160 | 53 | PRO | SUP | ANN | P4 | 51A |  |
|  | 3 | **Documentazione finale** |  |  |  |  |  |  |  |  |  |  |  |  |  |
| CEP.ASM.J.00016 |  | Emissione dossier di fine fabbricazione Serbatoio alimentazione fusti (ASME III) 51A-BL004X | 10d | CEP.ASM.J.00012 | 148d | 0d | 5D 8h ITA H + 2W 2036 | CX1160 | 53 | PRO | SUP | ANN | P4 | 51A |  |
| CEP.ASM.J.00018 |  | Approvazione dossier di fine fabbricazione Serbatoio alimentazione fusti (ASME III) 51A-BL004X | 20d | CEP.ASM.J.00016 | 148d | 0d | 5D 8h ITA H + 2W 2036 | CX1160 | 53 | PRO | SUP | ANN | P4 | 51A |  |
|  | 15 | **Serbatoio di neutralizzazione (ASME III) 51A-BL003X** |  |  |  |  |  |  |  |  |  |  |  |  |  |
|  | 1 | **Relizzazione** |  |  |  |  |  |  |  |  |  |  |  |  |  |
| CEP.ASM.J.00015 |  | Qualifica sismica analitica e ambientale Serbatoio di neutralizzazione (ASME III) 51A-BL003X | 130d | CEP.ASM.O.00040 | 174d | 0d |  | CX1160 | 53 | PRO | SUP | ANN | P4 | 51A | aggiunto |
| CEP.ASM.J.00020 |  | Fornitura Serbatoio di neutralizzazione (ASME III) 51A-BL003X | 410d | CEP.ASM.J.00015, CEM.MLS.P.00040, CEP.ASM.O.00040 | 174d | 0d |  | CX1160 | 53 | PRO | SUP | ANN | P4 | 51A | "Da fornitore, con dettaglio; aumentato di 95d" |
| CEP.ASM.J.00022 |  | Collaudo Serbatoio di neutralizzazione (ASME III) 51A-BL003X | 3d | CEP.ASM.J.00020 | 174d | 0d |  | CX1160 | 53 | PRO | SUP | ANN | P4 | 51A |  |
|  | 2 | **Imballaggio e trasporto** |  |  |  |  |  |  |  |  |  |  |  |  |  |
| CEP.ASM.J.00024 |  | Imballaggio e trasporto Serbatoio di neutralizzazione (ASME III) 51A-BL003X | 10d | CEP.ASM.J.00022, CEP.ASM.J.00028 FF | 174d | 84d |  | CX1160 | 53 | PRO | SUP | ANN | P4 | 51A |  |
|  | 3 | **Documentazione finale** |  |  |  |  |  |  |  |  |  |  |  |  |  |
| CEP.ASM.J.00026 |  | Emissione dossier di fine fabbricazione Serbatoio di neutralizzazione (ASME III) 51A-BL003X | 10d | CEP.ASM.J.00022 | 145d | 0d | 5D 8h ITA H + 2W 2036 | CX1160 | 53 | PRO | SUP | ANN | P4 | 51A |  |
| CEP.ASM.J.00028 |  | Approvazione dossier di fine fabbricazione Serbatoio di neutralizzazione (ASME III) 51A-BL003X | 20d | CEP.ASM.J.00026 | 145d | 0d | 5D 8h ITA H + 2W 2036 | CX1160 | 53 | PRO | SUP | ANN | P4 | 51A |  |
|  | 1 | **Serbatoio raccolta distillato (ASME III) 57A-BL009B** |  |  |  |  |  |  |  |  |  |  |  |  |  |
|  | 1 | **Relizzazione** |  |  |  |  |  |  |  |  |  |  |  |  |  |
| CEP.ASM.H.00005 |  | Qualifica sismica analitica Serbatoio raccolta distillato (ASME III) 57A-BL009B | 90d | CEP.ASM.O.00040 | 346d | 0d |  | CX1160 | 5 | PRO | SUP | ANN | P4 | 57A | aggiunto |
| CEP.ASM.H.00010 |  | Fornitura Serbatoio raccolta distillato (ASME III) 57A-BL009B | 335d | CEP.ASM.H.00005, CEM.MLS.P.00040, CEP.ASM.O.00040 | 346d | 0d |  | CX1160 | 5 | PRO | SUP | ANN | P4 | 57A | "Da offerta 2023 Baglioni; aumentato di 65" |
| CEP.ASM.H.00012 |  | Collaudo Serbatoio raccolta distillato (ASME III) 57A-BL009B | 3d | CEP.ASM.H.00010 | 346d | 0d |  | CX1160 | 5 | PRO | SUP | ANN | P4 | 57A |  |
|  | 2 | **Imballaggio e trasporto** |  |  |  |  |  |  |  |  |  |  |  |  |  |
| CEP.ASM.H.00014 |  | Imballaggio e trasporto Serbatoio raccolta distillato (ASME III) 57A-BL009B | 36d | CEP.ASM.H.00012, CEP.ASM.H.00018 FF | 341d | 234d |  | CX1160 | 5 | PRO | SUP | ANN | P4 | 57A |  |
|  | 3 | **Documentazione finale** |  |  |  |  |  |  |  |  |  |  |  |  |  |
| CEP.ASM.H.00016 |  | Emissione dossier di fine fabbricazione Serbatoio raccolta distillato (ASME III) 57A-BL009B | 10d | CEP.ASM.H.00012 | 279d | 0d | 5D 8h ITA H + 2W 2036 | CX1160 | 5 | PRO | SUP | ANN | P4 | 57A |  |
| CEP.ASM.H.00018 |  | Approvazione dossier di fine fabbricazione Serbatoio raccolta distillato (ASME III) 57A-BL009B | 20d | CEP.ASM.H.00016 | 279d | 0d | 5D 8h ITA H + 2W 2036 | CX1160 | 5 | PRO | SUP | ANN | P4 | 57A |  |

| ID | WBS | Activity | Duration | Predecessors | Total float | Free float | Calendar | Note | CEMEX 2025 - Activity code Sogin | CEMEX LOCALE | CEMEX DISCIPLINE | CEMEX ACTIVITY TYPE | CEMEX RESPONSABILITY | CEMEX PARTITE | CEMEX SISTEMI |
| --- | --- | --- | --- | --- | --- | --- | --- | --- | --- | --- | --- | --- | --- | --- | --- |
|  | 16 | **Serbatoio raccolta distillato (ASME III) 57A-BL009A** |  |  |  |  |  |  |  |  |  |  |  |  |  |
|  | 1 | **Relizzazione** |  |  |  |  |  |  |  |  |  |  |  |  |  |
| CEP.ASM.H.00015 |  | Qualifica sismica analitica Serbatoio raccolta distillato (ASME III) 57A-BL009A | 90d | CEP.ASM.O.00040 | 353d | 0d |  | aggiunto | CX1160 | 5 | PRO | SUP | ANN | P4 | 57A |
| CEP.ASM.H.00020 |  | Fornitura Serbatoio raccolta distillato (ASME III) 57A-BL009A | 335d | CEP.ASM.H.00015, CEM.MLS.P.00040, CEP.ASM.O.00040 | 353d | 0d |  | "Da offerta 2023 Baglioni; aumentato di 65" | CX1160 | 5 | PRO | SUP | ANN | P4 | 57A |
| CEP.ASM.H.00022 |  | Collaudo Serbatoio raccolta distillato (ASME III) 57A-BL009A | 3d | CEP.ASM.H.00020 | 353d | 0d |  |  | CX1160 | 5 | PRO | SUP | ANN | P4 | 57A |
|  | 2 | **Imballaggio e trasporto** |  |  |  |  |  |  |  |  |  |  |  |  |  |
| CEP.ASM.H.00024 |  | Imballaggio e trasporto Serbatoio raccolta distillato (ASME III) 57A-BL009A | 36d | CEP.ASM.H.00022, CEP.ASM.H.00028 FF | 348d | 241d |  |  | CX1160 | 5 | PRO | SUP | ANN | P4 | 57A |
|  | 3 | **Documentazione finale** |  |  |  |  |  |  |  |  |  |  |  |  |  |
| CEP.ASM.H.00026 |  | Emissione dossier di fine fabbricazione Serbatoio raccolta distillato (ASME III) 57A-BL009A | 10d | CEP.ASM.H.00022 | 285d | 0d | 5D 8h ITA H + 2W 2036 |  | CX1160 | 5 | PRO | SUP | ANN | P4 | 57A |
| CEP.ASM.H.00028 |  | Approvazione dossier di fine fabbricazione Serbatoio raccolta distillato (ASME III) 57A-BL009A | 20d | CEP.ASM.H.00026 | 285d | 0d | 5D 8h ITA H + 2W 2036 |  | CX1160 | 5 | PRO | SUP | ANN | P4 | 57A |
|  | 19 | **Serbatoio raccolta condensato (ASME III) 57A-BL004X** |  |  |  |  |  |  |  |  |  |  |  |  |  |
|  | 1 | **Relizzazione** |  |  |  |  |  |  |  |  |  |  |  |  |  |
| CEP.ASM.G.00075 |  | Qualifica sismica analitica e ambientale Serbatoio raccolta condensato (ASME III) 57A-BL004X | 130d | CEP.ASM.O.00040 | 410d | 0d |  | aggiunto | CX1160 | 4 | PRO | SUP | ANN | P4 | 57A |
| CEP.ASM.G.00080 |  | Fornitura Serbatoio raccolta condensato (ASME III) 57A-BL004X | 273d | CEP.ASM.G.00075, CEM.MLS.P.00040, CEP.ASM.O.00040 | 410d | 0d |  | "Loterios 2023, con dettaglio; aumentato di 53" | CX1160 | 4 | PRO | SUP | ANN | P4 | 57A |
| CEP.ASM.G.00082 |  | Collaudo Serbatoio raccolta condensato (ASME III) 57A-BL004X | 3d | CEP.ASM.G.00080 | 410d | 0d |  |  | CX1160 | 4 | PRO | SUP | ANN | P4 | 57A |
|  | 2 | **Imballaggio e trasporto** |  |  |  |  |  |  |  |  |  |  |  |  |  |
| CEP.ASM.G.00084 |  | Imballaggio e trasporto Serbatoio raccolta condensato (ASME III) 57A-BL004X | 10d | CEP.ASM.G.00082, CEP.ASM.G.00088 FF | 618d | 366d |  |  | CX1160 | 4 | PRO | SUP | ANN | P4 | 57A |
|  | 3 | **Documentazione finale** |  |  |  |  |  |  |  |  |  |  |  |  |  |
| CEP.ASM.G.00086 |  | Emissione dossier di fine fabbricazione Serbatoio raccolta condensato (ASME III) 57A-BL004X | 10d | CEP.ASM.G.00082 | 333d | 0d | 5D 8h ITA H + 2W 2036 |  | CX1160 | 4 | PRO | SUP | ANN | P4 | 57A |
| CEP.ASM.G.00088 |  | Approvazione dossier di fine fabbricazione Serbatoio raccolta condensato (ASME III) 57A-BL004X | 20d | CEP.ASM.G.00086 | 333d | 0d | 5D 8h ITA H + 2W 2036 |  | CX1160 | 4 | PRO | SUP | ANN | P4 | 57A |
|  | 4 | **Eiettori ASME III** |  |  |  |  |  |  |  |  |  |  |  |  |  |
|  | 4 | **Qualifiche** |  |  |  |  |  |  |  |  |  |  |  |  |  |
| CEP.ASM.Q.11610 |  | Qualifica eiettori | 135d | CEP.LIN.D.00020 | 129d | 0d | 5D 8h ITA H + 2W 2036 | aggiunto | CX1160 | 0 | HVA | SUP | ANN | P4 | 0 |
|  | 1 | **Realizzazione** |  |  |  |  |  |  |  |  |  |  |  |  |  |
| CEP.ASM.G.148 |  | Realizzazione Eiettori (ASME III) | 300d | CEP.ASM.Q.11610 | 156d | 0d |  | GEA | CX1160 | 4 | PRO | SUP | ANN | P4 | 0 |
| CEP.ASM.G.158 |  | Collaudo Eiettori (ASME III) | 5d | CEP.ASM.G.148 | 156d | 0d |  | aggiunto | CX1160 | 4 | PRO | SUP | ANN | P4 | 0 |

| ID | WBS | Activity | Type | Duration | Predecessors | Total float | Free float | Calendar | Note | CEMEX 2025 - Activity code Sogin | CEMEX LOCALE | CEMEX DISCIPLINE | CEMEX ACTIVITY TYPE | CEMEX RESPONSABILITY | CEMEX PARTITE | CEMEX SISTEMI |
| --- | --- | --- | --- | --- | --- | --- | --- | --- | --- | --- | --- | --- | --- | --- | --- | --- |
|  | 2 | **Imballaggio e trasporto** |  |  |  |  |  |  |  |  |  |  |  |  |  |  |
| CEP.ASM.G.168 |  | Imballaggio e trasporto Eiettori (ASME III) |  | 10d | CEP.ASM.G.188 FF | 156d | 148d |  | aggiunto | CX1160 | 4 | PRO | SUP | ANN | P4 | 0 |
|  | 3 | **Documentazione finale** |  |  |  |  |  |  |  |  |  |  |  |  |  |  |
| CEP.ASM.G.178 |  | Emissione dossier di fine fabbricazione Eiettori (ASME III) |  | 10d | CEP.ASM.G.158 | 130d | 0d | 5D 8h ITA H + 2W 2036 | aggiunto | CX1160 | 4 | PRO | SUP | ANN | P4 | 0 |
| CEP.ASM.G.188 |  | Approvazione dossier di fine fabbricazione Eiettori (ASME III) |  | 20d | CEP.ASM.G.178 | 130d | 0d | 5D 8h ITA H + 2W 2036 | aggiunto | CX1160 | 4 | PRO | SUP | ANN | P4 | 0 |
|  | 24 | **Realizzazione pompe centrifughe e volumetriche** |  |  |  |  |  |  |  |  |  |  |  |  |  |  |
| CEP.POM.M.00010 |  | Disponibilità pompe in sito | milestone | 0d | CEP.POM.D.00040 FF, CEP.POM.P.00010 FF | 152d | 16d |  |  | CX1180 | 0 | PRO | SUP | ANN | P4 | 0 |
|  | 1 | **Ordini** |  |  |  |  |  |  |  |  |  |  |  |  |  |  |
| CEP.POM.O.00010 |  | Specifica d'Acquisto pompe |  | 15d | CEM.ENG.I.00040 | 146d | 0d |  |  | CX1180 | 0 | PRO | SUP | ANN | P4 | 0 |
| CEP.POM.O.00020 |  | Ordine pompe |  | 40d | CEP.POM.O.00010 | 146d | 0d |  |  | CX1180 | 0 | PRO | SUP | ANN | P4 | 0 |
|  | 4 | **Documentazione iniziale** |  |  |  |  |  |  |  |  |  |  |  |  |  |  |
| CEP.POM.D.00010 |  | Documentazione iniziale pompe |  | 20d | CEP.POM.O.00020 | 121d | 0d | 5D 8h ITA H + 2W 2036 |  | CX1180 | 0 | PRO | SUP | ANN | P4 | 0 |
| CEP.POM.D.00020 |  | Approvazione della documentazione iniziale pompe |  | 20d | CEP.POM.D.00010 | 121d | 0d | 5D 8h ITA H + 2W 2036 |  | CX1180 | 0 | PRO | SUP | SOGIN | P4 |  |
|  | 2 | **Qualifiche** |  |  |  |  |  |  |  |  |  |  |  |  |  |  |
| CEP.POM.Q.00010 |  | Piano di qualifica pompe |  | 20d | CEP.POM.O.00020 | 156d | 0d |  |  | CX1180 | 0 | PRO | SUP | ANN | P4 | 0 |
| CEP.POM.Q.00020 |  | Approvazione del Piano di qualifica pompe |  | 20d | CEP.POM.Q.00010 | 124d | 3d | 5D 8h ITA H + 2W 2036 |  | CX1180 | 0 | PRO | SUP | SOGIN | P4 |  |
| CEP.POM.Q.00030 |  | Realizzazione prototipi pompe |  | 135d | CEP.POM.Q.00020, CEP.POM.D.00020 | 152d | 0d |  | Stima 2023 Ricci | CX1180 | 0 | PRO | SUP | ANN | P4 | 0 |
| CEP.POM.Q.00040 |  | FAT prototipi pompe |  | 5d | CEP.POM.Q.00030 | 152d | 0d |  | Stima 2023 Ricci | CX1180 | 0 | PRO | SUP | ANN | P4 | 0 |
| CEP.POM.Q.00050 |  | Test ambientale/sismico pompe |  | 16d | CEP.POM.Q.00030, CEP.POM.Q.00040 | 152d | 0d |  | verifica per ambientale, Stima 2023 Ricci | CX1180 | 0 | PRO | TEST | ANN | P4 | 0 |
| CEP.POM.Q.00060 |  | Test Report pompe |  | 20d | CEP.POM.Q.00050 SS+4d | 152d | 0d |  | Stima 2023 Ricci | CX1180 | 0 | PRO | SUP | ANN | P4 | 0 |
| CEP.POM.Q.00080 |  | Approvazione del Test Report pompe |  | 20d | CEP.POM.Q.00060 | 126d | 0d | 5D 8h ITA H + 2W 2036 |  | CX1180 | 0 | PRO | SUP | SOGIN | P4 |  |
|  | 3 | **Realizzazione** |  |  |  |  |  |  |  |  |  |  |  |  |  |  |
| CEP.POM.F.00010 |  | Fabbricazione pompe |  | 266d | CEP.POM.D.00020, CEP.POM.Q.00080 | 152d | 0d |  | "Stima 2023 Ricci; aumentato di 136d" | CX1180 | 0 | PRO | SUP | ANN | P4 | 0 |
| CEP.POM.F.00020 |  | FAT pompe |  | 10d | CEP.POM.F.00010 | 152d | 0d |  | Stima 2023 Ricci | CX1180 | 0 | PRO | SUP | ANN | P4 | 0 |

| ID | WBS | Activity | Type | Duration | Predecessors | Total float | Free float | Calendar | CEMEX 2025 - Activity code Sogin | CEMEX LOCALE | CEMEX DISCIPLINE | CEMEX ACTIVITY TYPE | CEMEX RESPONSABILITY | CEMEX PARTITE | CEMEX SISTEMI | Note |
| --- | --- | --- | --- | --- | --- | --- | --- | --- | --- | --- | --- | --- | --- | --- | --- | --- |
|  | 10 | **Packaging e trasporto in sito** |  |  |  |  |  |  |  |  |  |  |  |  |  |  |
| CEP.POM.P.00010 |  | Imballaggio e Trasporto in sito pompe |  | 10d | CEP.POM.F.00020, CEP.POM.D.00040 FF | 152d | 0d |  | CX1180 | 0 | PRO | SUP | ANN | P4 | 0 |  |
|  | 5 | **Documentazione finale** |  |  |  |  |  |  |  |  |  |  |  |  |  |  |
| CEP.POM.D.00030 |  | Dossier di fine fabbricazione pompe |  | 5d | CEP.POM.F.00020 | 126d | 0d | 5D 8h ITA H + 2W 2036 | CX1180 | 0 | PRO | SUP | ANN | P4 | 0 |  |
| CEP.POM.D.00040 |  | Approvazione del Dossier di fine fabbricazione pompe |  | 20d | CEP.POM.D.00030, CEP.POM.Q.00080 | 126d | 0d | 5D 8h ITA H + 2W 2036 | CX1180 | 0 | PRO | SUP | SOGIN | P4 |  |  |
|  | 8 | **Fornitura componenti di linea (piping, valvole, eiettori, raccorderia, flange, filtri etc)** |  |  |  |  |  |  |  |  |  |  |  |  |  |  |
|  | 1 | **Ordini** |  |  |  |  |  |  |  |  |  |  |  |  |  |  |
| CEP.LIN.O.00010 |  | Specifica d'Acquisto separatore a scambio ionico |  | 30d | CEM.ENG.I.00040 FS+40d | 301d | 0d | 5D 8h ITA H + 2W 2036 | CX1180 | 0 | PRO | SUP | ANN | P4 | 51D |  |
| CEP.LIN.O.00020 |  | Ordine separatore a scambio ionico |  | 40d | CEP.LIN.O.00010 | 301d | 0d | 5D 8h ITA H + 2W 2036 | CX1180 | 0 | PRO | SUP | ANN | P4 | 51D |  |
| CEP.LIN.O.00030 |  | Specifica d'Acquisto componenti di linea (valvole, eiettori, piping, raccorderia, flange, filtri etc) |  | 30d | CEM.ENG.I.00040 | 7d | 0d | 5D 8h ITA H + 2W 2036 | CX1180 | 0 | PRO | SUP | ANN | P4 | 0 |  |
| CEP.LIN.O.00040 |  | Ordine componenti di linea (valvole, eiettori, piping, raccorderia, flange, filtri etc) |  | 40d | CEP.LIN.O.00030 | 7d | 0d | 5D 8h ITA H + 2W 2036 | CX1180 | 0 | PRO | SUP | ANN | P4 | 0 |  |
|  | 3 | **Componenti di linea (piping, eiettori, raccorderia, valvole, flange, filtri etc)** |  |  |  |  |  |  |  |  |  |  |  |  |  |  |
| CEP.LIN.M.00010 |  | Disponibilità componenti di linea (valvole, eiettori, piping, raccorderia, flange etc) in sito | milestone | 0d | CEP.ASM.G.168 FF, CEP.LIN.D.40 FF, CEP.LIN.P.00010 FF | 8d | 0d |  | CX1180 | 0 | PRO | SUP | ANN | P4 | 0 | da stimare |
|  | 1 | **Documentazione iniziale** |  |  |  |  |  |  |  |  |  |  |  |  |  |  |
| CEP.LIN.D.00015 |  | Documentazione iniziale componenti di linea (valvole, eiettori, piping, raccorderia, flange etc) |  | 20d | CEP.LIN.O.00040 | 70d | 0d | 5D 8h ITA H + 2W 2036 | CX1180 | 0 | PRO | SUP | ANN | P4 | 0 | da stimare |
| CEP.LIN.D.00020 |  | Approvazione documentazione iniziale componenti di linea (valvole, eiettori, piping, raccorderia, flange etc) |  | 20d | CEP.LIN.D.00015 | 70d | 0d | 5D 8h ITA H + 2W 2036 | CX1180 | 0 | PRO | SUP | SOGIN | P4 |  | da stimare |
|  | 3 | **Realizzazione** |  |  |  |  |  |  |  |  |  |  |  |  |  |  |
| CEP.LIN.F.00005 |  | Qualifica componenti di linea (valvole, eiettori, piping, raccorderia, flange etc) |  | 130d | CEP.LIN.O.00040 | 8d | 0d |  | CX1180 | 0 | PRO | SUP | ANN | P4 | 0 | aggiunto |
| CEP.LIN.F.00010 |  | Fornitura componenti di linea (valvole, eiettori, piping, raccorderia, flange etc) |  | 530d | CEP.LIN.F.00005, CEP.LIN.D.00020 | 8d | 0d |  | CX1180 | 0 | PRO | SUP | ANN | P4 | 0 |  |
| CEP.LIN.F.00015 |  | FAT componenti di linea (valvole, eiettori, piping, raccorderia, flange etc) |  | 10d | CEP.LIN.F.00010 | 8d | 0d |  | CX1180 | 0 | PRO | SUP | ANN | P4 | 0 |  |
| CEP.LIN.L.00090 |  | 2 Filtri meccanici del jet scrubber 51D-FG005A/B (fornitura e trasporto) |  | 90d | CEP.LIN.O.00040 | 639d | 553d |  | CX1180 | 45 | PRO | SUP | ANN | P4 | 51D | stima 2020 |
| CEP.LIN.L.00140 |  | Banco filtrante 51D-DJ109 (fornitura e trasporto) |  | 160d | CEP.LIN.O.00040 | 581d | 495d |  | CX1180 | 45 | PRO | SUP | ANN | P4 | 51D | stima 2020 |
| CEP.LIN.L.00150 |  | Riscaldatore elettrico aria di miscelazione 51D-BJ001X (fornitura e trasporto) |  | 180d | CEP.LIN.O.00040 | 567d | 481d |  | CX1180 | 45 | PRO | SUP | ANN | P4 | 51D | stima 2020 |
|  | 10 | **Packaging e trasporto in sito** |  |  |  |  |  |  |  |  |  |  |  |  |  |  |
| CEP.LIN.P.00010 |  | Imballaggio e Trasporto in sito componenti di linea (valvole, eiettori, piping, raccorderia, flange etc) |  | 10d | CEP.LIN.F.00015, CEP.LIN.D.40 FF | 8d | 0d |  | CX1180 | 0 | PRO | SUP | ANN | P4 | 0 |  |

| ID | WBS | Activity | Type | Duration | Predecessors | Total float | Free float | Calendar | Note | CEMEX 2025 - Activity code Sogin | CEMEX LOCALE | CEMEX DISCIPLINE | CEMEX ACTIVITY TYPE | CEMEX RESPONSABILITY | CEMEX PARTITE | CEMEX SISTEMI |
| --- | --- | --- | --- | --- | --- | --- | --- | --- | --- | --- | --- | --- | --- | --- | --- | --- |
|  | 5 | **Documentazione finale** |  |  |  |  |  |  |  |  |  |  |  |  |  |  |
| CEP.LIN.D.00035 |  | Dossier di fine fabbricazione componenti di linea (valvole, eiettori, piping, raccorderia, flange etc) |  | 10d | CEP.LIN.F.00015 | 7d | 0d | 5D 8h ITA H + 2W 2036 | da stimare | CX1180 | 0 | PRO | SUP | ANN | P4 | 0 |
| CEP.LIN.D.40 |  | Approvazione Dossier fine fabbricazione componenti di linea (valvole, eiettori, piping, raccorderia, flange etc) |  | 20d | CEP.LIN.D.00035 | 7d | 0d | 5D 8h ITA H + 2W 2036 | da stimare | CX1180 | 0 | PRO | SUP | SOGIN | P4 |  |
|  | 4 | **Separatore a scambio ionico** |  |  |  |  |  |  |  |  |  |  |  |  |  |  |
| CEP.CEL.M.00010 |  | Disponibilità separatore a scambio ionico in sito | milestone | 0d | CEP.CEL.D.00040 FF, CEP.CEL.P.40260 FF | 368d | 282d |  |  | CX1180 | 0 | PRO | SUP | ANN | P4 | 51D |
|  | 1 | **Documentazione iniziale** |  |  |  |  |  |  |  |  |  |  |  |  |  |  |
| CEP.CEL.D.00010 |  | Documentazione iniziale separatore a scambio ionico |  | 20d | CEP.LIN.O.00020 | 332d | 0d | 5D 8h ITA H + 2W 2036 | da stimare | CX1180 | 0 | PRO | SUP | ANN | P4 | 51D |
| CEP.CEL.D.00020 |  | Approvazione della documentazione iniziale separatore a scambio ionico |  | 20d | CEP.CEL.D.00010 | 332d | 30d | 5D 8h ITA H + 2W 2036 | da stimare | CX1180 | 0 | PRO | SUP | SOGIN | P4 |  |
|  | 10 | **Packaging e trasporto in sito** |  |  |  |  |  |  |  |  |  |  |  |  |  |  |
| CEP.CEL.P.40260 |  | Imballaggio e Trasporto in sito separatore a scambio ionico |  | 10d | CEP.CEL.F.00020, CEP.CEL.D.00040 FF | 368d | 0d |  |  | CX1180 | 0 | PRO | SUP | ANN | P4 | 51D |
|  | 3 | **Realizzazione** |  |  |  |  |  |  |  |  |  |  |  |  |  |  |
| CEP.CEL.F.00005 |  | Qualifica sismica analitica Separatore a scambio ionico 51D-FG010X |  | 90d | CEP.LIN.O.00020 | 369d | 0d |  | aggiunto | CX1180 | 0 | PRO | SUP | ANN | P4 | 51D |
| CEP.CEL.F.00010 |  | Fabbricazione separatore a scambio ionico |  | 170d | CEP.CEL.F.00005, CEP.CEL.D.00020 | 369d | 0d |  | da stimare | CX1180 | 0 | PRO | SUP | ANN | P4 | 51D |
| CEP.CEL.F.00020 |  | FAT separatore a scambio ionico |  | 10d | CEP.CEL.F.00010 | 369d | 0d |  | da stimare | CX1180 | 0 | PRO | SUP | ANN | P4 | 51D |
|  | 5 | **Documentazione finale** |  |  |  |  |  |  |  |  |  |  |  |  |  |  |
| CEP.CEL.D.00030 |  | Dossier di fine fabbricazione separatore a scambio ionico |  | 10d | CEP.CEL.F.00020 | 302d | 0d | 5D 8h ITA H + 2W 2036 | da stimare | CX1180 | 0 | PRO | SUP | ANN | P4 | 51D |
| CEP.CEL.D.00040 |  | Approvazione Dossier di fine fabbricazione separatore a scambio ionico |  | 20d | CEP.CEL.D.00030 | 302d | 0d | 5D 8h ITA H + 2W 2036 | da stimare | CX1180 | 0 | PRO | SUP | SOGIN | P4 |  |
|  | 9 | **Realizzazione macchine speciali tunnel di cementazione e testa di cementazione** |  |  |  |  |  |  |  |  |  |  |  |  |  |  |
| CEP.SCP.M.00010 |  | Disponibilita in sito testa cementazione, capping, apparecchio chiusura/fissaggio coperchio, smear test, lavaggio | milestone | 0d | CEP.SPC.P.00010 FF | 112d | 0d |  |  | CX1220 | 0 |  |  |  | P4 | 53A |
|  | 1 | **Documentazione iniziale** |  |  |  |  |  |  |  |  |  |  |  |  |  |  |
| CEP.SPC.D.00010 |  | Disegni costruttivi testa cementazione, capping, apparecchio chiusura/fissaggio coperchio, smear test, lavaggio |  | 90d | CEM.ENG.I.00040 | 92d | 0d | 5D 8h ITA H + 2W 2036 | Stima 2023 Orzelli | CX1220 | 0 | CMC | SUP | ANN | P4 | 0 |
| CEP.SPC.D.00020 |  | Report di calcolo testa cementazione, capping, apparecchio chiusura/fissaggio coperchio, smear test, lavaggio |  | 40d | CEP.SPC.D.00010 FF | 92d | 0d | 5D 8h ITA H + 2W 2036 | Stima 2023 Orzelli | CX1220 | 0 | CMC | SUP | ANN | P4 | 0 |
| CEP.SPC.D.00030 |  | Procedure testa cementazione, capping, apparecchio chiusura/fissaggio coperchio, smear test, lavaggio |  | 30d | CEP.SPC.D.00020 | 92d | 0d | 5D 8h ITA H + 2W 2036 | Stima 2023 Orzelli | CX1220 | 0 | CMC | SUP | ANN | P4 | 0 |
| CEP.SPC.D.00040 |  | Piano di controllo testa cementazione, capping, apparecchio chiusura/fissaggio coperchio, smear test, lavaggio |  | 30d | CEP.SPC.D.00030 SS | 92d | 0d | 5D 8h ITA H + 2W 2036 | Stima 2023 Orzelli | CX1220 | 0 | CMC | SUP | ANN | P4 | 0 |
| CEP.SPC.D.00050 |  | Approvazione disegni testa cementazione, capping, apparecchio chiusura/fissaggio coperchio, smear test, lavaggio |  | 20d | CEP.SPC.D.00040, CEP.SPC.D.00030, CEP.SPC.D.00020 | 92d | 0d | 5D 8h ITA H + 2W 2036 |  | CX1220 | 0 | CMC | SUP | SOGIN | P4 | 53A |

| ID | WBS | Activity | Type | Duration | Predecessors | Total float | Free float | Calendar | Note | CEMEX 2025 - Activity code Sogin | CEMEX LOCALE | CEMEX DISCIPLINE | CEMEX ACTIVITY TYPE | CEMEX RESPONSABILITY | CEMEX PARTITE | CEMEX SISTEMI |
| --- | --- | --- | --- | --- | --- | --- | --- | --- | --- | --- | --- | --- | --- | --- | --- | --- |
|  | 2 | **Specifiche e ordini** |  |  |  |  |  |  |  |  |  |  |  |  |  |  |
| CEP.SPC.O.00010 |  | Specifiche costruttive testa cementazione, capping, apparecchio chiusura/fissaggio coperchio, smear test, lavaggio |  | 30d | CEP.SPC.D.00050 | 92d | 0d | 5D 8h ITA H + 2W 2036 | Stima 2023 Orzelli | CX1220 | 0 | CMC | SUP | ANN | P4 | 0 |
| CEP.SPC.O.00020 |  | Ordine testa cementazione, capping, apparecchio chiusura/fissaggio coperchio, smear test, lavaggio |  | 40d | CEP.SPC.O.00010 | 92d | 0d | 5D 8h ITA H + 2W 2036 | Stima 2023 Orzelli | CX1220 | 0 | CMC | SUP | ANN | P4 | 0 |
|  | 3 | **Fabbricazione** |  |  |  |  |  |  |  |  |  |  |  |  |  |  |
| CEP.SPC.F.00010 |  | Approvig. e fabbricazione testa cementazione, capping, apparecchio chiusura/fissaggio coperchio, smear test, lavaggio |  | 450d | CEP.SPC.F.20 | 92d | 0d | Standard 5 Day Workweek with ITA Basic Holidays (2016-2031) | Aumentato di 280d | CX1220 | 0 | CMC | SUP | ANN | P4 | 0 |
| CEP.SPC.F.00020 |  | FAT testa cementazione, capping, apparecchio chiusura/fissaggio coperchio, smear test, lavaggio |  | 10d | CEP.SPC.F.00010 | 111d | 0d |  | Stima 2023 Orzelli. | CX1220 | 0 | CMC | SUP | ANN | P4 | 0 |
| CEP.SPC.F.20 |  | Qualifica sismica e ambientale testa di cementazione DW005 |  | 140d | CEP.SPC.O.00020 | 112d | 0d |  | aggiunto | CX1220 | 0 | CMC | SUP | ANN | P4 | 0 |
|  | 4 | **Packaging e trasporto** |  |  |  |  |  |  |  |  |  |  |  |  |  |  |
| CEP.SPC.P.00010 |  | Imballaggio e trasp. in sito testa cementazione, capping, apparecchio chiusura/fissaggio coperchio, smear test, lavaggio |  | 15d | CEP.SPC.D.00070 FF | 112d | 0d |  |  | CX1220 | 0 | CMC | SUP | ANN | P4 | 0 |
|  | 5 | **Documentazione finale** |  |  |  |  |  |  |  |  |  |  |  |  |  |  |
| CEP.SPC.D.00060 |  | Dossier fine fabbricazione testa cementazione, capping, apparecchio chiusura/fissaggio coperchio, smear test, lavaggio |  | 5d | CEP.SPC.F.00020 | 92d | 0d | 5D 8h ITA H + 2W 2036 |  | CX1220 | 0 | CMC | SUP | ANN | P4 | 0 |
| CEP.SPC.D.00070 |  | Approvazione del dossier testa cementazione, capping, apparecchio chiusura/fissaggio coperchio, smear test, lavaggio |  | 20d | CEP.SPC.D.00060 | 92d | 0d | 5D 8h ITA H + 2W 2036 |  | CX1220 | 0 | CMC | SUP | SOGIN | P4 | 53A |
|  | 10 | **Realizzazione sistema stoccaggio e trasporto cementi** |  |  |  |  |  |  |  |  |  |  |  |  |  |  |
|  | 4 | **Ordini** |  |  |  |  |  |  |  |  |  |  |  |  |  |  |
| CEP.STO.O.00050 |  | Specifica d'Acquisto serbatoi sistema stoccaggio e trasporto cementi |  | 30d | CEM.ENG.I.00040 FS+20d | 261d | 0d | 5D 8h ITA H + 2W 2036 | messo lag + 20 con analisi input per distribuzione lavoro | CX1360 | 0 | PRO | SUP | DEM | P4 |  |
| CEP.STO.O.00060 |  | Ordine serbatoi sistema stoccaggio e trasporto cementi |  | 40d | CEP.STO.O.00050 | 261d | 0d | 5D 8h ITA H + 2W 2036 |  | CX1360 | 0 | PRO | SUP | DEM | P4 |  |
| CEP.STO.O.00070 |  | Specifica d'Acquisto componenti sistema stoccaggio e trasporto cementi |  | 30d | CEM.ENG.I.00040 FS+40d | 155d | 0d | 5D 8h ITA H + 2W 2036 | messo lag + 40 con analisi input per distribuzione lavoro | CX1360 | 0 | PRO | SUP | DEM | P4 |  |
| CEP.STO.O.00080 |  | Ordine componenti sistema stoccaggio e trasporto cementi |  | 40d | CEP.STO.O.00070 | 155d | 0d | 5D 8h ITA H + 2W 2036 |  | CX1360 | 0 | PRO | SUP | DEM | P4 |  |
|  | 5 | **Serbatoi sistema stoccaggio e trasporto cementi** |  |  |  |  |  |  |  |  |  |  |  |  |  |  |
| CEP.SER.M.00020 |  | Disponibilità serbatoi stoccaggio e trasporto cementi in sito | milestone | 0d | CEP.SER.P.00020 FF, CEP.SER.D.00080 FF | 326d | 279d |  |  | CX1360 | 29 | PRO | SUP | DEM | P4 |  |
|  | 1 | **Documentazione iniziale** |  |  |  |  |  |  |  |  |  |  |  |  |  |  |
| CEP.SER.D.00050 |  | Documentazione iniziale serbatoi stoccaggio e trasporto cementi |  | 20d | CEP.STO.O.00060 | 292d | 0d | 5D 8h ITA H + 2W 2036 | Da stimare | CX1360 | 29 | PRO | SUP | DEM | P4 |  |
| CEP.SER.D.00060 |  | Approvazione documentazione iniziale serbatoi stoccaggio e trasporto cementi |  | 20d | CEP.SER.D.00050 | 292d | 35d | 5D 8h ITA H + 2W 2036 | Da stimare | CX1360 | 29 | PRO | SUP | SOGIN | P4 |  |
|  | 2 | **Realizzazione** |  |  |  |  |  |  |  |  |  |  |  |  |  |  |
| CEP.SER.F.00030 |  | Realizzazione serbatoi stoccaggio e trasporto cementi |  | 240d | CEP.SER.F.40, CEP.SER.D.00060 | 321d | 0d |  | Da stimare | CX1360 | 29 | PRO | SUP | DEM | P4 |  |
| CEP.SER.F.00040 |  | FAT serbatoi stoccaggio e trasporto cementi |  | 10d | CEP.SER.F.00030 | 321d | 0d |  | Da stimare | CX1360 | 29 | PRO | SUP | DEM | P4 |  |
| CEP.SER.F.40 |  | Qualifica sismica analitica serbatoi stoccaggio e trasporto cementi |  | 90d | CEP.STO.O.00060 | 321d | 0d |  | aggiunto | CX1360 | 29 | PRO | SUP | DEM | P4 |  |

| ID | WBS | Activity | Type | Duration | Predecessors | Total float | Free float | Calendar | CEMEX 2025 - Activity code Sogin | CEMEX LOCALE | CEMEX DISCIPLINE | CEMEX ACTIVITY TYPE | CEMEX RESPONSABILITY | CEMEX PARTITE | Note | CEMEX REVISIONE | CEMEX SISTEMI | CEMEX N° COMPONENTE |
| --- | --- | --- | --- | --- | --- | --- | --- | --- | --- | --- | --- | --- | --- | --- | --- | --- | --- | --- |
|  | 3 | **Packaging e trasporto** |  |  |  |  |  |  |  |  |  |  |  |  |  |  |  |  |
| CEP.SER.P.00020 |  | Imballaggio e trasporto serbatoi stoccaggio e trasporto cementi |  | 15d | CEP.SER.D.00080 FF, CEP.SER.F.00040 | 326d | 0d |  | CX1360 | 29 | PRO | SUP | DEM | P4 |  |  |  |  |
|  | 4 | **Documentazione finale** |  |  |  |  |  |  |  |  |  |  |  |  |  |  |  |  |
| CEP.SER.D.00070 |  | Dossier di fine fabbricazione serbatoi stoccaggio e trasporto cementi |  | 20d | CEP.SER.F.00040 | 263d | 0d | 5D 8h ITA H + 2W 2036 | CX1360 | 29 | PRO | SUP | DEM | P4 | Da stimare |  |  |  |
| CEP.SER.D.00080 |  | Approvazione dossier di fine fabbricazione serbatoi stoccaggio e trasporto cementi |  | 20d | CEP.SER.D.00070 | 263d | 0d | 5D 8h ITA H + 2W 2036 | CX1360 | 29 | PRO | SUP | SOGIN | P4 | Da stimare |  |  |  |
|  | 3 | **Componenti sistema stoccaggio e trasporto cementi** |  |  |  |  |  |  |  |  |  |  |  |  |  |  |  |  |
| CEP.STO.M.00010 |  | Disponibilità componenti stoccaggio e trasporto cementi in sito | milestone | 0d | CEP.STO.P.00010 FF, CEP.STO.D.00040 FF | 192d | 145d |  | CX1360 | 0 | PRO | SUP | DEM | P4 | Durata fornitura da stimare |  |  |  |
|  | 1 | **Documentazione iniziale** |  |  |  |  |  |  |  |  |  |  |  |  |  |  |  |  |
| CEP.STO.D.00010 |  | Documentazione iniziale componenti stoccaggio e trasporto cementi |  | 25d | CEP.STO.O.00080 | 222d | 0d | 5D 8h ITA H + 2W 2036 | CX1360 | 0 | PRO | SUP | DEM | P4 | Da stimare |  |  |  |
| CEP.STO.D.00020 |  | Approvazione documentazione iniziale componenti stoccaggio e trasporto cementi |  | 20d | CEP.STO.D.00010 | 222d | 62d | 5D 8h ITA H + 2W 2036 | CX1360 | 0 | PRO | SUP | SOGIN | P4 | Da stimare |  |  |  |
|  | 2 | **Realizzazione** |  |  |  |  |  |  |  |  |  |  |  |  |  |  |  |  |
| CEP.STO.F.00010 |  | Realizzazione componenti stoccaggio e trasporto cementi |  | 240d | CEP.STO.F.20, CEP.STO.D.00020 | 193d | 0d |  | CX1360 | 0 | PRO | SUP | DEM | P4 | Da stimare | MOD |  |  |
| CEP.STO.F.00020 |  | FAT componenti stoccaggio e trasporto cementi |  | 10d | CEP.STO.F.00010 | 193d | 0d |  | CX1360 | 0 | PRO | SUP | SOGIN | P4 | Da stimare |  |  |  |
| CEP.STO.F.20 |  | Qualifica sismica e ambientale componenti stoccaggio e trasporto cementi |  | 135d | CEP.STO.O.00080 | 193d | 0d |  | CX1360 | 0 | PRO | SUP | DEM | P4 | aggiunto |  |  |  |
|  | 3 | **Packaging e trasporto** |  |  |  |  |  |  |  |  |  |  |  |  |  |  |  |  |
| CEP.STO.P.00010 |  | Imballaggio e trasporto componenti stoccaggio e trasporto cementi |  | 15d | CEP.STO.D.00040 FF, CEP.STO.F.00020 | 192d | 0d |  | CX1360 | 0 | PRO | SUP | DEM | P4 |  | MOD |  |  |
|  | 4 | **Documentazione finale** |  |  |  |  |  |  |  |  |  |  |  |  |  |  |  |  |
| CEP.STO.D.00030 |  | Dossier di fine documentazione componenti stoccaggio e trasporto cementi |  | 20d | CEP.STO.F.00020 | 160d | 0d | 5D 8h ITA H + 2W 2036 | CX1360 | 0 | PRO | SUP | DEM | P4 | Da stimare | MOD |  |  |
| CEP.STO.D.00040 |  | Approvazione dossier di fine documentazione componenti stoccaggio e trasporto cementi |  | 20d | CEP.STO.D.00030 | 160d | 0d | 5D 8h ITA H + 2W 2036 | CX1360 | 0 | PRO | SUP | SOGIN | P4 | Da stimare |  |  |  |
|  | 19 | **Telemanipolatori** |  |  |  |  |  |  |  |  |  |  |  |  |  |  |  |  |
| CEP.TEL.M.00010 |  | Disponibilità telemanipolatori in sito | milestone | 0d | CEP.TEL.P.00020 FF, CEP.TEL.D.00050 FF | 708d | 211d |  | CX1330 | 16 | ELE | SUP | ANN | P2 |  |  | 53A |  |
|  | 2 | **Ordine per telemanipolatori** |  |  |  |  |  |  |  |  |  |  |  |  |  |  |  |  |
| CEP.TEL.O.00010 |  | Specifica d'acquisto Telemanipolatori |  | 30d | CEM.ENG.I.00040 FS+40d | 579d | 0d | 5D 8h ITA H + 2W 2036 | CX1330 | 16 | ELE | SUP | ANN | P2 |  |  | 53A | spostato avanti inizio |
| CEP.TEL.O.00020 |  | Ordine Telemanipolatori |  | 40d | CEP.TEL.O.00010 | 579d | 0d | 5D 8h ITA H + 2W 2036 | CX1330 | 16 | ELE | SUP | ANN | P2 |  |  | 53A |  |

| ID | WBS | Activity | Duration | Predecessors | Total float | Free float | Calendar | Note | CEMEX 2025 - Activity code Sogin | CEMEX LOCALE | CEMEX DISCIPLINE | CEMEX ACTIVITY TYPE | CEMEX RESPONSABILITY | CEMEX PARTITE | CEMEX SISTEMI | CEMEX REVISIONE |
| --- | --- | --- | --- | --- | --- | --- | --- | --- | --- | --- | --- | --- | --- | --- | --- | --- |
|  | 3 | **Progettazione di dettaglio telemanipolatori** |  |  |  |  |  |  |  |  |  |  |  |  |  |  |
| CEP.TEL.D.00010 |  | Documentazione preliminare | 40d | CEP.TEL.O.00020 | 579d | 0d | 5D 8h ITA H + 2W 2036 | aggiornato da offerta 2023 | CX1330 | 16 | ELE | SUP | ANN | P2 | 53A |  |
| CEP.TEL.D.00020 |  | Documentazione di produzione | 40d | CEP.TEL.D.00010 | 579d | 0d | 5D 8h ITA H + 2W 2036 | aggiornato da offerta 2023 | CX1330 | 16 | ELE | SUP | ANN | P2 | 53A |  |
| CEP.TEL.D.00030 |  | Approvazione della documentazione Telemanipolatori | 20d | CEP.TEL.D.00020 | 579d | 0d | 5D 8h ITA H + 2W 2036 |  | CX1330 | 16 | ELE | SUP | SOGIN | P2 |  |  |
|  | 4 | **Approvvigionamento** |  |  |  |  |  |  |  |  |  |  |  |  |  |  |
| CEP.TEL.A.00010 |  | Approvvigionamento Telemanipolatori | 60d | CEP.TEL.D.00030 SS, CEP.TEL.D.00030 | 708d | 0d |  | Offerta 2025 Martha | CX1330 | 16 | ELE | SUP | ANN | P2 | 53A |  |
|  | 5 | **Fabbricazione** |  |  |  |  |  |  |  |  |  |  |  |  |  |  |
| CEP.TEL.F.00010 |  | Fabbricazione Telemanipolatori | 90d | CEP.TEL.F.20, CEP.TEL.A.00010 SS, CEP.TEL.A.00010 | 708d | 0d |  | Offerta 2025 Martha | CX1330 | 16 | ELE | SUP | ANN | P2 | 53A |  |
| CEP.TEL.F.00020 |  | FAT Telemanipolatori | 10d | CEP.TEL.F.00010 | 708d | 0d |  | Offerta 2025 Martha | CX1330 | 16 | ELE | SUP | ANN | P2 | 53A |  |
| CEP.TEL.F.20 |  | Qualifica sismica analitica telemanipolatori | 90d | CEP.TEL.O.00020 | 804d | 96d |  | Offerta 2025 Martha | CX1330 | 16 | ELE | SUP | ANN | P2 | 53A |  |
|  | 6 | **Packaging e trasporto in sito** |  |  |  |  |  |  |  |  |  |  |  |  |  |  |
| CEP.TEL.P.00010 |  | Imballaggio Telemanipolatori | 5d | CEP.TEL.F.00020, CEP.TEL.D.00050 FF | 708d | 0d |  |  | CX1330 | 16 | ELE | SUP | ANN | P2 | 53A |  |
| CEP.TEL.P.00020 |  | Trasporto Telemanipolatori | 5d | CEP.TEL.P.00010 | 708d | 0d |  |  | CX1330 | 16 | ELE | SUP | ANN | P2 | 53A |  |
|  | 7 | **Documentazione di fine fabbricazione** |  |  |  |  |  |  |  |  |  |  |  |  |  |  |
| CEP.TEL.D.00040 |  | Dossier di fine fabbricazione Telemanipolatori | 5d | CEP.TEL.F.00020 | 576d | 0d | 5D 8h ITA H + 2W 2036 |  | CX1330 | 16 | ELE | SUP | ANN | P2 | 53A |  |
| CEP.TEL.D.00050 |  | Approvazione del dossier di fine fabbricazione Telemanipolatori | 20d | CEP.TEL.D.00040 | 576d | 0d | 5D 8h ITA H + 2W 2036 |  | CX1330 | 16 | ELE | SUP | SOGIN |  |  |  |
|  | 13 | **Realizzazione Packages (gruppi frigo, aria compressa, trattamento acqua)** |  |  |  |  |  |  |  |  |  |  |  |  |  |  |
|  | 1 | **Ordini Packages (gruppi frigo, aria compressa, trattamento acqua)** |  |  |  |  |  |  |  |  |  |  |  |  |  |  |
| CEP.PAC.O.10030 |  | Specifica d'Acquisto serbatoi packages | 30d | CEM.ENG.I.00040 FS+60d | 221d | 0d | 5D 8h ITA H + 2W 2036 |  | CX1340 | 0 | PRO | SUP | DEM | P4 |  |  |
| CEP.PAC.O.10040 |  | Ordine serbatoi packages | 40d | CEP.PAC.O.10030 | 221d | 0d | 5D 8h ITA H + 2W 2036 |  | CX1340 | 0 | PRO | SUP | DEM | P4 |  |  |
| CEP.PAC.O.10050 |  | Specifica d'Acquisto Materiale scarico ai Pond 67A | 30d | CEM.ENG.I.00040 FS+80d | 266d | 0d | 5D 8h ITA H + 2W 2036 |  | CX1340 | 0 | PRO | SUP | DEM | P15 | 67A | AGG |
| CEP.PAC.O.10060 |  | Ordine piping fitting valvole carpenterie | 30d | CEP.PAC.O.10050 | 266d | 0d | 5D 8h ITA H + 2W 2036 |  | CX1340 | 0 | PRO | SUP | DEM | P15 |  | AGG |
| CEP.PAC.O.10070 |  | Specifica d'Acquisto scambiatori di calore | 30d | CEM.ENG.I.00040 FS+100d | 312d | 0d | 5D 8h ITA H + 2W 2036 |  | CX1340 | 0 | PRO | SUP | DEM | P4 |  |  |
| CEP.PAC.O.10080 |  | Ordine scambiatori di calore | 40d | CEP.PAC.O.10070 | 312d | 0d | 5D 8h ITA H + 2W 2036 |  | CX1340 | 0 | PRO | SUP | DEM | P4 |  |  |
| CEP.PAC.O.10090 |  | Specifica d'Acquisto forniture Packages (trattamento acqua, piping, valvole) | 30d | CEM.ENG.I.00040 FS+80d | 312d | 0d | 5D 8h ITA H + 2W 2036 |  | CX1340 | 0 | PRO | SUP | DEM | P4 |  |  |
| CEP.PAC.O.10100 |  | Ordine forniture Packages (trattamento acqua, piping, valvole) | 40d | CEP.PAC.O.10090 | 312d | 0d | 5D 8h ITA H + 2W 2036 |  | CX1340 | 0 | PRO | SUP | DEM | P4 |  |  |
| CEP.PAC.O.10110 |  | Approvvigionamento componenti | 90d | CEP.PAC.O.10060 | 1937d | 0d | 5D 8h ITA H + 2W 2036 |  | CX1340 | 0 | PRO | SUP | DEM | P15 |  | MOD |

| ID | WBS | Activity | Type | Duration | Predecessors | Total float | Free float | Calendar | CEMEX 2025 - Activity code Sogin | CEMEX LOCALE | CEMEX DISCIPLINE | CEMEX ACTIVITY TYPE | CEMEX RESPONSABILITY | CEMEX PARTITE | CEMEX REVISIONE | Note |
| --- | --- | --- | --- | --- | --- | --- | --- | --- | --- | --- | --- | --- | --- | --- | --- | --- |
|  | 3 | **Serbatoi Packages** |  |  |  |  |  |  |  |  |  |  |  |  |  |  |
| CEP.SER.M.00010 |  | Disponibilità serbatoi packages in sito | milestone | 0d | CEP.SER.P.00010 FF, CEP.SER.D.00040 FF | 272d | 186d |  | CX1340 | 0 | PRO | SUP | DEM | P4 | MOD |  |
|  | 1 | **Documentazione iniziale** |  |  |  |  |  |  |  |  |  |  |  |  |  |  |
| CEP.SER.D.00010 |  | Documentazione iniziale serbatoi packages |  | 30d | CEP.PAC.O.10040 | 221d | 0d | 5D 8h ITA H + 2W 2036 | CX1340 | 0 | PRO | SUP | DEM | P4 |  | Stima 2023 da offerta fatta con durata totale |
| CEP.SER.D.00020 |  | Approvazione documentazione iniziale serbatoi packages |  | 20d | CEP.SER.D.00010 | 221d | 0d | 5D 8h ITA H + 2W 2036 | CX1340 | 0 | PRO | SUP | SOGIN | P4 |  | Stima 2023 da offerta fatta con durata totale |
|  | 2 | **Realizzazione** |  |  |  |  |  |  |  |  |  |  |  |  |  |  |
| CEP.SER.F.00010 |  | Realizzazione serbatoi packages |  | 290d | CEP.SER.D.00020 | 267d | 0d |  | CX1340 | 0 | PRO | SUP | DEM | P4 | MOD | Stima 2023 da offerta fatta con durata totale |
| CEP.SER.F.00020 |  | FAT serbatoi packages |  | 10d | CEP.SER.F.00010 | 267d | 0d |  | CX1340 | 0 | PRO | SUP | DEM | P4 | MOD | Stima 2023 da offerta fatta con durata totale |
|  | 3 | **Packaging e trasporto** |  |  |  |  |  |  |  |  |  |  |  |  |  |  |
| CEP.SER.P.00010 |  | Imballaggio e trasporto serbatoi packages |  | 15d | CEP.SER.D.00040 FF, CEP.SER.F.00020 | 272d | 0d |  | CX1340 | 0 | PRO | SUP | DEM | P4 | MOD | Stima 2023 da offerta fatta con durata totale |
|  | 4 | **Documentazione finale** |  |  |  |  |  |  |  |  |  |  |  |  |  |  |
| CEP.SER.D.00030 |  | Dossier di fine fabbricazione serbatoi packages |  | 20d | CEP.SER.F.00020 | 222d | 0d | 5D 8h ITA H + 2W 2036 | CX1340 | 0 | PRO | SUP | DEM | P4 | MOD | Stima 2023 da offerta fatta con durata totale |
| CEP.SER.D.00040 |  | Approvazione dossier di fine fabbricazione serbatoi packages |  | 20d | CEP.SER.D.00030 | 222d | 0d | 5D 8h ITA H + 2W 2036 | CX1340 | 0 | PRO | SUP | SOGIN | P4 |  | Stima 2023 da offerta fatta con durata totale |
|  | 4 | **Gruppo aria compressa** |  |  |  |  |  |  |  |  |  |  |  |  |  |  |
| CEP.GAC.M.00010 |  | Disponibilità G.A.C. in sito | milestone | 0d | CEP.GAC.P.00010 FF, CEP.GAC.D.00040 FF | 325d | 239d |  | CX1340 | 0 | PRO | SUP | DEM | P4 | MOD |  |
|  | 1 | **Documentazione iniziale** |  |  |  |  |  |  |  |  |  |  |  |  |  |  |
| CEP.GAC.D.00010 |  | Documentazione iniziale G.A.C. |  | 30d | CEP.PAC.O.10060 | 266d | 0d | 5D 8h ITA H + 2W 2036 | CX1340 | 0 | PRO | SUP | DEM | P4 | MOD | Stima 2023 da offerta fatta con durata totale |
| CEP.GAC.D.00020 |  | Approvazione documentazione iniziale G.A.C. |  | 20d | CEP.GAC.D.00010 | 266d | 0d | 5D 8h ITA H + 2W 2036 | CX1340 | 0 | PRO | SUP | SOGIN | P4 |  | Stima 2023 da offerta fatta con durata totale |
|  | 2 | **Realizzazione** |  |  |  |  |  |  |  |  |  |  |  |  |  |  |
| CEP.GAC.F.00010 |  | Realizzazione G.A.C. |  | 300d | CEP.GAC.D.00020 | 326d | 0d |  | CX1340 | 0 | PRO | SUP | DEM | P4 | MOD | Stima 2023 da offerta fatta con durata totale |
| CEP.GAC.F.00020 |  | FAT G.A.C. |  | 10d | CEP.GAC.F.00010 | 326d | 1d |  | CX1340 | 0 | PRO | SUP | DEM | P4 | MOD | Stima 2023 da offerta fatta con durata totale |
|  | 3 | **Packaging e trasporto** |  |  |  |  |  |  |  |  |  |  |  |  |  |  |
| CEP.GAC.P.00010 |  | Imballaggio e trasporto G.A.C. |  | 10d | CEP.GAC.D.00040 FF, CEP.GAC.F.00020 | 325d | 0d |  | CX1340 | 0 | PRO | SUP | DEM | P4 | MOD | Stima 2023 da offerta fatta con durata totale |
|  | 4 | **Documentazione finale** |  |  |  |  |  |  |  |  |  |  |  |  |  |  |
| CEP.GAC.D.00030 |  | Dossier di fine documentazione G.A.C. |  | 10d | CEP.GAC.F.00020 | 267d | 0d | 5D 8h ITA H + 2W 2036 | CX1340 | 0 | PRO | SUP | SOGIN | P4 |  | Stima 2023 da offerta fatta con durata totale |
| CEP.GAC.D.00040 |  | Approvazione dossier di fine documentazione G.A.C. |  | 20d | CEP.GAC.D.00030 | 267d | 0d | 5D 8h ITA H + 2W 2036 | CX1340 | 0 | PRO | SUP | DEM | P4 | MOD | Stima 2023 da offerta fatta con durata totale |

| ID | WBS | Activity | Type | Duration | Predecessors | Total float | Free float | Calendar | CEMEX 2025 - Activity code Sogin | CEMEX LOCALE | CEMEX DISCIPLINE | CEMEX ACTIVITY TYPE | CEMEX RESPONSABILITY | CEMEX PARTITE | CEMEX REVISIONE |
| --- | --- | --- | --- | --- | --- | --- | --- | --- | --- | --- | --- | --- | --- | --- | --- |
|  | 5 | **Scambiatori di calore** |  |  |  |  |  |  |  |  |  |  |  |  |  |
| CEP.SDC.M.00010 |  | Disponibilità S.D.C. in sito | milestone | 0d | CEP.SDC.D.00040 FF, CEP.SDC.P.00010 FF | 382d | 296d |  | CX1340 | 0 | PRO | SUP | DEM | P4 | MOD |
|  | 1 | **Documentazione iniziale** |  |  |  |  |  |  |  |  |  |  |  |  |  |
| CEP.SDC.D.00010 |  | Documentazione iniziale S.D.C. |  | 20d | CEP.PAC.O.10080 | 312d | 0d | 5D 8h ITA H + 2W 2036 | CX1340 | 0 | PRO | SUP | DEM | P4 |  |
| CEP.SDC.D.00020 |  | Approvazione documentazione iniziale S.D.C. |  | 20d | CEP.SDC.D.00010 | 312d | 0d | 5D 8h ITA H + 2W 2036 | CX1340 | 0 | PRO | SUP | SOGIN | P4 |  |
|  | 2 | **Realizzazione** |  |  |  |  |  |  |  |  |  |  |  |  |  |
| CEP.SDC.F.00010 |  | Realizzazione S.D.C. |  | 180d | CEP.SDC.D.00020 | 382d | 0d |  | CX1340 | 0 | PRO | SUP | DEM | P4 | MOD |
| CEP.SDC.F.00020 |  | FAT S.D.C. |  | 5d | CEP.SDC.F.00010 | 382d | 0d |  | CX1340 | 0 | PRO | SUP | SOGIN | P4 |  |
|  | 3 | **Packaging e trasporto** |  |  |  |  |  |  |  |  |  |  |  |  |  |
| CEP.SDC.P.00010 |  | Imballaggio e trasporto S.D.C. |  | 10d | CEP.SDC.D.00040 FF, CEP.SDC.F.00020 | 382d | 0d |  | CX1340 | 0 | PRO | SUP | DEM | P4 | MOD |
|  | 4 | **Documentazione finale** |  |  |  |  |  |  |  |  |  |  |  |  |  |
| CEP.SDC.D.00030 |  | Dossier di fine fabbricazione S.D.C. |  | 20d | CEP.SDC.F.00020 | 309d | 0d | 5D 8h ITA H + 2W 2036 | CX1340 | 0 | PRO | SUP | DEM | P4 | MOD |
| CEP.SDC.D.00040 |  | Approvazione dossier di fine fabbricazione S.D.C. |  | 20d | CEP.SDC.D.00030 | 309d | 0d | 5D 8h ITA H + 2W 2036 | CX1340 | 0 | PRO | SUP | SOGIN | P4 |  |
|  | 6 | **Forniture Packages (trattamento acqua, piping, valvole, eiettori etc)** |  |  |  |  |  |  |  |  |  |  |  |  |  |
| CEP.PAC.A.00180 |  | Fornitura e trasporto piping, valvole, eiettori... packages |  | 280d | CEP.PAC.O.10100 | 398d | 390d |  | CX1340 | 0 | PRO | SUP | DEM | P4 |  |
| CEP.PAC.M.00010 |  | Disponibilità forniture packages in sito | milestone | 0d | CEP.PAC.P.00010 FF, CEP.PAC.D.00040 FF | 383d | 297d |  | CX1340 | 0 | PRO | SUP | DEM | P4 | MOD |
|  | 1 | **Documentazione iniziale** |  |  |  |  |  |  |  |  |  |  |  |  |  |
| CEP.PAC.D.00010 |  | Documentazione iniziale forniture packages |  | 25d | CEP.PAC.O.10100 | 312d | 0d | 5D 8h ITA H + 2W 2036 | CX1340 | 0 | PRO | SUP | DEM | P4 |  |
| CEP.PAC.D.00020 |  | Approvazione documentazione iniziale forniture packages |  | 20d | CEP.PAC.D.00010 | 312d | 0d | 5D 8h ITA H + 2W 2036 | CX1340 | 0 | PRO | SUP | SOGIN | P4 |  |
|  | 2 | **Realizzazione** |  |  |  |  |  |  |  |  |  |  |  |  |  |
| CEP.PAC.F.00010 |  | Realizzazione forniture packages |  | 180d | CEP.PAC.D.00020 | 383d | 0d |  | CX1340 | 0 | PRO | SUP | DEM | P4 | MOD |
| CEP.PAC.F.00020 |  | FAT forniture packages |  | 10d | CEP.PAC.F.00010 | 383d | 0d |  | CX1340 | 0 | PRO | SUP | SOGIN | P4 |  |
|  | 3 | **Packaging e trasporto** |  |  |  |  |  |  |  |  |  |  |  |  |  |
| CEP.PAC.P.00010 |  | Imballaggio e trasporto forniture packages |  | 15d | CEP.PAC.D.00040 FF, CEP.PAC.F.00020 | 383d | 0d |  | CX1340 | 0 | PRO | SUP | DEM | P4 | MOD |

Notes:
- CEP.SDC.M.00010: Note: "accorpare a ""forniture packages""?"
- CEP.SDC.D.00010: Note: Stima 2023 da offerta fatta con durata totale
- CEP.SDC.D.00020: Note: Stima 2023 da offerta fatta con durata totale
- CEP.SDC.F.00010: Note: Stima 2023 da offerta fatta con durata totale (aumentata x avere margine)
- CEP.SDC.F.00020: Note: Stima 2023 da offerta fatta con durata totale
- CEP.SDC.P.00010: Note: Stima 2023 da offerta fatta con durata totale
- CEP.SDC.D.00030: Note: Stima 2023 da offerta fatta con durata totale
- CEP.SDC.D.00040: Note: Stima 2023 da offerta fatta con durata totale
- CEP.PAC.D.00010: Note: Stima 2023 da offerta fatta con durata totale
- CEP.PAC.D.00020: Note: Stima 2023 da offerta fatta con durata totale
- CEP.PAC.F.00010: Note: Stima 2023 da offerta fatta con durata totale
- CEP.PAC.F.00020: Note: Stima 2023 da offerta fatta con durata totale
- CEP.PAC.P.00010: Note: Stima 2023 da offerta fatta con durata totale

| ID | WBS | Activity | Type | Duration | Predecessors | Total float | Free float | Calendar | CEMEX 2025 - Activity code Sogin | CEMEX LOCALE | CEMEX DISCIPLINE | CEMEX ACTIVITY TYPE | CEMEX RESPONSABILITY | CEMEX PARTITE | CEMEX REVISIONE | CEMEX SISTEMI |
| --- | --- | --- | --- | --- | --- | --- | --- | --- | --- | --- | --- | --- | --- | --- | --- | --- |
|  | 4 | **Documentazione finale** |  |  |  |  |  |  |  |  |  |  |  |  |  |  |
| CEP.PAC.D.00030 |  | Dossier di fine documentazione forniture packages |  | 20d | CEP.PAC.F.00020 | 310d | 0d | 5D 8h ITA H + 2W 2036 | CX1340 | 0 | PRO | SUP | DEM | P4 | MOD |  |
| CEP.PAC.D.00040 |  | Approvazione dossier di fine documentazione forniture packages |  | 20d | CEP.PAC.D.00030 | 310d | 0d | 5D 8h ITA H + 2W 2036 | CX1340 | 0 | PRO | SUP | SOGIN | P4 |  |  |
|  | 7 | **Realizzazione box schermate del campionamento e realizzazione glovebox Lab. Radiochimico** |  |  |  |  |  |  |  |  |  |  |  |  |  |  |
| CEP.LAB.M.20010 |  | Disponibilità box schermate del campionamento e glovebox in sito | milestone | 0d | CEP.LAB.P.20010 FF, CEP.LAB.D.20120 | 1d | 0d |  | CX1350 | 0 | LAB | SUP | ANN | P4 |  | 56A |
|  | 2 | **Ordini box schermate del campionamento e realizzazione glovebox Lab. Radiochimico** |  |  |  |  |  |  |  |  |  |  |  |  |  |  |
| CEP.LAB.O.20010 |  | Specifiche di Acquisto box schermate del campionamento e glovebox Lab. Radiochimico |  | 15d | CEM.ENG.I.00040 | 0d |  | 5D 8h ITA H + 2W 2036 | CX1350 | 0 | LAB | SUP | ANN | P4 |  | 56A |
| CEP.LAB.O.20020 |  | Ordini per Sistema box schermate del campionamento e glovebox Lab. Radiochimico |  | 27d | CEP.LAB.O.20010 | 0d |  | 5D 8h ITA H + 2W 2036 | CX1350 | 0 | LAB | SUP | ANN | P4 |  | 56A |
|  | 1 | **Documentazione iniziale** |  |  |  |  |  |  |  |  |  |  |  |  |  |  |
| CEP.LAB.D.20010 |  | Documentazione box schermate del campionamento e glovebox Lab. Radiochimico |  | 30d | CEP.LAB.O.20020, CEM.MLS.P.00040 | 0d |  | 5D 8h ITA H + 2W 2036 | CX1350 | 0 | LAB | SUP | ANN | P4 |  | 56A |
| CEP.LAB.D.20020 |  | Approvazione della Documentazione box schermate del campionamento e glovebox Lab. Radiochimico |  | 20d | CEP.LAB.D.20010 | 0d |  | 5D 8h ITA H + 2W 2036 | CX1350 | 0 | LAB | SUP | SOGIN | P4 |  |  |
|  | 4 | **Qualifiche** |  |  |  |  |  |  |  |  |  |  |  |  |  |  |
| CEP.LAB.T.10360 |  | Test report di qualifica analitico |  | 40d | CEP.LAB.D.20020 | 0d |  |  | CX1350 | 0 | LAB | SUP | ANN | P4 |  | 56A |
| CEP.LAB.T.10370 |  | Piano di qualifica box schermate campionamento e gloveboxes |  | 10d | CEP.LAB.T.10360 FF | 0d |  |  | CX1350 | 0 | LAB | SUP | ANN | P4 |  | 56A |
| CEP.LAB.T.10380 |  | Approvazione del piano di qualifica box schermate campionamento e gloveboxes |  | 20d | CEP.LAB.T.10360, CEP.LAB.T.10370 | 0d |  | 5D 8h ITA H + 2W 2036 | CX1350 | 0 | LAB | SUP | SOGIN | P4 |  |  |
| CEP.LAB.T.10390 |  | Realizzazione prototipi box schermate campionamento e gloveboxes |  | 90d | CEP.LAB.T.10380 | 0d |  |  | CX1350 | 0 | LAB | SUP | ANN | P4 |  | 56A |
| CEP.LAB.T.10400 |  | Test ambientale/sismico box schermate campionamento e gloveboxes |  | 5d | CEP.LAB.T.10390 | 0d |  |  | CX1350 | 0 | LAB | TEST | ANN | P4 |  | 56A |
| CEP.LAB.T.10410 |  | Test report di qualifica |  | 40d | CEP.LAB.T.10400 | 0d |  |  | CX1350 | 0 | LAB | SUP | ANN | P4 |  | 56A |
| CEP.LAB.T.10420 |  | Approvazione del test report di qualifica |  | 20d | CEP.LAB.T.10410 | 0d |  | 5D 8h ITA H + 2W 2036 | CX1350 | 0 | LAB | SUP | SOGIN | P4 |  |  |
|  | 7 | **Materiali** |  |  |  |  |  |  |  |  |  |  |  |  |  |  |
| CEP.LAB.M.10020 |  | Approvvigionamento materiali box schermate del campionamento e glovebox |  | 85d | CEP.LAB.T.10420 | 1d | 0d |  | CX1350 | 0 | LAB | SUP | ANN | P4 |  | 56A |
|  | 3 | **Fabbricazione box schermate del campionamento e realizzazione glovebox Lab. Radiochimico** |  |  |  |  |  |  |  |  |  |  |  |  |  |  |
| CEP.LAB.F.20010 |  | Fabbricazione e FAT box schermate del campionamento e glovebox Lab. Radiochimico |  | 240d | CEP.LAB.D.20020, CEP.LAB.M.10020 | 1d | 0d |  | CX1350 | 0 | LAB | SUP | ANN | P4 |  | 56A |
|  | 5 | **Packaging e trasporto in sito** |  |  |  |  |  |  |  |  |  |  |  |  |  |  |
| CEP.LAB.P.20010 |  | Imballaggio e Trasporto in sito box schermate del campionamento e glovebox Lab. Radiochimico |  | 15d | CEP.LAB.F.20010, CEP.LAB.D.20120 FF | 1d | 0d |  | CX1350 | 0 | LAB | SUP | ANN | P4 |  | 56A |

Notes:
- CEP.PAC.D.00030: Note: Stima 2023 da offerta fatta con durata totale
- CEP.PAC.D.00040: Note: Stima 2023 da offerta fatta con durata totale
- CEP.LAB.D.20010: Note: Stima 2023 da offerta fatta con durata totale
- CEP.LAB.T.10390: Note: ? era 70 stimato o da offerta??? - ridotto di 20 gg per toglierlo dal percorso critico
- CEP.LAB.T.10400: Note: teoricamente solo analitco, ma tot sempre 460
- CEP.LAB.M.10020: Note: Stima 2023 da offerta fatta con durata totale
- CEP.LAB.F.20010: Note: Offerta 2025 Martha 28 mesi lead time

| ID | WBS | Activity | Type | Duration | Predecessors | Total float | Free float | Calendar | CEMEX 2025 - Activity code Sogin | CEMEX LOCALE | CEMEX DISCIPLINE | CEMEX ACTIVITY TYPE | CEMEX RESPONSABILITY | CEMEX PARTITE | CEMEX SISTEMI | Note | CEMEX REVISIONE |
| --- | --- | --- | --- | --- | --- | --- | --- | --- | --- | --- | --- | --- | --- | --- | --- | --- | --- |
|  | 6 | **Documentazione fine fabbricazione** |  |  |  |  |  |  |  |  |  |  |  |  |  |  |  |
| CEP.LAB.D.20110 |  | Dossier di fine fabbricazione box schermate del campionamento e glovebox Lab. Radiochimico |  | 5d | CEP.LAB.F.20010, CEP.LAB.T.10420 | 1d | 0d | 5D 8h ITA H + 2W 2036 | CX1350 | 0 | LAB | SUP | ANN | P4 | 56A |  |  |
| CEP.LAB.D.20120 |  | Approvazione del Dossier di fine fabbricazione |  | 20d | CEP.LAB.D.20110 | 1d | 0d | 5D 8h ITA H + 2W 2036 | CX1350 | 0 | LAB | SUP | SOGIN | P4 |  |  |  |
|  | 12 | **Realizzazione e Forniture arredi e strumentazione Lab. Radiochimico** |  |  |  |  |  |  |  |  |  |  |  |  |  |  |  |
|  | 1 | **Ordini per arredi e strumentazione Lab. Radiochimico** |  |  |  |  |  |  |  |  |  |  |  |  |  |  |  |
| CEP.LAB.O.00010 |  | Specifiche di Acquisto Strumentazione Lab. Radiochimico |  | 30d | CEM.ENG.I.00040 FS+64d | 263d | 0d | 5D 8h ITA H + 2W 2036 | CX1320 | 31 | LAB | SUP | DEM | P4 |  |  |  |
| CEP.LAB.O.00020 |  | Ordini per Sistema Strumentazione Lab. Radiochimico |  | 40d | CEP.LAB.O.00010 | 263d | 0d | 5D 8h ITA H + 2W 2036 | CX1320 | 31 | LAB | SUP | DEM | P4 |  |  |  |
| CEP.LAB.O.00110 |  | Specifiche di Acquisto Arredi Lab. Radiochimico |  | 30d | CEM.ENG.I.00040 FS+64d | 553d | 0d | 5D 8h ITA H + 2W 2036 | CX1320 | 31 | LAB | SUP | DEM | P4 |  |  |  |
| CEP.LAB.O.00120 |  | Ordini per Sistema Arredi Lab. Radiochimico |  | 40d | CEP.LAB.O.00110 | 553d | 0d | 5D 8h ITA H + 2W 2036 | CX1320 | 31 | LAB | SUP | DEM | P4 |  |  |  |
|  | 2 | **Strumentazione Lab. Radiochimico** |  |  |  |  |  |  |  |  |  |  |  |  |  |  |  |
| CEP.LAB.M.00010 |  | Disponibilità Strumentazione Lab. Radiochimico in sito | milestone | 0d | CEP.LAB.P.00010 FF, CEP.LAB.D.00120 | 323d | 302d |  | CX1320 | 31 | LAB | SUP | DEM | P4 |  |  |  |
|  | 1 | **Documentazione iniziale** |  |  |  |  |  |  |  |  |  |  |  |  |  |  |  |
| CEP.LAB.D.00010 |  | Documentazione Strumentazione Lab. Radiochimico |  | 30d | CEP.LAB.O.00020 | 263d | 0d | 5D 8h ITA H + 2W 2036 | CX1320 | 31 | LAB | SUP | DEM | P4 |  |  |  |
| CEP.LAB.D.00020 |  | Approvazione della Documentazione Strumentazione Lab. Radiochimico |  | 20d | CEP.LAB.D.00010 | 263d | 0d | 5D 8h ITA H + 2W 2036 | CX1320 | 31 | LAB | SUP | SOGIN | P4 |  |  |  |
|  | 4 | **Qualifiche** |  |  |  |  |  |  |  |  |  |  |  |  |  |  |  |
| CEP.LAB.T.00010 |  | Test report di Qualifica |  | 40d | CEP.LAB.D.00020 | 322d | 0d |  | CX1320 | 31 | LAB | SUP | DEM | P4 |  | mancanza di test |  |
| CEP.LAB.T.00020 |  | Approvazione del Test report di Qualifica |  | 20d | CEP.LAB.T.00010 | 263d | 0d | 5D 8h ITA H + 2W 2036 | CX1320 | 31 | LAB | SUP | SOGIN | P4 |  |  |  |
|  | 3 | **Fabbricazione Strumentazione Lab. Radiochimico** |  |  |  |  |  |  |  |  |  |  |  |  |  |  |  |
| CEP.LAB.F.00010 |  | Fabbricazione Strumentazione Lab. Radiochimico |  | 280d | CEP.LAB.T.00020 | 322d | 0d |  | CX1320 | 31 | LAB | SUP | DEM | P4 |  |  | MOD |
|  | 5 | **Packaging e trasporto in sito** |  |  |  |  |  |  |  |  |  |  |  |  |  |  |  |
| CEP.LAB.P.00010 |  | Imballaggio e Trasporto in sito Strumentazione Lab. Radiochimico |  | 10d | CEP.LAB.F.00010, CEP.LAB.D.00120 FF | 323d | 0d |  | CX1320 | 31 | LAB | SUP | DEM | P4 |  |  | MOD |
|  | 6 | **Documentazione fine fabbricazione** |  |  |  |  |  |  |  |  |  |  |  |  |  |  |  |
| CEP.LAB.D.00110 |  | Dossier di fine fabbricazione Strumentazione Lab. Radiochimico |  | 5d | CEP.LAB.T.00020, CEP.LAB.F.00010 | 264d | 0d | 5D 8h ITA H + 2W 2036 | CX1320 | 31 | LAB | SUP | DEM | P4 |  |  | MOD |
| CEP.LAB.D.00120 |  | Approvazione del Dossier di fine fabbricazione |  | 20d | CEP.LAB.D.00110 | 264d | 0d | 5D 8h ITA H + 2W 2036 | CX1320 | 31 | LAB | SUP | SOGIN | P4 |  |  |  |

| ID | WBS | Activity | Type | Duration | Predecessors | Total float | Free float | Calendar | CEMEX 2025 - Activity code Sogin | CEMEX LOCALE | CEMEX DISCIPLINE | CEMEX ACTIVITY TYPE | CEMEX RESPONSABILITY | CEMEX PARTITE | CEMEX REVISIONE | Note |
| --- | --- | --- | --- | --- | --- | --- | --- | --- | --- | --- | --- | --- | --- | --- | --- | --- |
|  | 3 | **Arredi Lab. Radiochimico** |  |  |  |  |  |  |  |  |  |  |  |  |  |  |
| CEP.LAB.M.10010 |  | Disponibilità Arredi lab. radiochimico in sito | milestone | 0d | CEP.LAB.P.10010 | 682d | 635d |  | CX1320 | 31 | LAB | SUP | DEM | P4 |  |  |
| CEP.LAB.M.10110 |  | Fabbricazione Arredi Lab. Radiochimico |  | 140d | CEP.LAB.O.00120 | 682d | 0d |  | CX1320 | 31 | LAB | SUP | DEM | P4 |  |  |
| CEP.LAB.P.10010 |  | Imballaggio e Trasporto in sito Arredi Lab. Radiochimico |  | 10d | CEP.LAB.M.10110 | 682d | 0d |  | CX1320 | 31 | LAB | SUP | DEM | P4 |  |  |
|  | 14 | **Realizzazione Sistema HVAC** |  |  |  |  |  |  |  |  |  |  |  |  |  |  |
|  | 10 | **Quadri quota 0.00m** |  |  |  |  |  |  |  |  |  |  |  |  |  |  |
|  | 8 | **Supporti puntuali HVAC** |  |  |  |  |  |  |  |  |  |  |  |  |  |  |
| CEP.HVA.M.10430 |  | Disponibilità Supporti in sito | milestone | 0d | CEP.HVA.S.40250 FF, CEP.HVA.D.12080 | 490d | 560d |  | CX1250 | 0 | HVA | SUP | COS | P1 | AGG |  |
|  | 1 | **Documentazione iniziale** |  |  |  |  |  |  |  |  |  |  |  |  |  |  |
| CEP.HVA.D.12060 |  | Progettazione costruttiva Supporti |  | 30d | CEM.MLS.C.00010 | 368d | 0d | 5D 8h ITA H + 2W 2036 | CX1250 | 0 | HVA | SUP | COS | P1 | AGG |  |
| CEP.HVA.D.12090 |  | Approvazione Progettazione costruttiva |  | 20d | CEP.HVA.D.12060 | 398d | 0d | 5D 8h ITA H + 2W 2036 | CX1250 | 0 | HVA | SUP | SOGIN | P1 |  |  |
|  | 3 | **Fabbricazione Supporti** |  |  |  |  |  |  |  |  |  |  |  |  |  |  |
| CEP.HVA.F.40260 |  | Fabbricazione Supporti |  | 120d | CEP.HVA.D.12060, CEP.HVA.D.12090 | 490d | 0d |  | CX1250 | 0 | HVA | SUP | COS | P1 | AGG |  |
| CEP.HVA.F.40270 |  | Controlli CND |  | 5d | CEP.HVA.F.40260 | 490d | 0d |  | CX1250 | 0 | HVA | SUP | COS | P1 | AGG |  |
|  | 5 | **Packaging e trasporto in sito** |  |  |  |  |  |  |  |  |  |  |  |  |  |  |
| CEP.HVA.S.40250 |  | Imballaggio e Trasporto in sito |  | 10d | CEP.HVA.F.40270, CEP.HVA.D.12080 FF | 490d | 0d |  | CX1250 | 0 | HVA | SUP | COS | P1 | AGG |  |
|  | 6 | **Documentazione fine fabbricazione** |  |  |  |  |  |  |  |  |  |  |  |  |  |  |
| CEP.HVA.D.12070 |  | Dossier di fine fabbricazione |  | 5d | CEP.HVA.F.40270 | 397d | 0d | 5D 8h ITA H + 2W 2036 | CX1250 | 0 | HVA | SUP | COS | P1 | AGG |  |
| CEP.HVA.D.12080 |  | Approvazione del Dossier di fine fabbricazione |  | 20d | CEP.HVA.D.12070 | 397d | 0d | 5D 8h ITA H + 2W 2036 | CX1250 | 0 | HVA | SUP | SOGIN | P1 |  |  |
|  | 1 | **Ordine per Sistema HVAC** |  |  |  |  |  |  |  |  |  |  |  |  |  |  |
| CEP.HVA.O.00010 |  | Specifiche d'Acquisto Sistema Ventilatori |  | 20d | CEM.ENG.I.00040, CEM.ENG.I.00060 FS+10d | 8d | 0d | 5D 8h ITA H + 2W 2036 | CX1250 | 0 | HVA | SUP | DEM | P5 |  |  |
| CEP.HVA.O.00020 |  | Ordini per Sistema Ventilatori |  | 40d | CEP.HVA.O.00010 | 8d | 0d | 5D 8h ITA H + 2W 2036 | CX1250 | 0 | HVA | SUP | DEM | P5 |  |  |
| CEP.HVA.O.00110 |  | Specifiche d'Acquisto Sistema UTA |  | 20d | CEM.ENG.I.00040, CEP.HVA.O.00010 | 349d | 0d | 5D 8h ITA H + 2W 2036 | CX1250 | 0 | HVA | SUP | DEM | P5 |  |  |
| CEP.HVA.O.00120 |  | Ordini per Sistema UTA |  | 40d | CEP.HVA.O.00110 | 349d | 0d | 5D 8h ITA H + 2W 2036 | CX1250 | 0 | HVA | SUP | DEM | P5 |  |  |
| CEP.HVA.O.00210 |  | Specifiche d'Acquisto Sistema Valvole |  | 20d | CEM.ENG.I.00040, CEM.ENG.I.00060 FS+10d | 17d | 0d | 5D 8h ITA H + 2W 2036 | CX1250 | 0 | HVA | SUP | DEM | P5 |  |  |
| CEP.HVA.O.00220 |  | Ordini per Sistema Valvole |  | 40d | CEP.HVA.O.00210 | 17d | 0d | 5D 8h ITA H + 2W 2036 | CX1250 | 0 | HVA | SUP | DEM | P5 |  |  |
| CEP.HVA.O.00310 |  | Specifiche d'Acquisto Sistema Serrande |  | 20d | CEM.ENG.I.00040, CEP.HVA.O.00010 | 142d | 0d | 5D 8h ITA H + 2W 2036 | CX1250 | 0 | HVA | SUP | DEM | P5 |  |  |
| CEP.HVA.O.00320 |  | Ordini per Sistema Serrande |  | 40d | CEP.HVA.O.00310 | 142d | 0d | 5D 8h ITA H + 2W 2036 | CX1250 | 0 | HVA | SUP | DEM | P5 |  |  |
| CEP.HVA.O.00410 |  | Specifiche d'Acquisto Unità modulare di filtrazione e Filtri |  | 20d | CEM.ENG.I.00040, CEP.HVA.O.00310 | 150d | 0d | 5D 8h ITA H + 2W 2036 | CX1250 | 0 | HVA | SUP | DEM | P5 |  |  |
| CEP.HVA.O.00420 |  | Ordini per Filtri |  | 40d | CEP.HVA.O.00410 | 150d | 0d | 5D 8h ITA H + 2W 2036 | CX1250 | 0 | HVA | SUP | DEM | P5 |  |  |
| CEP.HVA.O.00430 |  | Specifiche d'Acquisto HVAC bulk |  | 20d | CEM.ENG.I.00040, CEP.HVA.O.00110 | 396d | 0d | 5D 8h ITA H + 2W 2036 | CX1250 | 0 | HVA | SUP | DEM | P5 |  |  |
| CEP.HVA.O.00440 |  | Ordini HVAC bulk |  | 40d | CEP.HVA.O.00430 | 396d | 455d | 5D 8h ITA H + 2W 2036 | CX1250 | 0 | HVA | SUP | DEM | P5 |  | Da dettagliare in WBS?? |

| ID | WBS | Activity | Type | Duration | Predecessors | Total float | Free float | Calendar | CEMEX 2025 - Activity code Sogin | CEMEX LOCALE | CEMEX DISCIPLINE | CEMEX ACTIVITY TYPE | CEMEX RESPONSABILITY | CEMEX PARTITE | CEMEX REVISIONE | Note |
| --- | --- | --- | --- | --- | --- | --- | --- | --- | --- | --- | --- | --- | --- | --- | --- | --- |
|  | 3 | **Ventilatori** |  |  |  |  |  |  |  |  |  |  |  |  |  |  |
| CEP.HVA.M.10020 |  | Disponibilità Ventilatori processo in sito | milestone | 0d | CEP.HVA.S.40230 FF, CEP.HVA.D.10160 | 94d | 49d |  | CX1250 | 0 | HVA | SUP | DEM | P5 | MOD |  |
| CEP.HVA.M.10420 |  | Disponibilità Ventilatori deposito in sito | milestone | 0d | CEP.HVA.S.40240 FF, CEP.HVA.D.12050 FF | 6d | 0d |  | CX1250 | 0 | HVA | SUP | DEM | P5 | MOD |  |
|  | 1 | **Progettazione di dettaglio** |  |  |  |  |  |  |  |  |  |  |  |  |  |  |
| CEP.HVA.D.10130 |  | Progettazione costruttiva Ventilatori |  | 20d | CEP.HVA.O.00020 | 8d | 0d | 5D 8h ITA H + 2W 2036 | CX1250 | 0 | HVA | SUP | DEM | P5 |  |  |
| CEP.HVA.D.10140 |  | Approvazione Progettazione costruttiva Ventilatori |  | 20d | CEP.HVA.D.10130 | 8d | 0d | 5D 8h ITA H + 2W 2036 | CX1250 | 0 | HVA | SUP | SOGIN | P5 |  |  |
|  | 2 | **Qualifiche** |  |  |  |  |  |  |  |  |  |  |  |  |  |  |
| CEP.HVA.Q.10110 |  | Studio di analogia Ventilatori |  | 40d | CEP.HVA.O.00020 | 18d | 0d |  | CX1250 | 0 | HVA | SUP | DEM | P5 |  |  |
| CEP.HVA.Q.10120 |  | Emissione Studio di analogia Ventilatori |  | 20d | CEP.HVA.Q.10110 | 33d | 23d |  | CX1250 | 0 | HVA | SUP | DEM | P5 |  |  |
| CEP.HVA.Q.10130 |  | Protocollo di prova e procedura di qualifca Ventilatori |  | 5d | CEP.HVA.Q.10110, CEP.HVA.D.10140 | 10d | 0d |  | CX1250 | 0 | HVA | SUP | DEM | P5 |  |  |
| CEP.HVA.Q.10140 |  | Approvazione del Piano di qualifica Ventilatori |  | 20d | CEP.HVA.Q.10130 | 8d | 0d | 5D 8h ITA H + 2W 2036 | CX1250 | 0 | HVA | SUP | SOGIN | P5 |  |  |
| CEP.HVA.Q.10150 |  | Realizzazione prototipi Ventilatori |  | 40d | CEP.HVA.Q.10120, CEP.HVA.Q.10140 | 10d | 0d |  | CX1250 | 0 | HVA | SUP | DEM | P5 |  | STIMATO??? |
| CEP.HVA.Q.10160 |  | FAT Ventilatori prototipi |  | 5d | CEP.HVA.Q.10150 | 10d | 0d |  | CX1250 | 0 | HVA | SUP | DEM | P5 |  |  |
| CEP.HVA.Q.10170 |  | Test ambientale/sismico Ventilatori |  | 20d | CEP.HVA.Q.10150, CEP.HVA.Q.10160 | 10d | 0d |  | CX1250 | 0 | HVA | TEST | DEM | P5 |  | verifica per ambientale |
| CEP.HVA.Q.10180 |  | Test Report Ventilatori |  | 10d | CEP.HVA.Q.10170 | 10d | 0d |  | CX1250 | 0 | HVA | SUP | DEM | P5 |  |  |
| CEP.HVA.Q.10190 |  | Approvazione del Test Report Ventilatori |  | 20d | CEP.HVA.Q.10180 | 8d | 0d | 5D 8h ITA H + 2W 2036 | CX1250 | 0 | HVA | SUP | SOGIN | P5 |  |  |
|  | 3 | **Fabbricazione Ventilatori** |  |  |  |  |  |  |  |  |  |  |  |  |  |  |
| CEP.HVA.F.40220 |  | Fabbricazione Ventilatori processo |  | 180d | CEP.HVA.D.10140, CEP.HVA.Q.10190 | 96d | 0d |  | CX1250 | 0 | HVA | SUP | DEM | P5 | MOD |  |
| CEP.HVA.F.40230 |  | FAT Ventilatori processo |  | 5d | CEP.HVA.F.40220 | 96d | 4d |  | CX1250 | 0 | HVA | SUP | DEM | P5 | MOD |  |
| CEP.HVA.F.40240 |  | Fabbricazione Ventilatori deposito |  | 180d | CEP.HVA.D.10140, CEP.HVA.Q.10190 | 10d | 0d |  | CX1250 | 0 | HVA | SUP | DEM | P5 | MOD |  |
| CEP.HVA.F.40250 |  | FAT Ventilatori deposito |  | 5d | CEP.HVA.F.40240 | 10d | 4d |  | CX1250 | 0 | HVA | SUP | DEM | P5 | MOD |  |
|  | 5 | **Packaging e trasporto in sito** |  |  |  |  |  |  |  |  |  |  |  |  |  |  |
| CEP.HVA.S.40230 |  | Imballaggio e Trasporto in sito Ventilatori processo |  | 10d | CEP.HVA.F.40230, CEP.HVA.D.10160 FF | 94d | 0d |  | CX1250 | 0 | HVA | SUP | DEM | P5 | MOD |  |
| CEP.HVA.S.40240 |  | Imballaggio e Trasporto in sito Ventilatori deposito |  | 10d | CEP.HVA.F.40250, CEP.HVA.D.12050 FF | 6d | 0d |  | CX1250 | 0 | HVA | SUP | DEM | P5 | MOD |  |

| ID | WBS | Activity | Type | Duration | Predecessors | Total float | Free float | Calendar | CEMEX 2025 - Activity code Sogin | CEMEX LOCALE | CEMEX DISCIPLINE | CEMEX ACTIVITY TYPE | CEMEX RESPONSABILITY | CEMEX PARTITE | CEMEX REVISIONE | Note |
| --- | --- | --- | --- | --- | --- | --- | --- | --- | --- | --- | --- | --- | --- | --- | --- | --- |
|  | 6 | **Documentazione fine fabbricazione** |  |  |  |  |  |  |  |  |  |  |  |  |  |  |
| CEP.HVA.D.10150 |  | Dossier di fine fabbricazione Ventilatori processo |  | 20d | CEP.HVA.F.40230 | 77d | 0d | 5D 8h ITA H + 2W 2036 | CX1250 | 0 | HVA | SUP | DEM | P5 | MOD |  |
| CEP.HVA.D.10160 |  | Approvazione del Dossier di fine fabbricazione Ventilatori processo |  | 20d | CEP.HVA.Q.10190, CEP.HVA.D.10150 | 77d | 0d | 5D 8h ITA H + 2W 2036 | CX1250 | 0 | HVA | SUP | SOGIN | P5 |  |  |
| CEP.HVA.D.12040 |  | Dossier di fine fabbricazione Ventilatori deposito |  | 20d | CEP.HVA.F.40250 | 5d | 0d | 5D 8h ITA H + 2W 2036 | CX1250 | 0 | HVA | SUP | DEM | P5 | MOD |  |
| CEP.HVA.D.12050 |  | Approvazione del Dossier di fine fabbricazione Ventilatori deposito |  | 20d | CEP.HVA.D.12040, CEP.HVA.Q.10190 | 5d | 0d | 5D 8h ITA H + 2W 2036 | CX1250 | 0 | HVA | SUP | SOGIN | P5 |  |  |
|  | 2 | **UTA** |  |  |  |  |  |  |  |  |  |  |  |  |  |  |
| CEP.HVA.M.10110 |  | Disponibilità UTA in sito | milestone | 0d | CEP.HVA.S.10010 FF, CEP.HVA.D.10120 | 426d | 24d |  | CX1250 | 0 | HVA | SUP | DEM | P5 | MOD |  |
|  | 1 | **Progettazione di dettaglio** |  |  |  |  |  |  |  |  |  |  |  |  |  |  |
| CEP.HVA.D.10010 |  | Progettazione Costruttiva UTA |  | 20d | CEP.HVA.O.00120 | 349d | 0d | 5D 8h ITA H + 2W 2036 | CX1250 | 0 | HVA | SUP | DEM | P5 |  |  |
| CEP.HVA.D.10020 |  | Approvazione della Progettazione Costruttiva UTA |  | 20d | CEP.HVA.D.10010 | 349d | 0d | 5D 8h ITA H + 2W 2036 | CX1250 | 0 | HVA | SUP | SOGIN | P5 |  |  |
|  | 2 | **Qualifiche** |  |  |  |  |  |  |  |  |  |  |  |  |  |  |
| CEP.HVA.T.10010 |  | Piano di qualifica UTA |  | 10d | CEP.HVA.O.00120 | 447d | 0d |  | CX1250 | 0 | HVA | SUP | DEM | P5 |  |  |
| CEP.HVA.T.10020 |  | Approvazione del Piano di qualifica UTA |  | 20d | CEP.HVA.T.10010 | 361d | 12d | 5D 8h ITA H + 2W 2036 | CX1250 | 0 | HVA | SUP | SOGIN | P5 |  |  |
| CEP.HVA.T.10030 |  | Realizzazione prototipi UTA |  | 90d | CEP.HVA.T.10020, CEP.HVA.D.10020 | 427d | 0d |  | CX1250 | 0 | HVA | SUP | DEM | P5 | MOD |  |
| CEP.HVA.T.10040 |  | FAT UTA prototipi |  | 5d | CEP.HVA.T.10030 | 427d | 0d |  | CX1250 | 0 | HVA | SUP | DEM | P5 | MOD |  |
| CEP.HVA.T.10050 |  | Test ambeintale/sismico UTA |  | 6d | CEP.HVA.T.10030, CEP.HVA.T.10040 | 427d | 0d |  | CX1250 | 0 | HVA | TEST | DEM | P5 | MOD | verifica per ambientale |
| CEP.HVA.T.10060 |  | Test Report UTA |  | 10d | CEP.HVA.T.10050 | 427d | 1d |  | CX1250 | 0 | HVA | SUP | DEM | P5 | MOD |  |
| CEP.HVA.T.10070 |  | Approvazione del Test Report UTA |  | 20d | CEP.HVA.T.10060 | 350d | 0d | 5D 8h ITA H + 2W 2036 | CX1250 | 0 | HVA | SUP | SOGIN | P5 |  |  |
|  | 4 | **Fabbricazione UTA** |  |  |  |  |  |  |  |  |  |  |  |  |  |  |
| CEP.HVA.F.10010 |  | Fabbricazione UTA |  | 240d | CEP.HVA.D.10020, CEP.HVA.T.10070 | 427d | 0d |  | CX1250 | 0 | HVA | SUP | DEM | P5 | MOD |  |
| CEP.HVA.F.10020 |  | FAT UTA |  | 5d | CEP.HVA.F.10010 | 427d | 0d |  | CX1250 | 0 | HVA | SUP | DEM | P5 | MOD |  |
|  | 5 | **Packaging e trasporto in sito** |  |  |  |  |  |  |  |  |  |  |  |  |  |  |
| CEP.HVA.S.10010 |  | Imballaggio e Trasporto in sito UTA |  | 10d | CEP.HVA.F.10020, CEP.HVA.D.10120 FF | 426d | 0d |  | CX1250 | 0 | HVA | SUP | DEM | P5 | MOD |  |
|  | 6 | **Documentazione fine fabbricazione** |  |  |  |  |  |  |  |  |  |  |  |  |  |  |
| CEP.HVA.D.10110 |  | Dossier di fine fabbricazione UTA |  | 10d | CEP.HVA.F.10020 | 350d | 0d | 5D 8h ITA H + 2W 2036 | CX1250 | 0 | HVA | SUP | DEM | P5 | MOD |  |
| CEP.HVA.D.10120 |  | Approvazione del Dossier di fine fabbricazione |  | 20d | CEP.HVA.D.10110, CEP.HVA.T.10070 | 350d | 0d | 5D 8h ITA H + 2W 2036 | CX1250 | 0 | HVA | SUP | SOGIN | P5 |  |  |

| ID | WBS | Activity | Type | Duration | Predecessors | Total float | Free float | Calendar | CEMEX 2025 - Activity code Sogin | CEMEX LOCALE | CEMEX DISCIPLINE | CEMEX ACTIVITY TYPE | CEMEX RESPONSABILITY | CEMEX PARTITE | CEMEX REVISIONE | Note |
| --- | --- | --- | --- | --- | --- | --- | --- | --- | --- | --- | --- | --- | --- | --- | --- | --- |
|  | 4 | **Valvole** |  |  |  |  |  |  |  |  |  |  |  |  |  |  |
| CEP.HVA.M.10210 |  | Disponibilità Valvole in sito | milestone | 0d | CEP.HVA.S.10210 FF, CEP.HVA.D.10230 | 22d | 0d |  | CX1250 | 0 | HVA | SUP | DEM | P5 | MOD |  |
|  | 1 | **Progettazione di dettaglio** |  |  |  |  |  |  |  |  |  |  |  |  |  |  |
| CEP.HVA.D.10210 |  | Progettazione Costruttiva Valvole |  | 30d | CEP.HVA.O.00220 | 17d | 0d | 5D 8h ITA H + 2W 2036 | CX1250 | 0 | HVA | SUP | DEM | P5 |  |  |
|  | 2 | **Qualifiche** |  |  |  |  |  |  |  |  |  |  |  |  |  |  |
| CEP.HVA.T.10120 |  | Piano di qualifica Valvole |  | 10d | CEP.HVA.O.00220 | 23d | 0d |  | CX1250 | 0 | HVA | SUP | DEM | P5 |  |  |
| CEP.HVA.T.10130 |  | Approvazione del Piano di qualifica Valvole |  | 20d | CEP.HVA.T.10120 | 19d | 2d | 5D 8h ITA H + 2W 2036 | CX1250 | 0 | HVA | SUP | SOGIN | P5 |  |  |
| CEP.HVA.T.10220 |  | Realizzazione prototipi Valvole |  | 90d | CEP.HVA.T.10130, CEP.HVA.D.10210 | 21d | 0d |  | CX1250 | 0 | HVA | SUP | DEM | P5 | MOD |  |
| CEP.HVA.T.10230 |  | FAT Valvole prototipi |  | 5d | CEP.HVA.T.10220 | 21d | 0d |  | CX1250 | 0 | HVA | SUP | DEM | P5 | MOD |  |
| CEP.HVA.T.10240 |  | Test ambientale/sismico Valvole |  | 3d | CEP.HVA.T.10220, CEP.HVA.T.10230 | 21d | 0d |  | CX1250 | 0 | HVA | TEST | DEM | P5 | MOD | verifica per ambientale |
| CEP.HVA.T.10250 |  | Test Report Valvole |  | 10d | CEP.HVA.T.10240 | 21d | 0d |  | CX1250 | 0 | HVA | SUP | DEM | P5 | MOD |  |
| CEP.HVA.T.10260 |  | Approvazione del Test Report Valvole |  | 20d | CEP.HVA.T.10250 | 18d | 0d | 5D 8h ITA H + 2W 2036 | CX1250 | 0 | HVA | SUP | SOGIN | P5 |  |  |
|  | 4 | **Fabbricazione Valvole** |  |  |  |  |  |  |  |  |  |  |  |  |  |  |
| CEP.HVA.F.10210 |  | Fabbricazione Valvole |  | 220d | CEP.HVA.D.10210, CEP.HVA.T.10260 | 22d | 0d |  | CX1250 | 0 | HVA | SUP | DEM | P5 | MOD |  |
| CEP.HVA.F.10220 |  | FAT Valvole |  | 5d | CEP.HVA.F.10210 | 22d | 0d |  | CX1250 | 0 | HVA | SUP | DEM | P5 | MOD |  |
|  | 5 | **Packaging e trasporto in sito** |  |  |  |  |  |  |  |  |  |  |  |  |  |  |
| CEP.HVA.S.10210 |  | Imballaggio e Trasporto in sito Valvole |  | 10d | CEP.HVA.F.10220, CEP.HVA.D.10230 FF | 22d | 0d |  | CX1250 | 0 | HVA | SUP | DEM | P5 | MOD |  |
|  | 6 | **Documentazione fine fabbricazione** |  |  |  |  |  |  |  |  |  |  |  |  |  |  |
| CEP.HVA.D.10220 |  | Dossier di fine fabbricazione Valvole |  | 10d | CEP.HVA.F.10220 | 18d | 0d | 5D 8h ITA H + 2W 2036 | CX1250 | 0 | HVA | SUP | DEM | P5 | MOD |  |
| CEP.HVA.D.10230 |  | Approvazione del Dossier di fine fabbricazione |  | 20d | CEP.HVA.D.10220, CEP.HVA.T.10260 | 18d | 0d | 5D 8h ITA H + 2W 2036 | CX1250 | 0 | HVA | SUP | SOGIN | P5 |  |  |
|  | 5 | **Serrande** |  |  |  |  |  |  |  |  |  |  |  |  |  |  |
| CEP.HVA.M.10310 |  | Disponibilità Serrande in sito | milestone | 0d | CEP.HVA.S.10310 FF, CEP.HVA.D.10330 | 177d | 155d |  | CX1250 | 0 | HVA | SUP | DEM | P5 | MOD |  |
|  | 1 | **Progettazione di dettaglio** |  |  |  |  |  |  |  |  |  |  |  |  |  |  |
| CEP.HVA.D.10310 |  | Progettazione Costruttiva Serrande |  | 30d | CEP.HVA.O.00320 | 142d | 0d | 5D 8h ITA H + 2W 2036 | CX1250 | 0 | HVA | SUP | DEM | P5 |  |  |

| ID | WBS | Activity | Type | Duration | Predecessors | Total float | Free float | Calendar | CEMEX 2025 - Activity code Sogin | CEMEX LOCALE | CEMEX DISCIPLINE | CEMEX ACTIVITY TYPE | CEMEX RESPONSABILITY | CEMEX PARTITE | Note | CEMEX REVISIONE |
| --- | --- | --- | --- | --- | --- | --- | --- | --- | --- | --- | --- | --- | --- | --- | --- | --- |
|  | 2 | **Qualifiche** |  |  |  |  |  |  |  |  |  |  |  |  |  |  |
| CEP.HVA.T.10310 |  | Piano di qualifica Serrande |  | 10d | CEP.HVA.O.00320 | 180d | 0d |  | CX1250 | 0 | HVA | SUP | DEM | P5 |  |  |
| CEP.HVA.T.10320 |  | Approvazione del Piano di qualifica Serrande |  | 20d | CEP.HVA.T.10310 | 144d | 2d | 5D 8h ITA H + 2W 2036 | CX1250 | 0 | HVA | SUP | SOGIN | P5 |  |  |
| CEP.HVA.T.10330 |  | Realizzazione prototipi Serrande |  | 30d | CEP.HVA.T.10320, CEP.HVA.D.10310 | 178d | 0d |  | CX1250 | 0 | HVA | SUP | DEM | P5 |  |  |
| CEP.HVA.T.10340 |  | FAT Serrande prototipi |  | 5d | CEP.HVA.T.10330 | 178d | 0d |  | CX1250 | 0 | HVA | SUP | DEM | P5 |  |  |
| CEP.HVA.T.10350 |  | Test ambientale/sismico Serrande |  | 13d | CEP.HVA.T.10330, CEP.HVA.T.10340 | 178d | 0d |  | CX1250 | 0 | HVA | TEST | DEM | P5 | verifica per ambientale |  |
| CEP.HVA.T.10360 |  | Test Report Serrande |  | 10d | CEP.HVA.T.10350 | 178d | 0d |  | CX1250 | 0 | HVA | SUP | DEM | P5 |  |  |
| CEP.HVA.T.10370 |  | Approvazione del Test Report Serrande |  | 20d | CEP.HVA.T.10360 | 147d | 0d | 5D 8h ITA H + 2W 2036 | CX1250 | 0 | HVA | SUP | SOGIN | P5 |  |  |
|  | 4 | **Fabbricazione Serrande** |  |  |  |  |  |  |  |  |  |  |  |  |  |  |
| CEP.HVA.F.10310 |  | Fabbricazione Serrande |  | 90d | CEP.HVA.D.10310, CEP.HVA.T.10370 | 178d | 0d |  | CX1250 | 0 | HVA | SUP | DEM | P5 |  | MOD |
| CEP.HVA.F.10320 |  | FAT Serrande |  | 5d | CEP.HVA.F.10310 | 178d | 0d |  | CX1250 | 0 | HVA | SUP | DEM | P5 |  | MOD |
|  | 5 | **Packaging e trasporto in sito** |  |  |  |  |  |  |  |  |  |  |  |  |  |  |
| CEP.HVA.S.10310 |  | Imballaggio e Trasporto in sito Serrande |  | 10d | CEP.HVA.F.10320 | 204d | 27d |  | CX1250 | 0 | HVA | SUP | DEM | P5 |  | MOD |
|  | 6 | **Documentazione fine fabbricazione** |  |  |  |  |  |  |  |  |  |  |  |  |  |  |
| CEP.HVA.D.10320 |  | Dossier di fine fabbricazione Serrande |  | 10d | CEP.HVA.F.10320 | 143d | 0d | 5D 8h ITA H + 2W 2036 | CX1250 | 0 | HVA | SUP | DEM | P5 |  | MOD |
| CEP.HVA.D.10330 |  | Approvazione del Dossier di fine fabbricazione |  | 20d | CEP.HVA.D.10320, CEP.HVA.T.10370 | 143d | 0d | 5D 8h ITA H + 2W 2036 | CX1250 | 0 | HVA | SUP | SOGIN | P5 |  |  |
|  | 6 | **Filtri** |  |  |  |  |  |  |  |  |  |  |  |  |  |  |
| CEP.HVA.M.10410 |  | Disponibilità Filtri in sito | milestone | 0d | CEP.HVA.S.10410 FF, CEP.HVA.D.10460 | 182d | 158d |  | CX1250 | 0 | HVA | SUP | DEM | P5 |  | MOD |
|  | 1 | **Documentazione iniziale** |  |  |  |  |  |  |  |  |  |  |  |  |  |  |
| CEP.HVA.D.10410 |  | Progettazione costruttiva Filtri |  | 30d | CEP.HVA.O.00420 | 150d | 0d | 5D 8h ITA H + 2W 2036 | CX1250 | 0 | HVA | SUP | DEM | P5 |  |  |
| CEP.HVA.D.10420 |  | Approvazione Progettazione costruttiva Filtri |  | 20d | CEP.HVA.D.10410 | 150d | 0d | 5D 8h ITA H + 2W 2036 | CX1250 | 0 | HVA | SUP | SOGIN | P5 |  |  |
|  | 3 | **Fabbricazione Filtri** |  |  |  |  |  |  |  |  |  |  |  |  |  |  |
| CEP.HVA.F.10410 |  | Fabbricazione Filtri |  | 180d | CEP.HVA.D.10410, CEP.HVA.D.10420 | 182d | 0d |  | CX1250 | 0 | HVA | SUP | DEM | P5 |  | MOD |
| CEP.HVA.F.10420 |  | FAT Filtri |  | 5d | CEP.HVA.F.10410 | 182d | 0d |  | CX1250 | 0 | HVA | SUP | DEM | P5 |  | MOD |

| ID | WBS | Activity | Duration | Predecessors | Total float | Free float | Calendar | CEMEX 2025 - Activity code Sogin | CEMEX LOCALE | CEMEX DISCIPLINE | CEMEX ACTIVITY TYPE | CEMEX RESPONSABILITY | CEMEX PARTITE | CEMEX REVISIONE |
| --- | --- | --- | --- | --- | --- | --- | --- | --- | --- | --- | --- | --- | --- | --- |
|  | 5 | **Packaging e trasporto in sito** |  |  |  |  |  |  |  |  |  |  |  |  |
| CEP.HVA.S.10410 |  | Imballaggio e Trasporto in sito Filtri | 10d | CEP.HVA.F.10420, CEP.HVA.D.10460 FF | 182d | 0d |  | CX1250 | 0 | HVA | SUP | DEM | P5 | MOD |
|  | 6 | **Documentazione fine fabbricazione** |  |  |  |  |  |  |  |  |  |  |  |  |
| CEP.HVA.D.10450 |  | Dossier di fine fabbricazione Filtri | 5d | CEP.HVA.F.10420 | 146d | 0d | 5D 8h ITA H + 2W 2036 | CX1250 | 0 | HVA | SUP | DEM | P5 | MOD |
| CEP.HVA.D.10460 |  | Approvazione del Dossier di fine fabbricazione | 20d | CEP.HVA.D.10450 | 146d | 0d | 5D 8h ITA H + 2W 2036 | CX1250 | 0 | HVA | SUP | SOGIN | P5 |  |
|  | 7 | **Approvvigionamento bulk HVAC** |  |  |  |  |  |  |  |  |  |  |  |  |
|  | 9 | **Canali** |  |  |  |  |  |  |  |  |  |  |  |  |
|  | 1 | **Documentazione iniziale** |  |  |  |  |  |  |  |  |  |  |  |  |
| CEP.HVA.D.12100 |  | Progettazione costruttiva Canali | 30d | CEM.ENG.I.00050 | 342d | 0d | 5D 8h ITA H + 2W 2036 | CX1250 | 0 | HVA | SUP | DEM | P5 | AGG |
| CEP.HVA.D.12130 |  | Approvazione Progettazione costruttiva Canali | 20d | CEP.HVA.D.12100 | 342d | 0d | 5D 8h ITA H + 2W 2036 | CX1250 | 0 | HVA | SUP | SOGIN | P5 | AGG |
|  | 3 | **Fabbricazione Canali** |  |  |  |  |  |  |  |  |  |  |  |  |
| CEP.HVA.F.40280 |  | Fabbricazione Canali | 180d | CEP.HVA.D.12100, CEP.HVA.D.12130 | 418d | 0d |  | CX1250 | 0 | HVA | SUP | DEM | P5 | MOD |
| CEP.HVA.F.40290 |  | Certificazioni e documentazione | 5d | CEP.HVA.F.40280 | 418d | 0d |  | CX1250 | 0 | HVA | SUP | DEM | P5 | MOD |
|  | 5 | **Packaging e trasporto in sito** |  |  |  |  |  |  |  |  |  |  |  |  |
| CEP.HVA.S.40260 |  | Imballaggio e Trasporto in sito Canali e fitting | 10d | CEP.HVA.F.40290, CEP.HVA.D.12120 FF | 418d | 458d |  | CX1250 | 0 | HVA | SUP | DEM | P5 | MOD |
|  | 2 | **Documentazione fine fabbricazione** |  |  |  |  |  |  |  |  |  |  |  |  |
| CEP.HVA.D.12110 |  | Dossier di fine fabbricazione Condotti | 5d | CEP.HVA.F.40290 | 342d | 0d | 5D 8h ITA H + 2W 2036 | CX1250 | 0 | HVA | SUP | DEM | P5 | MOD |
| CEP.HVA.D.12120 |  | Approvazione del Dossier di fine fabbricazione | 20d | CEP.HVA.D.12110 | 342d | 0d | 5D 8h ITA H + 2W 2036 | CX1250 | 0 | HVA | SUP | SOGIN | P5 | AGG |
|  | 11 | **Condizionatori** |  |  |  |  |  |  |  |  |  |  |  |  |
|  | 1 | **Documentazione iniziale** |  |  |  |  |  |  |  |  |  |  |  |  |
| CEP.HVA.D.12180 |  | Progettazione costruttiva Condizionatori | 30d | CEM.ENG.I.00050 | 388d | 0d | 5D 8h ITA H + 2W 2036 | CX1250 | 0 | HVA | SUP | DEM | P5 | AGG |
| CEP.HVA.D.12210 |  | Approvazione Progettazione costruttiva Condizionatori | 20d | CEP.HVA.D.12180 | 388d | 0d | 5D 8h ITA H + 2W 2036 | CX1250 | 0 | HVA | SUP | SOGIN | P5 | AGG |
|  | 3 | **Fabbricazione Condizionatori** |  |  |  |  |  |  |  |  |  |  |  |  |
| CEP.HVA.F.40320 |  | Fabbricazione Condizionatori | 120d | CEP.HVA.D.12180, CEP.HVA.D.12210 | 478d | 0d |  | CX1250 | 0 | HVA | SUP | DEM | P5 | AGG |
| CEP.HVA.F.40330 |  | Certificazioni e documentazione | 5d | CEP.HVA.F.40320 | 478d | 5d |  | CX1250 | 0 | HVA | SUP | DEM | P5 | AGG |

| ID | WBS | Activity | Type | Duration | Predecessors | Total float | Free float | Calendar | CEMEX 2025 - Activity code Sogin | CEMEX LOCALE | CEMEX DISCIPLINE | CEMEX ACTIVITY TYPE | CEMEX RESPONSABILITY | CEMEX PARTITE | CEMEX REVISIONE | Note |
| --- | --- | --- | --- | --- | --- | --- | --- | --- | --- | --- | --- | --- | --- | --- | --- | --- |
|  | 5 | **Packaging e trasporto in sito** |  |  |  |  |  |  |  |  |  |  |  |  |  |  |
| CEP.HVA.S.40280 |  | Imballaggio e Trasporto in sito Canali e fitting |  | 10d | CEP.HVA.F.40330, CEP.HVA.D.12200 FF | 473d | 513d |  | CX1250 | 0 | HVA | SUP | DEM | P5 | AGG |  |
|  | 2 | **Documentazione fine fabbricazione** |  |  |  |  |  |  |  |  |  |  |  |  |  |  |
| CEP.HVA.D.12190 |  | Dossier di fine fabbricazione Condizionatori |  | 5d | CEP.HVA.F.40330 | 388d | 0d | 5D 8h ITA H + 2W 2036 | CX1250 | 0 | HVA | SUP | DEM | P5 | AGG |  |
| CEP.HVA.D.12200 |  | Approvazione del Dossier di fine fabbricazione |  | 20d | CEP.HVA.D.12190 | 388d | 0d | 5D 8h ITA H + 2W 2036 | CX1250 | 0 | HVA | SUP | SOGIN | P5 | AGG |  |
|  | 15 | **Realizzazione Sistema elettrico (quadri, UPS, cavi, etc)** |  |  |  |  |  |  |  |  |  |  |  |  |  |  |
|  | 1 | **Ordine per Sistema elettrico** |  |  |  |  |  |  |  |  |  |  |  |  |  |  |
| CEP.ELE.O.00010 |  | Specifiche d'Acquisto Sistema elettrico |  | 60d | CEM.ENG.I.00040 | 278d | 0d | 5D 8h ITA H + 2W 2036 | CX1260 | 0 | ELE | SUP | CAR | P7 |  | Aumentato di 30d |
| CEP.ELE.O.00020 |  | Ordini per Sistema elettrico |  | 40d | CEP.ELE.O.00010 | 278d | 0d | 5D 8h ITA H + 2W 2036 | CX1260 | 0 | ELE | SUP | CAR | P7 |  |  |
|  | 2 | **Fabbricazione Quadri** |  |  |  |  |  |  |  |  |  |  |  |  |  |  |
| CEP.ELE.M.00010 |  | Disponibilità Quadri in sito | milestone | 0d | CEP.ELE.S.00210 FF, CEP.ELE.S.00110 FF, CEP.ELE.D.00300 FF | 350d | 0d |  | CX1260 | 0 | ELE | SUP | CAR | P7 |  |  |
|  | 1 | **Progettazione di dettaglio** |  |  |  |  |  |  |  |  |  |  |  |  |  |  |
| CEP.ELE.D.00010 |  | Progettazione Costruttiva QUADRI |  | 30d | CEP.ELE.O.00020 | 278d | 0d | 5D 8h ITA H + 2W 2036 | CX1260 | 0 | ELE | SUP | CAR | P7 |  |  |
| CEP.ELE.D.00020 |  | Approvazione della Progettazione Costruttiva QUADRI |  | 20d | CEP.ELE.D.00010 | 278d | 0d | 5D 8h ITA H + 2W 2036 | CX1260 | 0 | ELE | SUP | SOGIN | P7 |  |  |
|  | 2 | **Qualifiche** |  |  |  |  |  |  |  |  |  |  |  |  |  |  |
| CEP.ELE.T.00010 |  | Piano di qualifica QUADRI |  | 10d | CEP.ELE.O.00020 | 368d | 0d |  | CX1260 | 0 | ELE | SUP | CAR | P7 |  | Aumentato di 5d |
| CEP.ELE.T.00020 |  | Approvazione del Piano di qualifica QUADRI |  | 20d | CEP.ELE.T.00010 | 300d | 22d | 5D 8h ITA H + 2W 2036 | CX1260 | 0 | ELE | SUP | SOGIN | P7 |  |  |
| CEP.ELE.T.00100 |  | Realizzazione prototipi QUADRI |  | 90d | CEP.ELE.T.00020, CEP.ELE.D.00020 | 347d | 0d |  | CX1260 | 0 | ELE | SUP | CAR | P7 |  | Aumentato di 30d |
| CEP.ELE.T.00105 |  | FAT Quadri prototipi |  | 5d | CEP.ELE.T.00100 | 347d | 0d |  | CX1260 | 0 | ELE | SUP | CAR | P7 |  |  |
| CEP.ELE.T.00110 |  | Test sismico QUADRI |  | 10d | CEP.ELE.T.00100, CEP.ELE.T.00105 | 347d | 0d |  | CX1260 | 0 | ELE | TEST | CAR | P7 |  |  |
| CEP.ELE.T.00120 |  | Test Report QUADRI |  | 20d | CEP.ELE.T.00110 | 347d | 1d |  | CX1260 | 0 | ELE | SUP | CAR | P7 |  | Aumentato di 10d |
| CEP.ELE.T.00130 |  | Approvazione del Test Report QUADRI |  | 20d | CEP.ELE.T.00120 | 283d | 0d | 5D 8h ITA H + 2W 2036 | CX1260 | 0 | ELE | SUP | SOGIN | P7 |  |  |
|  | 4 | **Fabbricazione Quadri che richiedono qualifica sismica** |  |  |  |  |  |  |  |  |  |  |  |  |  |  |
| CEP.ELE.F.00110 |  | Fabbricazione quadri |  | 90d | CEP.ELE.D.00020, CEP.ELE.T.00110, CEP.ELE.T.00130 | 346d | 0d |  | CX1260 | 0 | ELE | SUP | CAR | P7 |  |  |
| CEP.ELE.F.00120 |  | FAT quadri |  | 5d | CEP.ELE.F.00110 | 346d | 0d |  | CX1260 | 0 | ELE | SUP | CAR | P7 |  |  |

| ID | WBS | Activity | Type | Duration | Predecessors | Total float | Free float | Calendar | CEMEX 2025 - Activity code Sogin | CEMEX LOCALE | CEMEX DISCIPLINE | CEMEX ACTIVITY TYPE | CEMEX RESPONSABILITY | CEMEX PARTITE | Note |
| --- | --- | --- | --- | --- | --- | --- | --- | --- | --- | --- | --- | --- | --- | --- | --- |
|  | 3 | **Fabbricazione Quadri che non richiedono qualifica sismica** |  |  |  |  |  |  |  |  |  |  |  |  |  |
| CEP.ELE.F.00210 |  | Fabbricazione quadri |  | 110d | CEP.ELE.D.00020, CEP.ELE.T.00100 | 392d | 0d |  | CX1260 | 0 | ELE | SUP | CAR | P7 |  |
| CEP.ELE.F.00220 |  | FAT quadri |  | 5d | CEP.ELE.F.00210 | 392d | 0d |  | CX1260 | 0 | ELE | SUP | CAR | P7 |  |
|  | 5 | **Packaging e trasporto in sito** |  |  |  |  |  |  |  |  |  |  |  |  |  |
| CEP.ELE.S.00110 |  | Imballaggio e Trasporto in sito Quadri che richiedono qualifica sismica |  | 10d | CEP.ELE.F.00120, CEP.ELE.D.00120 FF | 350d | 0d |  | CX1260 | 0 | ELE | SUP | CAR | P7 |  |
| CEP.ELE.S.00210 |  | Imballaggio e Trasporto in sito Quadri che non richiedono qualifica sismica |  | 10d | CEP.ELE.F.00220, CEP.ELE.D.00220 FF | 396d | 46d |  | CX1260 | 0 | ELE | SUP | CAR | P7 |  |
|  | 6 | **Documentazione fine fabbricazione** |  |  |  |  |  |  |  |  |  |  |  |  |  |
| CEP.ELE.D.00110 |  | Dossier di fine fabbricazione Quadri che richiedono qualifica sismica |  | 15d | CEP.ELE.F.00120 | 283d | 0d | 5D 8h ITA H + 2W 2036 | CX1260 | 0 | ELE | SUP | CAR | P7 | Aumentato di 5d |
| CEP.ELE.D.00120 |  | Approvazione del Dossier di fine fabbricazione Quadri che richiedono qualifica sismica |  | 20d | CEP.ELE.D.00110, CEP.ELE.T.00130 | 283d | 0d | 5D 8h ITA H + 2W 2036 | CX1260 | 0 | ELE | SUP | SOGIN | P7 |  |
| CEP.ELE.D.00210 |  | Dossier di fine fabbricazione Quadri che non richiedono qualifica sismica |  | 10d | CEP.ELE.F.00220 | 321d | 0d | 5D 8h ITA H + 2W 2036 | CX1260 | 0 | ELE | SUP | CAR | P7 | Aumentato di 5d |
| CEP.ELE.D.00220 |  | Approvazione del Dossier di fine fabbricazione Quadri che non richiedono qualifica sismica |  | 20d | CEP.ELE.D.00210 | 321d | 0d | 5D 8h ITA H + 2W 2036 | CX1260 | 0 | ELE | SUP | SOGIN | P7 |  |
| CEP.ELE.D.00300 |  | Completamento fornitura quadri | milestone | 0d | CEP.ELE.D.00220, CEP.ELE.D.00120 | 350d | 0d |  | CX1260 | 0 | ELE | SUP | CAR | P7 |  |
|  | 3 | **Fabbricazione UPS** |  |  |  |  |  |  |  |  |  |  |  |  |  |
| CEP.ELE.M.00020 |  | Disponibilità UPS in sito | milestone | 0d | CEP.ELE.S.10020 FF, CEP.ELE.D.101300 FF | 378d | 16d |  | CX1260 | 0 | ELE | SUP | CAR | P7 |  |
|  | 1 | **Progettazione di dettaglio** |  |  |  |  |  |  |  |  |  |  |  |  |  |
| CEP.ELE.D.10010 |  | Progettazione Costruttiva UPS |  | 30d | CEP.ELE.O.00020 | 301d | 0d | 5D 8h ITA H + 2W 2036 | CX1260 | 0 | ELE | SUP | CAR | P7 |  |
| CEP.ELE.D.10020 |  | Approvazione della Progettazione Costruttiva UPS |  | 20d | CEP.ELE.D.10010 | 301d | 0d | 5D 8h ITA H + 2W 2036 | CX1260 | 0 | ELE | SUP | SOGIN | P7 |  |
|  | 2 | **Qualifiche** |  |  |  |  |  |  |  |  |  |  |  |  |  |
| CEP.ELE.T.10010 |  | Piano di qualifica UPS |  | 10d | CEP.ELE.O.00020 | 400d | 0d |  | CX1260 | 0 | ELE | SUP | CAR | P7 |  |
| CEP.ELE.T.10020 |  | Approvazione del Piano di qualifica UPS |  | 20d | CEP.ELE.T.10010 | 323d | 22d | 5D 8h ITA H + 2W 2036 | CX1260 | 0 | ELE | SUP | SOGIN | P7 |  |
| CEP.ELE.T.10100 |  | Realizzazione prototipi UPS |  | 80d | CEP.ELE.T.10020, CEP.ELE.D.10020 | 374d | 0d |  | CX1260 | 0 | ELE | SUP | CAR | P7 | Aumentato di 20d |
| CEP.ELE.T.10105 |  | FAT Prototipi UPS |  | 10d | CEP.ELE.T.10100 | 374d | 0d |  | CX1260 | 0 | ELE | SUP | CAR | P7 |  |
| CEP.ELE.T.10110 |  | Test ambientale/sismico UPS |  | 5d | CEP.ELE.T.10100, CEP.ELE.T.10105 | 374d | 0d |  | CX1260 | 0 | ELE | TEST | CAR | P7 |  |
| CEP.ELE.T.10120 |  | Test Report UPS |  | 10d | CEP.ELE.T.10110 | 374d | 0d |  | CX1260 | 0 | ELE | SUP | CAR | P7 |  |
| CEP.ELE.T.10130 |  | Approvazione del Test Report UPS |  | 20d | CEP.ELE.T.10120 | 306d | 0d | 5D 8h ITA H + 2W 2036 | CX1260 | 0 | ELE | SUP | SOGIN | P7 |  |

| ID | WBS | Activity | Type | Duration | Predecessors | Total float | Free float | Calendar | CEMEX 2025 - Activity code Sogin | CEMEX LOCALE | CEMEX DISCIPLINE | CEMEX ACTIVITY TYPE | CEMEX RESPONSABILITY | CEMEX PARTITE | CEMEX SISTEMI | CEMEX REVISIONE |
| --- | --- | --- | --- | --- | --- | --- | --- | --- | --- | --- | --- | --- | --- | --- | --- | --- |
|  | 4 | **Fabbricazione** |  |  |  |  |  |  |  |  |  |  |  |  |  |  |
| CEP.ELE.F.10110 |  | Fabbricazione UPS |  | 90d | CEP.ELE.T.10110, CEP.ELE.D.10020, CEP.ELE.T.10130 | 374d | 0d |  | CX1260 | 0 | ELE | SUP | CAR | P7 |  |  |
| CEP.ELE.F.10120 |  | FAT UPS |  | 10d | CEP.ELE.F.10110 | 374d | 0d |  | CX1260 | 0 | ELE | SUP | CAR | P7 |  |  |
|  | 5 | **Packaging e trasporto in sito** |  |  |  |  |  |  |  |  |  |  |  |  |  |  |
| CEP.ELE.S.10010 |  | Imballaggio UPS |  | 5d | CEP.ELE.F.10120, CEP.ELE.D.10120 FF | 378d | 0d |  | CX1260 | 0 | ELE | SUP | CAR | P7 |  |  |
| CEP.ELE.S.10020 |  | Trasporto in sito UPS |  | 5d | CEP.ELE.S.10010 | 378d | 0d |  | CX1260 | 0 | ELE | SUP | CAR | P7 |  |  |
|  | 6 | **Documentazione fine fabbricazione** |  |  |  |  |  |  |  |  |  |  |  |  |  |  |
| CEP.ELE.D.10110 |  | Dossier di fine fabbricazione UPS |  | 20d | CEP.ELE.F.10120 | 306d | 0d | 5D 8h ITA H + 2W 2036 | CX1260 | 0 | ELE | SUP | CAR | P7 |  |  |
| CEP.ELE.D.10120 |  | Approvazione del Dossier di fine fabbricazione UPS |  | 10d | CEP.ELE.T.10130, CEP.ELE.D.10110 | 306d | 0d | 5D 8h ITA H + 2W 2036 | CX1260 | 0 | ELE | SUP | SOGIN | P7 |  |  |
| CEP.ELE.D.101300 |  | Completamento fornitura UPS | milestone | 0d | CEP.ELE.D.10120 | 383d | 5d |  | CX1260 | 0 | ELE | SUP | CAR | P7 |  |  |
|  | 4 | **Approvvigionamento bulk elettrico (cavi, passerelle, conduit...)** |  |  |  |  |  |  |  |  |  |  |  |  |  |  |
| CEP.ELE.F.30010 |  | Fornitura vie cavi di dorsale |  | 150d | CEP.ELE.O.00020 | 549d | 193d |  | CX1180 | 0 | ELE | SUP | CAR | P7 |  |  |
| CEP.ELE.F.30020 |  | Cavi elettrici distribuzione |  | 45d | CEP.ELE.O.00020 | 714d | 333d |  | CX1180 | 0 | ELE | SUP | CAR | P7 |  |  |
| CEP.ELE.F.30030 |  | Punti di alimentazione e di comando |  | 45d | CEP.ELE.O.00020 | 774d | 314d |  | CX1180 | 0 | ELE | SUP | CAR | P7 |  |  |
| CEP.ELE.F.30040 |  | Componenti impianto LPS e terra |  | 60d | CEP.ELE.O.00020 | 946d | 559d |  | CX1180 | 0 | ELE | SUP | CAR | P7 |  |  |
| CEP.ELE.F.30050 |  | Corpi illuminanti |  | 60d | CEP.ELE.O.00020 | 789d | 304d |  | CX1180 | 0 | ELE | SUP | CAR | P7 |  |  |
| CEP.ELE.F.30060 |  | Accessori per collegamento cavi |  | 60d | CEP.ELE.O.00020 | 824d | 318d |  | CX1180 | 0 | ELE | SUP | CAR | P7 |  |  |
|  | 16 | **Realizzazione Sistema di Automazione (quadri, consolle di comando, strumentazione, cavi, etc)** |  |  |  |  |  |  |  |  |  |  |  |  |  |  |
| CEP.I&C.M.10010 |  | Disponibilità Sistema automazione e controllo in sito | milestone | 0d | CEP.I&C.S.00020 FF | 366d | 0d |  | CX1270 | 0 | I&C | SUP | ANN | P6 | 83A |  |
|  | 5 | **Quadri quota 0.00m** |  |  |  |  |  |  |  |  |  |  |  |  |  |  |
| CED.I&C.Q.8060 |  | Quadri automazione e controllo HVAC I/O 83A-SK003C |  | 240d | CEP.ELE.D.00010 | 568d | 0d |  | CX1840 | 87 | I&C |  | DEM | P6 | 83A | MOD |
| CED.I&C.Q.8070 |  | Quadri automazione e controllo HVAC I/O 83A-SK002B |  | 240d | CED.I&C.Q.8060 SS | 568d | 0d |  | CX1840 | 87 | I&C |  | DEM | P6 | 83A | MOD |
| CED.I&C.Q.8080 |  | Quadri automazione e controllo HVAC CPU 83A-SK001A |  | 240d | CED.I&C.Q.8070 SS | 568d | 0d |  | CX1840 | 87 | I&C |  | DEM | P6 | 83A | MOD |
|  | 1 | **Ordine per Sistema di Automazione e Controllo** |  |  |  |  |  |  |  |  |  |  |  |  |  |  |
| CEP.I&C.O.00010 |  | Specifica d'Acquisto Sistema di Automazione e Controllo |  | 30d | CEM.ENG.I.00040 | 308d | 0d | 5D 8h ITA H + 2W 2036 | CX1270 | 0 | I&C | SUP | ANN | P6 | 83A |  |
| CEP.I&C.O.00020 |  | Ordine Sistema di Automazione e Controllo |  | 40d | CEP.I&C.O.00010 | 308d | 0d | 5D 8h ITA H + 2W 2036 | CX1270 | 0 | I&C | SUP | ANN | P6 | 83A |  |

| ID | WBS | Activity | Duration | Predecessors | Total float | Free float | Calendar | CEMEX 2025 - Activity code Sogin | CEMEX LOCALE | CEMEX DISCIPLINE | CEMEX ACTIVITY TYPE | CEMEX RESPONSABILITY | CEMEX PARTITE | CEMEX SISTEMI |
| --- | --- | --- | --- | --- | --- | --- | --- | --- | --- | --- | --- | --- | --- | --- |
|  | 2 | **Fabbricazione Sistema di Automazione e Controllo** |  |  |  |  |  |  |  |  |  |  |  |  |
|  | 1 | **Progettazione di dettaglio** |  |  |  |  |  |  |  |  |  |  |  |  |
| CEP.I&C.D.00010 |  | Progettazione di dettaglio hardware | 40d | CEP.I&C.O.00020 | 414d | 0d | 5D 8h ITA H + 2W 2036 | CX1270 | 0 | I&C | SUP | ANN | P6 | 83A |
| CEP.I&C.D.00020 |  | Approvazione della Progettazione di dettaglio hardware | 20d | CEP.I&C.D.00010 | 541d | 0d | 5D 8h ITA H + 2W 2036 | CX1270 | 0 | I&C | SUP | SOGIN | P6 | 83A |
| CEP.I&C.D.00030 |  | Studi SIL, FMECA, CYBERSECURITY | 40d | CEP.I&C.O.00020 | 399d | 0d | 5D 8h ITA H + 2W 2036 | CX1270 | 0 | I&C | SUP | ANN | P6 | 83A |
| CEP.I&C.D.00040 |  | Approvazione Studi SIL, FMECA, CYBERSECURITY | 20d | CEP.I&C.D.00030 | 399d | 96d | 5D 8h ITA H + 2W 2036 | CX1270 | 0 | I&C | SUP | SOGIN | P6 | 83A |
|  | 2 | **Qualifiche** |  |  |  |  |  |  |  |  |  |  |  |  |
| CEP.I&C.T.00010 |  | Piano di qualifica | 10d | CEP.I&C.O.00020 | 377d | 0d |  | CX1270 | 0 | I&C | SUP | ANN | P6 | 83A |
| CEP.I&C.T.00020 |  | Approvazione del Piano di qualifica | 20d | CEP.I&C.T.00010 | 308d | 0d | 5D 8h ITA H + 2W 2036 | CX1270 | 0 | I&C | SUP | SOGIN | P6 | 83A |
| CEP.I&C.T.00040 |  | Realizzazione prototipi | 55d | CEP.I&C.T.00020 | 377d | 0d |  | CX1270 | 0 | I&C | SUP | ANN | P6 | 83A |
| CEP.I&C.T.00060 |  | Test sismico | 5d | CEP.I&C.T.00040 | 377d | 0d |  | CX1270 | 0 | I&C | TEST | ANN | P6 | 83A |
| CEP.I&C.T.00080 |  | Test Report | 10d | CEP.I&C.T.00060 | 377d | 0d |  | CX1270 | 0 | I&C | SUP | ANN | P6 | 83A |
| CEP.I&C.T.00090 |  | Approvazione del Test Report | 20d | CEP.I&C.T.00080 | 304d | 0d | 5D 8h ITA H + 2W 2036 | CX1270 | 0 | I&C | SUP | SOGIN | P6 | 83A |
|  | 3 | **Materiali** |  |  |  |  |  |  |  |  |  |  |  |  |
| CEP.I&C.M.00010 |  | Approvvigionamento materiali | 60d | CEP.I&C.T.00090 | 371d | 0d |  | CX1270 | 0 | I&C | SUP | ANN | P6 | 83A |
|  | 4 | **Fabbricazione** |  |  |  |  |  |  |  |  |  |  |  |  |
| CEP.I&C.F.00010 |  | Sviluppo del Software e Documentazione software in accordo agli standard IEC | 140d | CEP.I&C.O.00020, CEP.I&C.D.00010 | 511d | 0d |  | CX1270 | 0 | I&C | SUP | ANN | P6 | 83A |
| CEP.I&C.F.00020 |  | Approvazione Documentazione software | 20d | CEP.I&C.F.00010 | 420d | 118d | 5D 8h ITA H + 2W 2036 | CX1270 | 0 | I&C | SUP | SOGIN | P6 | 83A |
| CEP.I&C.F.00120 |  | Realizzazione allestimento di quadri e consolle | 160d | CEP.I&C.M.00010, CEP.I&C.D.00040 | 371d | 0d |  | CX1270 | 0 | I&C | SUP | ANN | P6 | 83A |
| CEP.I&C.F.00130 |  | Assemblaggio Sistema di Automazione e Controllo | 45d | CEP.I&C.F.00120, CEP.I&C.F.00020 | 371d | 0d |  | CX1270 | 0 | I&C | SUP | ANN | P6 | 83A |
|  | 5 | **Packaging e trasporto in sito** |  |  |  |  |  |  |  |  |  |  |  |  |
| CEP.I&C.S.00010 |  | Imballaggio automazione e controllo | 5d | CEP.I&C.F.00130, CEP.I&C.T.10090, CEP.I&C.D.10020 FF | 366d | 0d |  | CX1270 | 0 | I&C | SUP | ANN | P6 | 83A |
| CEP.I&C.S.00020 |  | Trasporto in sito | 5d | CEP.I&C.S.00010 | 366d | 0d |  | CX1270 | 0 | I&C | SUP | ANN | P6 | 83A |
|  | 6 | **Documentazione fine fabbricazione** |  |  |  |  |  |  |  |  |  |  |  |  |
| CEP.I&C.D.10010 |  | Dossier di fine fabbricazione | 5d | CEP.I&C.F.00130, CEP.I&C.T.10080, CEP.I&C.T.10090 | 301d | 0d | 5D 8h ITA H + 2W 2036 | CX1270 | 0 | I&C | SUP | ANN | P6 | 83A |
| CEP.I&C.D.10020 |  | Approvazione del Dossier di fine fabbricazione | 10d | CEP.I&C.D.10010 | 301d | 0d | 5D 8h ITA H + 2W 2036 | CX1270 | 0 | I&C | SUP | SOGIN | P6 | 83A |

Notes:
- CEP.I&C.D.00010: Note: ^
- CEP.I&C.D.00020: Note: ^
- CEP.I&C.D.00030: Note: ^
- CEP.I&C.D.00040: Note: ^
- CEP.I&C.T.00010: Note: ^
- CEP.I&C.T.00020: Note: ^
- CEP.I&C.T.00040: Note: stimato 2023, ridotto per eliminare dal percorso critico -20 gg
- CEP.I&C.T.00060: Note: ^
- CEP.I&C.T.00080: Note: ^
- CEP.I&C.T.00090: Note: ^
- CEP.I&C.M.00010: Note: ^
- CEP.I&C.F.00010: Note: Accorpiamo in un unica attività??
- CEP.I&C.F.00020: Note: Accorpiamo in un unica attività??
- CEP.I&C.F.00120: Note: Accorpiamo in un unica attività?? STIMA ABB 2023 22 settimane
- CEP.I&C.F.00130: Note: Accorpiamo in un unica attività?? STIMA ABB 2023 22 settimane
- CEP.I&C.S.00010: Note: ^
- CEP.I&C.S.00020: Note: ^
- CEP.I&C.D.10010: Note: ^
- CEP.I&C.D.10020: Note: ^

| ID | WBS | Activity | Type | Duration | Predecessors | Total float | Free float | Calendar | Note | CEMEX 2025 - Activity code Sogin | CEMEX LOCALE | CEMEX DISCIPLINE | CEMEX ACTIVITY TYPE | CEMEX RESPONSABILITY | CEMEX PARTITE | CEMEX SISTEMI |
| --- | --- | --- | --- | --- | --- | --- | --- | --- | --- | --- | --- | --- | --- | --- | --- | --- |
|  | 3 | **Intagrated Factory Accptance Test** |  |  |  |  |  |  |  |  |  |  |  |  |  |  |
| CEP.I&C.T.10010 |  | Procedura FAT Integrati |  | 10d | CEP.I&C.T.00020 | 702d | 0d |  | ^ | CX1270 | 0 | I&C | SUP | ANN | P6 | 83A |
| CEP.I&C.T.10020 |  | Approvazione del Piano di qualifica FAT Integrati |  | 20d | CEP.I&C.T.10010 | 570d | 270d | 5D 8h ITA H + 2W 2036 | ^ | CX1270 | 0 | I&C | SUP | SOGIN | P6 | 83A |
| CEP.I&C.T.10060 |  | FAT Integrati |  | 5d | CEP.I&C.T.10020, CEP.I&C.F.00130 | 371d | 0d |  | ^ | CX1270 | 0 | I&C | SUP | ANN | P6 | 83A |
| CEP.I&C.T.10080 |  | Test Report FAT Integrati |  | 10d | CEP.I&C.T.10060 | 371d | 0d |  | ^ | CX1270 | 0 | I&C | SUP | ANN | P6 | 83A |
| CEP.I&C.T.10090 |  | Approvazione del Test Report FAT Integrati |  | 20d | CEP.I&C.T.10080 | 301d | 0d | 5D 8h ITA H + 2W 2036 | ^ | CX1270 | 0 | I&C | SUP | SOGIN | P6 | 83A |
|  | 4 | **Approvvigionamento bulk automazione** |  |  |  |  |  |  |  |  |  |  |  |  |  |  |
| CEP.I&C.F.00030 |  | Vie cavi e cavi di strumentazione |  | 100d | CEP.I&C.O.00020, CEP.I&C.D.00020 | 668d | 575d |  | ^ | CX1270 | 0 | I&C | SUP | ANN | P6 | 83A |
|  | 17 | **Realizzazione sistema di monitoraggio radiologico** |  |  |  |  |  |  |  |  |  |  |  |  |  |  |
| CEP.RAD.M.20010 |  | Disponibilità Sistema di monitoraggio radiologico in sito | milestone | 0d | CEP.RAD.S.00020 FF, CEP.RAD.D.10020 | 572d | 0d |  |  | CX1280 | 0 | RAD | SUP | ANN | P9 | 86C |
|  | 1 | **Ordine per Sistema di Monitoraggio Radiologico** |  |  |  |  |  |  |  |  |  |  |  |  |  |  |
| CEP.RAD.O.00010 |  | Specifica d'Acquisto Sistema di Monitoraggio Radiologico |  | 60d | CEM.ENG.I.00040 | 465d | 0d | 5D 8h ITA H + 2W 2036 | Stimato 2023 con mail Botta | CX1280 | 0 | RAD | SUP | ANN | P9 | 86C |
| CEP.RAD.O.00020 |  | Ordine Sistema di Monitoraggio Radiologico |  | 40d | CEP.RAD.O.00010 | 465d | 0d | 5D 8h ITA H + 2W 2036 | Stimato 2023 con mail Botta | CX1280 | 0 | RAD | SUP | ANN | P9 | 86C |
|  | 4 | **Progettazione di dettaglio** |  |  |  |  |  |  |  |  |  |  |  |  |  |  |
|  | 5 | **Qualifiche** |  |  |  |  |  |  |  |  |  |  |  |  |  |  |
| CEP.RAD.T.00010 |  | Piano di qualifica |  | 20d | CEP.RAD.O.00020 | 572d | 0d |  | Stimato 2023 con mail Botta | CX1280 | 0 | RAD | SUP | ANN | P9 | 86C |
| CEP.RAD.T.00020 |  | Approvazione del Piano di qualifica |  | 20d | CEP.RAD.T.00010 | 466d | 0d | 5D 8h ITA H + 2W 2036 | Stimato 2023 con mail Botta | CX1280 | 0 | RAD | SUP | SOGIN | P9 |  |
| CEP.RAD.T.00030 |  | Realizzazione prototipi |  | 90d | CEP.RAD.T.00020 | 573d | 0d |  | Stimato 2023 con mail Botta | CX1280 | 0 | RAD |  | ANN | P9 | 86C |
| CEP.RAD.T.00060 |  | Test ambientale/sismico |  | 20d | CEP.RAD.T.00020, CEP.RAD.T.00030 | 573d | 0d |  | Stimato 2023 con mail Botta | CX1280 | 0 | RAD | TEST | ANN | P9 | 86C |
| CEP.RAD.T.00080 |  | Test Report |  | 20d | CEP.RAD.T.00060 | 573d | 0d |  | Stimato 2023 con mail Botta | CX1280 | 0 | RAD | SUP | ANN | P9 | 86C |
| CEP.RAD.T.00090 |  | Approvazione del Test Report |  | 20d | CEP.RAD.T.00080 | 468d | 0d | 5D 8h ITA H + 2W 2036 | Stimato 2023 con mail Botta | CX1280 | 0 | RAD | SUP | SOGIN | P9 |  |
|  | 6 | **Materiali** |  |  |  |  |  |  |  |  |  |  |  |  |  |  |
| CEP.RAD.M.00010 |  | Approvvigionamento materiali |  | 130d | CEP.RAD.T.00090 | 573d | 0d |  | Stimato 2023 con mail Botta | CX1280 | 0 | RAD | SUP | ANN | P9 | 86C |
|  | 3 | **Fabbricazione Sistema di Monitoraggio Radiologico** |  |  |  |  |  |  |  |  |  |  |  |  |  |  |
| CEP.RAD.F.00030 |  | Realizzazione apparecchiature |  | 130d | CEP.RAD.O.00020, CEP.RAD.M.00010 SS+20d | 573d | 0d |  | Stimato 2023 con mail Botta | CX1280 | 0 | RAD | SUP | ANN | P9 | 86C |
| CEP.RAD.F.00110 |  | Test interni ed esterni |  | 50d | CEP.RAD.M.00010, CEP.RAD.F.00030, CEP.RAD.M.00010 SS | 573d | 0d |  | Stimato 2023 con mail Botta | CX1280 | 0 | RAD | SUP | ANN | P9 | 86C |
| CEP.RAD.F.00120 |  | FAT radiologico |  | 20d | CEP.RAD.F.00110 | 573d | 1d |  | Stimato 2023 con mail Botta | CX1280 | 0 | RAD | SUP | ANN | P9 | 86C |

| ID | WBS | Activity | Type | Duration | Predecessors | Total float | Free float | Calendar | CEMEX 2025 - Activity code Sogin | CEMEX LOCALE | CEMEX DISCIPLINE | CEMEX ACTIVITY TYPE | CEMEX RESPONSABILITY | CEMEX PARTITE | CEMEX SISTEMI | Note |
| --- | --- | --- | --- | --- | --- | --- | --- | --- | --- | --- | --- | --- | --- | --- | --- | --- |
|  | 7 | **Packaging e trasporto in sito** |  |  |  |  |  |  |  |  |  |  |  |  |  |  |
| CEP.RAD.S.00010 |  | Imballaggio radiologico |  | 5d | CEP.RAD.F.00110, CEP.RAD.F.00120, CEP.RAD.D.10020 FF | 572d | 0d |  | CX1280 | 0 | RAD | SUP | ANN | P9 | 86C |  |
| CEP.RAD.S.00020 |  | Trasporto in sito |  | 5d | CEP.RAD.S.00010 | 572d | 0d |  | CX1280 | 0 | RAD | SUP | ANN | P9 | 86C |  |
|  | 8 | **Documentazione fine fabbricazione** |  |  |  |  |  |  |  |  |  |  |  |  |  |  |
| CEP.RAD.D.10010 |  | Dossier di fine fabbricazione |  | 5d | CEP.RAD.F.00110, CEP.RAD.F.00120 | 467d | 0d | 5D 8h ITA H + 2W 2036 | CX1280 | 0 | RAD | SUP | ANN | P9 | 86C |  |
| CEP.RAD.D.10020 |  | Approvazione del Dossier di fine fabbricazione |  | 20d | CEP.RAD.T.00090, CEP.RAD.D.10010 | 467d | 0d | 5D 8h ITA H + 2W 2036 | CX1280 | 0 | RAD | SUP | SOGIN | P9 |  |  |
|  | 18 | **Realizzazione Sistema integrato di telecomunicazione** |  |  |  |  |  |  |  |  |  |  |  |  |  |  |
| CEP.ELE.M.40010 |  | Disponibilità Sistema integrato di telecomunicazione in sito | milestone | 0d | CEP.ELE.S.40210 FF, CEP.ELE.S.40110 FF, CEP.ELE.D.40040 | 616d | 118d |  | CX1290 | 0 | ELE | SUP | CAR | P10 |  |  |
|  | 1 | **Ordine per Sistema integrato di telecomunicazione** |  |  |  |  |  |  |  |  |  |  |  |  |  |  |
| CEP.ELE.O.40010 |  | Specifiche d'Acquisto Sistema integrato di telecomunicazione |  | 60d | CEM.ENG.I.00040 FS+22d | 504d | 0d | 5D 8h ITA H + 2W 2036 | CX1290 | 0 | ELE | SUP | CAR | P10 |  |  |
| CEP.ELE.O.40020 |  | Ordini per Sistema integrato di telecomunicazione |  | 40d | CEP.ELE.O.40010 | 504d | 0d | 5D 8h ITA H + 2W 2036 | CX1290 | 0 | ELE | SUP | CAR | P10 |  |  |
|  | 2 | **Qualifiche** |  |  |  |  |  |  |  |  |  |  |  |  |  |  |
| CEP.ELE.T.40010 |  | Programma di qualifica sismica ed ambientale TVCC |  | 25d | CEP.ELE.O.40020 | 617d | 0d |  | CX1290 | 0 | ELE | SUP | CAR | P10 |  | stima 2023 da mail maccio |
| CEP.ELE.T.40012 |  | Specifica di qualifica sismica ed ambientale TVCC |  | 60d | CEP.ELE.T.40010 | 503d | 0d | 5D 8h ITA H + 2W 2036 | CX1290 | 0 | ELE | SUP | CAR | P10 |  | stima 2023 da mail maccio |
| CEP.ELE.T.40015 |  | Protocollo di piano e procedura di qualifica sismica ed ambientale TVCC |  | 20d | CEP.ELE.T.40012 | 616d | 1d |  | CX1290 | 0 | ELE | SUP | CAR | P10 |  | stima 2023 da mail maccio |
| CEP.ELE.T.40020 |  | Approvazione del Piano di qualifica TVCC |  | 20d | CEP.ELE.T.40015 | 503d | 0d | 5D 8h ITA H + 2W 2036 | CX1290 | 0 | ELE | SUP | SOGIN | P10 |  | stima 2023 da mail maccio |
| CEP.ELE.T.40030 |  | Approvvigionamento apparecchiature da qualificare |  | 40d | CEP.ELE.T.40020 | 503d | 0d | 5D 8h ITA H + 2W 2036 | CX1290 | 0 |  |  | CAR | P10 |  | stima 2023 da mail maccio |
| CEP.ELE.T.40040 |  | Test ambientale/sismico TVCC |  | 5d | CEP.ELE.T.40020, CEP.ELE.T.40030 | 615d | 0d |  | CX1290 | 0 | ELE | TEST | CAR | P10 |  | verifica per ambientale, stima 2023 da mail maccio |
| CEP.ELE.T.40050 |  | Test Report TVCC |  | 10d | CEP.ELE.T.40040 | 615d | 0d |  | CX1290 | 0 | ELE | SUP | CAR | P10 |  | stima 2023 da mail maccio |
| CEP.ELE.T.40060 |  | Approvazione del Test Report TVCC |  | 20d | CEP.ELE.T.40050 | 503d | 0d | 5D 8h ITA H + 2W 2036 | CX1290 | 0 | ELE | SUP | SOGIN | P10 |  | stima 2023 da mail maccio |
|  | 4 | **Fabbricazione TVCC che richiede qualifica sismica** |  |  |  |  |  |  |  |  |  |  |  |  |  |  |
| CEP.ELE.F.40110 |  | Fabbricazione TVCC (qualificati) |  | 80d | CEP.ELE.T.40060 | 616d | 1d |  | CX1290 | 0 | ELE | SUP | CAR | P10 |  | Stima fatta con durata totale |
|  | 3 | **Fabbricazione TVCC che non richiede qualifica sismica** |  |  |  |  |  |  |  |  |  |  |  |  |  |  |
| CEP.ELE.F.40210 |  | Fabbricazione TVCC |  | 60d | CEP.ELE.O.40020 | 878d | 0d |  | CX1290 | 0 | ELE | SUP | CAR | P10 |  | Stima fatta con durata totale |

| ID | WBS | Activity | Type | Duration | Predecessors | Total float | Free float | Calendar | CEMEX 2025 - Activity code Sogin | CEMEX LOCALE | CEMEX DISCIPLINE | CEMEX ACTIVITY TYPE | CEMEX RESPONSABILITY | CEMEX PARTITE | Note | CEMEX SISTEMI | simo provv | CEMEX REVISIONE |
| --- | --- | --- | --- | --- | --- | --- | --- | --- | --- | --- | --- | --- | --- | --- | --- | --- | --- | --- |
|  | 5 | **Packaging e trasporto in sito** |  |  |  |  |  |  |  |  |  |  |  |  |  |  |  |  |
| CEP.ELE.S.40110 |  | Imballaggio e trasporto in sito TVCC (qualificati) |  | 10d | CEP.ELE.F.40110, CEP.ELE.D.40040 FF | 616d | 0d |  | CX1290 | 0 | ELE | SUP | CAR | P10 |  |  |  |  |
| CEP.ELE.S.40210 |  | Imballaggio e trasporto in sito TVCC |  | 10d | CEP.ELE.F.40210 | 878d | 262d |  | CX1290 | 0 | ELE | SUP | CAR | P10 |  |  |  |  |
|  | 8 | **Documentazione fine fabbricazione** |  |  |  |  |  |  |  |  |  |  |  |  |  |  |  |  |
| CEP.ELE.D.40030 |  | Dossier di fine fabbricazione |  | 5d | CEP.ELE.F.40110 | 503d | 0d | 5D 8h ITA H + 2W 2036 | CX1290 | 0 | ELE | SUP | CAR | P10 |  |  |  |  |
| CEP.ELE.D.40040 |  | Approvazione del Dossier di fine fabbricazione |  | 10d | CEP.ELE.D.40030 | 503d | 0d | 5D 8h ITA H + 2W 2036 | CX1290 | 0 | ELE | SUP | SOGIN | P10 |  |  |  |  |
|  | 2 | **Realizzazione Sistema di rivelazione incendio** |  |  |  |  |  |  |  |  |  |  |  |  |  |  |  |  |
| CEP.RAD.M.20020 |  | Disponibilità Sistema di rilevazione incendio | milestone | 0d | CEP.ELE.S.40220 FF | 841d | 688d |  | CX1290 | 0 | RAD | SUP | CAR | P8 |  |  |  |  |
|  | 1 | **Ordine per Sistema di rivelazione incendio** |  |  |  |  |  |  |  |  |  |  |  |  |  |  |  |  |
| CEP.ELE.O.40030 |  | Specifiche d'Acquisto Sistema di rilevazione incendio |  | 60d | CEM.ENG.I.00040 | 690d | 0d | 5D 8h ITA H + 2W 2036 | CX1290 | 0 | ELE | SUP | CAR | P8 | aggiunto |  |  |  |
| CEP.ELE.O.40040 |  | Ordini per Sistema di rilevazione incendio |  | 30d | CEP.ELE.O.40030 | 690d | 0d | 5D 8h ITA H + 2W 2036 | CX1290 | 0 | ELE | SUP | CAR | P8 | diminuito di 10d |  |  |  |
|  | 3 | **Fabbricazione Sistema di rilevazione incendio** |  |  |  |  |  |  |  |  |  |  |  |  |  |  |  |  |
| CEP.ELE.F.40220 |  | Fabbricazione Sistema di rilevazione incendio |  | 50d | CEP.ELE.O.40040 | 847d | 0d |  | CX1290 | 0 | ELE | SUP | CAR | P8 | aumentato di 20d |  |  |  |
| CEP.ELE.F.40230 |  | FAT Sistema di rilevazione incendio |  | 30d | CEP.ELE.F.40220 | 847d | 0d |  | CX1290 | 0 | ELE | SUP | CAR | P8 | aggiunto |  |  |  |
|  | 5 | **Packaging e trasporto in sito** |  |  |  |  |  |  |  |  |  |  |  |  |  |  |  |  |
| CEP.ELE.S.40220 |  | Imballaggio e trasporto in sito Sistema di rilevazione incendio |  | 10d | CEP.ELE.D.101320 FF | 841d | 0d |  | CX1290 | 0 | ELE | SUP | CAR | P8 | aggiunto |  |  |  |
|  | 8 | **Documentazione fine fabbricazione** |  |  |  |  |  |  |  |  |  |  |  |  |  |  |  |  |
| CEP.ELE.D.101310 |  | Dossier di fine fabbricazione |  | 15d | CEP.ELE.F.40230 | 690d | 0d | 5D 8h ITA H + 2W 2036 | CX1290 | 0 | ELE | SUP | CAR | P8 | aumentato di 10d |  |  |  |
| CEP.ELE.D.101320 |  | Approvazione del Dossier di fine fabbricazione |  | 10d | CEP.ELE.D.101310 | 690d | 0d | 5D 8h ITA H + 2W 2036 | CX1290 | 0 | ELE | SUP | SOGIN | P8 | aggiunto |  |  |  |
|  | 21 | **Realizzazione strumentazione e sistema di misura a gorgogliamento** |  |  |  |  |  |  |  |  |  |  |  |  |  |  |  |  |
| CEP.ELE.M.20010 |  | Disponibilità Strumentazione in sito | milestone | 0d | CEP.ELE.S.20010 FF, CEP.ELE.S.40230 FF | 533d | 493d |  | CX1270 | 0 | ELE | SUP | A/D | P11 | da controllare legami | 0 |  |  |
| CEP.ELE.M.40020 |  | Disponibilità Rack in sito | milestone | 0d | CEP.ELE.S.20110 FF | 430d | 390d |  | CX1270 | 0 | ELE | SUP | A/D | P11 | da controllare legami | 0 |  |  |
| CEP.ELE.M.40030 |  | Disponibilità Strumentazione che non richiede qualifica in sito | milestone | 0d | CEP.ELE.S.20210 FF, CEP.ELE.S.40250 FF | 630d | 590d |  | CX1270 | 0 | ELE | SUP | A/D | P11 | da controllare legami | 0 |  |  |
|  | 1 | **Ordine per Strumentazione e sistema di misura a gorgogliamento** |  |  |  |  |  |  |  |  |  |  |  |  |  |  |  |  |
| CEP.ELE.O.20010 |  | Specifiche d'Acquisto Strumentazione 51A 51C 51D 56A 57A 67A 81A |  | 60d | CEM.ENG.I.00040 | 377d | 0d | 5D 8h ITA H + 2W 2036 | CX1270 | 0 | ELE | SUP | ANN | P11 |  | 0 | x |  |
| CEP.ELE.O.20015 |  | Specifiche d'Acquisto Strumentazione resto (52A-52B-54A-54B-55-91A-91F-91H-92A-94A-94B-94C-94D-95A-96A) |  | 60d | CEM.ENG.I.00040 | 433d | 0d | 5D 8h ITA H + 2W 2036 | CX1270 | 0 | ELE | SUP | DEM | P11 | aggiunto |  | x | MOD |
| CEP.ELE.O.20020 |  | Ordini per Strumentazione 51A 51C 51D 56A 57A 67A 81A |  | 40d | CEP.ELE.O.20010 | 377d | 0d | 5D 8h ITA H + 2W 2036 | CX1270 | 0 | ELE | SUP | ANN | P11 |  | 0 | x |  |
| CEP.ELE.O.20025 |  | Ordini per Strumentazione resto (52A-52B-54A-54B-55-91A-91F-91H-92A-94A-94B-94C-94D-95A-96A) |  | 60d | CEP.ELE.O.20015 | 433d | 0d | 5D 8h ITA H + 2W 2036 | CX1270 | 0 | ELE | SUP | DEM | P11 | aggiunto |  | x | MOD |
| CEP.ELE.O.20030 |  | Specifiche d'Acquisto Rack 51A 51C 51D 56A 57A 67A 81A |  | 60d | CEM.ENG.I.00040 | 347d | 0d | 5D 8h ITA H + 2W 2036 | CX1270 | 0 | ELE | SUP | ANN | P11 |  | 0 | x |  |
| CEP.ELE.O.20040 |  | Ordini per Rack 51A 51C 51D 56A 57A 67A 81A |  | 40d | CEP.ELE.O.20030 | 347d | 0d | 5D 8h ITA H + 2W 2036 | CX1270 | 0 | ELE | SUP | ANN | P11 |  | 0 | x |  |

| ID | WBS | Activity | Duration | Predecessors | Total float | Free float | Calendar | simo provv | CEMEX 2025 - Activity code Sogin | CEMEX LOCALE | CEMEX DISCIPLINE | CEMEX ACTIVITY TYPE | CEMEX RESPONSABILITY | CEMEX PARTITE | CEMEX SISTEMI | Note | CEMEX REVISIONE |
| --- | --- | --- | --- | --- | --- | --- | --- | --- | --- | --- | --- | --- | --- | --- | --- | --- | --- |
|  | 6 | **Progettazione di dettaglio e sistema di misura a gorgogliamento** |  |  |  |  |  |  |  |  |  |  |  |  |  |  |  |
| CEP.ELE.D.20010 |  | Progettazione Costruttiva rack 51A 51C 51D 56A 57A 67A 81A | 40d | CEP.ELE.O.20040 | 353d | 0d | 5D 8h ITA H + 2W 2036 | x | CX1270 | 0 | ELE | SUP | ANN | P11 | 0 |  |  |
| CEP.ELE.D.20020 |  | Approvazione della Progettazione Costruttiva rack 51A 51C 51D 56A 57A 67A 81A | 20d | CEP.ELE.D.20010 | 353d | 0d | 5D 8h ITA H + 2W 2036 | x | CX1270 | 0 | ELE | SUP | SOGIN | P11 |  |  |  |
|  | 2 | **Qualifiche Strumentazione e sistema di misura a gorgogliamento** |  |  |  |  |  |  |  |  |  |  |  |  |  |  |  |
| CEP.ELE.T.20010 |  | Piano di qualifica Strumentazione e Rack 51A 51C 51D 56A 57A 67A 81A | 20d | CEP.ELE.O.20040, CEP.ELE.O.20020 | 465d | 0d |  | x | CX1270 | 0 | ELE | SUP | ANN | P11 | 0 |  |  |
| CEP.ELE.T.20020 |  | Approvazione del Piano di qualifica Strumentazione e Rack 51A 51C 51D 56A 57A 67A 81A | 20d | CEP.ELE.T.20010 | 377d | 30d | 5D 8h ITA H + 2W 2036 | x | CX1270 | 0 | ELE | SUP | SOGIN | P11 |  |  |  |
| CEP.ELE.T.20025 |  | Approvigionamento materiali per realizzazione prototipi 51A 51C 51D 56A 57A 67A 81A | 80d | CEP.ELE.O.20040 | 429d | 0d |  |  | CX1270 | 0 | ELE |  | ANN | P11 | 0 |  |  |
| CEP.ELE.T.20030 |  | Realizzazione prototipi Strumentazione e Rack 51A 51C 51D 56A 57A 67A 81A | 22d | CEP.ELE.T.20020, CEP.ELE.T.20025, CEP.ELE.D.20020 | 429d | 0d |  | x | CX1270 | 0 | ELE | SUP | ANN | P11 | 0 | Stima da offerta 2023 (mail precision fluid) |  |
| CEP.ELE.T.20040 |  | Test ambientale/sismico Strumentazione e Rack 51A 51C 51D 56A 57A 67A 81A | 15d | CEP.ELE.T.20030 | 429d | 0d |  | x | CX1270 | 0 | ELE | TEST | ANN | P11 | 0 |  |  |
| CEP.ELE.T.20050 |  | Test Report Strumentazione e Rack 51A 51C 51D 56A 57A 67A 81A | 10d | CEP.ELE.T.20040 | 429d | 0d |  | x | CX1270 | 0 | ELE | SUP | ANN | P11 | 0 |  |  |
| CEP.ELE.T.20060 |  | Approvazione del Test Report Strumentazione e Rack 51A 51C 51D 56A 57A 67A 81A | 20d | CEP.ELE.T.20050 | 352d | 0d | 5D 8h ITA H + 2W 2036 | x | CX1270 | 0 | ELE | SUP | SOGIN | P11 |  |  |  |
| CEP.ELE.T.40070 |  | Piano di qualifica Strumentazione resto (52A-52B-54A-54B-55-91A-91F-91H-92A-94A-94B-94C-94D-95A-96A) | 10d | CEP.ELE.O.20025 | 533d | 0d |  | x | CX1270 | 0 | ELE | SUP | DEM | P11 |  | aggiunto | MOD |
| CEP.ELE.T.40080 |  | Approvazione del Piano di qualifica Strumentazione resto | 20d | CEP.ELE.T.40070 | 433d | 0d | 5D 8h ITA H + 2W 2036 | x | CX1270 | 0 | ELE | SUP | SOGIN | P11 |  | aggiunto |  |
| CEP.ELE.T.40100 |  | Realizzazione prototipi Strumentazione resto (52A-52B-54A-54B-55-91A-91F-91H-92A-94A-94B-94C-94D-95A-96A) | 20d | CEP.ELE.T.40080 | 533d | 0d |  | x | CX1270 | 0 | ELE | SUP | DEM | P11 |  | aggiunto | MOD |
| CEP.ELE.T.40110 |  | Test ambientale/sismico Strumentazione resto (52A-52B-54A-54B-55-91A-91F-91H-92A-94A-94B-94C-94D-95A-96A) | 10d | CEP.ELE.T.40100 | 533d | 0d |  | x | CX1270 | 0 | ELE | TEST | DEM | P11 |  | aggiunto | MOD |
| CEP.ELE.T.40120 |  | Test Report Strumentazione resto (52A-52B-54A-54B-55-91A-91F-91H-92A-94A-94B-94C-94D-95A-96A) | 10d | CEP.ELE.T.40110 | 533d | 0d |  | x | CX1270 | 0 | ELE | SUP | DEM | P11 |  | aggiunto | MOD |
| CEP.ELE.T.40130 |  | Approvazione del Test Report Strumentazione resto | 20d | CEP.ELE.T.40120 | 439d | 0d | 5D 8h ITA H + 2W 2036 | x | CX1270 | 0 | ELE | SUP | SOGIN | P11 |  | aggiunto |  |
|  | 4 | **Fabbricazione Strumentazione e sistema di misura a gorgogliamento** |  |  |  |  |  |  |  |  |  |  |  |  |  |  |  |
| CEP.ELE.F.20010 |  | Fabbricazione Strumentazione con qualifica sismica 51A 51C 51D 56A 57A 67A 81A | 60d | CEP.ELE.T.20060 | 560d | 0d |  | x | CX1270 | 0 | ELE | SUP | ANN | P11 | 0 | Stima fatta con durata totale |  |
| CEP.ELE.F.20110 |  | Fabbricazione Rack 51A 51C 51D 56A 57A 67A 81A | 185d | CEP.ELE.T.20060 | 430d | 0d |  | x | CX1270 | 0 | ELE | SUP | ANN | P11 | 0 | Stima da offerta 2023 (dava 9 mesi totali) |  |
| CEP.ELE.F.20120 |  | FAT Rack 51A 51C 51D 56A 57A 67A 81A | 5d | CEP.ELE.F.20110 | 430d | 0d |  |  | CX1270 | 0 | ELE | SUP | ANN | P11 | 0 | Stima da offerta 2023 |  |
| CEP.ELE.F.20210 |  | Fabbricazione Strumentazione senza qualifica sismica 51A 51C 51D 56A 57A 67A 81A | 60d | CEP.ELE.O.20020, CEP.ELE.D.20020 | 638d | 1d |  | x | CX1270 | 0 | ELE | SUP | ANN | P11 | 0 | Stima fatta con durata totale |  |
| CEP.ELE.F.40240 |  | Fabbricazione Strumentazione con qualifica sismica resto (52A-52B-54A-54B-55-91A-91F-91H-92A-94A-94B-94C-94D-95A-96A) | 120d | CEP.ELE.T.40130 | 533d | 0d |  | x | CX1270 | 0 | ELE | SUP | DEM | P11 |  | aggiunto | MOD |
| CEP.ELE.F.40270 |  | Fabbricazione Strumentazione senza qualifica sismica resto (52A-52B-54A-54B-55-91A-91F-91H-92A-94A-94B-94C-94D-95A-96A) | 120d | CEP.ELE.O.20025 | 631d | 1d |  | x | CX1270 | 0 | ELE | SUP | DEM | P11 |  | aggiunto | MOD |

| ID | WBS | Activity | Duration | Predecessors | Total float | Free float | Calendar | simo provv | CEMEX 2025 - Activity code Sogin | CEMEX LOCALE | CEMEX DISCIPLINE | CEMEX ACTIVITY TYPE | CEMEX RESPONSABILITY | CEMEX PARTITE | CEMEX SISTEMI | Note | CEMEX REVISIONE | CEMEX N° COMPONENTE |
| --- | --- | --- | --- | --- | --- | --- | --- | --- | --- | --- | --- | --- | --- | --- | --- | --- | --- | --- |
|  | 5 | **Packaging e trasporto in sito** |  |  |  |  |  |  |  |  |  |  |  |  |  |  |  |  |
| CEP.ELE.S.20010 |  | Imballaggio e trasporto in sito Strumentazione 51A 51C 51D 56A 57A 67A 81A che richiede qualifica | 10d | CEP.ELE.F.20010, CEP.ELE.D.101340 | 560d | 27d |  | x | CX1270 | 0 | ELE | SUP | ANN | P11 | 0 |  |  |  |
| CEP.ELE.S.20110 |  | Imballaggio e trasporto in sito Rack 51A 51C 51D 56A 57A 67A 81A | 10d | CEP.ELE.D.20060 | 430d | 0d |  | x | CX1270 | 0 | ELE | SUP | ANN | P11 | 0 |  |  |  |
| CEP.ELE.S.20210 |  | Imballaggio e trasporto in sito Strumentazione 51A 51C 51D 56A 57A 67A 81A che non richiede qualifica | 10d | CEP.ELE.F.20210, CEP.ELE.D.101380 | 637d | 7d |  | x | CX1270 | 0 | ELE | SUP | ANN | P11 | 0 |  |  |  |
| CEP.ELE.S.40230 |  | Imballaggio e trasporto in sito Strumentazione resto che richiede qualifica | 5d | CEP.ELE.F.40240, CEP.ELE.D.20040 | 533d | 0d |  | x | CX1270 | 0 | ELE | SUP | DEM | P11 |  | aggiunto | MOD |  |
| CEP.ELE.S.40250 |  | Imballaggio e trasporto in sito Strumentazione resto che non richiede qualifica | 5d | CEP.ELE.F.40270, CEP.ELE.D.20080 | 630d | 0d |  | x | CX1270 | 0 | ELE | SUP | DEM | P11 |  | aggiunto | MOD |  |
|  | 22 | **Documentazione fine fabbricazione** |  |  |  |  |  |  |  |  |  |  |  |  |  |  |  |  |
| CEP.ELE.D.101330 |  | Dossier di fine fabbricazione Strumentazione 51A 51C 51D 56A 57A 67A 81A che richiede qualifica | 5d | CEP.ELE.F.20010 | 457d | 0d | 5D 8h ITA H + 2W 2036 |  | CX1270 | 0 | ELE | SUP | ANN | P11 | 0 | aggiunto |  |  |
| CEP.ELE.D.101340 |  | Approvazione del Dossier di fine fabbricazione Strum. 51A 51C 51D 56A 57A 67A 81A che richiede qualifica | 20d | CEP.ELE.D.101330, CEP.ELE.T.20060 | 457d | 0d | 5D 8h ITA H + 2W 2036 |  | CX1270 | 0 | ELE | SUP | SOGIN | P11 |  | aggiunto |  |  |
| CEP.ELE.D.101370 |  | Dossier di fine fabbricazione Strumentazione 51A 51C 51D 56A 57A 67A 81A che non richiede qualifica | 5d | CEP.ELE.F.20210 | 521d | 0d | 5D 8h ITA H + 2W 2036 |  | CX1270 | 0 | ELE | SUP | ANN | P11 | 0 | aggiunto |  |  |
| CEP.ELE.D.101380 |  | Approvazione del Dossier di fine fabbricazione Strum 51A 51C 51D 56A 57A 67A 81A che non richiede qualifica | 20d | CEP.ELE.D.101370 | 521d | 0d | 5D 8h ITA H + 2W 2036 |  | CX1270 | 0 | ELE | SUP | SOGIN | P11 |  | aggiunto |  |  |
| CEP.ELE.D.20030 |  | Dossier di fine fabbricazione Strumentazione resto che richiede qualifica | 5d | CEP.ELE.F.40240 | 434d | 0d | 5D 8h ITA H + 2W 2036 |  | CX1270 | 0 | ELE | SUP | DEM | P11 |  |  | MOD |  |
| CEP.ELE.D.20040 |  | Approvazione del Dossier di fine fabbricazione Strum. resto che richiede qualifica | 20d | CEP.ELE.D.20030, CEP.ELE.T.40130 | 434d | 0d | 5D 8h ITA H + 2W 2036 |  | CX1270 | 0 | ELE | SUP | SOGIN | P11 |  |  |  |  |
| CEP.ELE.D.20050 |  | Dossier di fine fabbricazione Rack 51A 51C 51D 56A 57A 67A 81A | 5d | CEP.ELE.F.20120 | 349d | 0d | 5D 8h ITA H + 2W 2036 |  | CX1270 | 0 | ELE | SUP | ANN | P11 | 0 |  |  |  |
| CEP.ELE.D.20060 |  | Approvazione del Dossier di fine fabbricazione Rack 51A 51C 51D 56A 57A 67A 81A | 20d | CEP.ELE.D.20050, CEP.ELE.T.20060 | 349d | 0d | 5D 8h ITA H + 2W 2036 |  | CX1270 | 0 | ELE | SUP | SOGIN | P11 |  |  |  |  |
| CEP.ELE.D.20070 |  | Dossier di fine fabbricazione Strumentazione resto che non richiede qualifica | 5d | CEP.ELE.F.40270 | 515d | 0d | 5D 8h ITA H + 2W 2036 |  | CX1270 | 0 | ELE | SUP | DEM | P11 |  |  | MOD |  |
| CEP.ELE.D.20080 |  | Approvazione del Dossier di fine fabbricazione Strum resto che non richiede qualifica | 20d | CEP.ELE.D.20070 | 515d | 0d | 5D 8h ITA H + 2W 2036 |  | CX1270 | 0 | ELE | SUP | SOGIN | P11 |  |  |  |  |
|  | 20 | **Montacarichi** |  |  |  |  |  |  |  |  |  |  |  |  |  |  |  |  |
|  | 1 | **Ordine per Montacarichi** |  |  |  |  |  |  |  |  |  |  |  |  |  |  |  |  |
| CEP.ELV.O.00010 |  | Specifica d'Acquisto Montacarichi 53A-DY001 | 30d | CEM.ENG.I.00040 FS+160d | 587d | 0d | 5D 8h ITA H + 2W 2036 |  | CX1210 | 0 | ELV | SUP | ANN | P2 | 53A |  |  | 914 |
| CEP.ELV.O.00020 |  | Ordine Montacarichi 53A-DY001 | 40d | CEP.ELV.O.00010 | 587d | 0d | 5D 8h ITA H + 2W 2036 |  | CX1210 | 0 | ELV | SUP | ANN | P2 | 53A |  |  | 914 |
|  | 5 | **Progettazione di dettaglio** |  |  |  |  |  |  |  |  |  |  |  |  |  |  |  |  |
| CEP.ELV.D.00010 |  | Progettazione preliminare e ANN approval 53A-DY001 | 25d | CEP.ELV.O.00020 | 587d | 0d | 5D 8h ITA H + 2W 2036 |  | CX1210 | 0 | ELV | SUP | ANN | P2 | 53A | Stima 2023 fatta con durata totale |  |  |
| CEP.ELV.D.00030 |  | Progettazione costruttiva 53A-DY001 | 60d | CEP.ELV.D.00010 | 587d | 0d | 5D 8h ITA H + 2W 2036 |  | CX1210 | 0 | ELV | SUP | ANN | P2 | 53A | Stima 2023 fatta con durata totale |  |  |

| ID | WBS | Activity | Type | Duration | Predecessors | Total float | Free float | Calendar | CEMEX 2025 - Activity code Sogin | CEMEX LOCALE | CEMEX DISCIPLINE | CEMEX ACTIVITY TYPE | CEMEX RESPONSABILITY | CEMEX PARTITE | CEMEX SISTEMI |
| --- | --- | --- | --- | --- | --- | --- | --- | --- | --- | --- | --- | --- | --- | --- | --- |
|  | 2 | **Fabbricazione** |  |  |  |  |  |  |  |  |  |  |  |  |  |
| CEP.ELV.F.00005 |  | Approvvigionamento materiali 53A-DY001 |  | 40d | CEP.ELV.D.00030 | 717d | 0d |  | CX1210 | 0 | ELV | SUP | ANN | P2 | 53A |
| CEP.ELV.F.00010 |  | Fabbricazione e premontaggio in fabbrica per verifica di funzionalità componenti 53A-DY001 |  | 30d | CEP.ELV.F.00005 | 717d | 0d |  | CX1210 | 0 | ELV | SUP | ANN | P2 | 53A |
| CEP.ELV.F.10 |  | Collaudi in officina 53A-DY001 e approvazione |  | 10d | CEP.ELV.F.00010 | 717d | 0d |  | CX1210 | 0 | ELV | SUP | ANN | P2 | 53A |
|  | 3 | **Packaging e trasporto in sito** |  |  |  |  |  |  |  |  |  |  |  |  |  |
| CEP.ELV.S.00040 |  | Attività di trasporto in sito 53A-DY001 |  | 10d | CEP.ELV.F.10, CEP.ELV.F.00010 | 717d | 605d |  | CX1210 | 0 | ELV | SUP | ANN | P2 | 53A |
|  | 23 | **Realizzazione Componenti per il confezionamento dei manufatti (Fusti, cestelli)** |  |  |  |  |  |  |  |  |  |  |  |  |  |
|  | 3 | **Fusti ANN** |  |  |  |  |  |  |  |  |  |  |  |  |  |
| CEP.FUS.M.110 |  | Disponibilità Fusti ANN in sito 1° Lotto (incl. fusti per prove mock-up e prove non nucleari) | milestone | 0d | CEP.FUS.D.170, CEP.FUS.F.140 | 402d | 472d |  | CX1150 | 0 |  | SUP | ANN | P3 | 0 |
| CEP.FUS.M.120 |  | Disponibilità Fusti ANN in sito 2° Lotto | milestone | 0d | CEP.FUS.D.190 FF, CEP.FUS.F.170 FF | 489d | 488d |  | CX1150 | 0 |  | SUP | ANN | P3 | 0 |
|  | 1 | **Documentazione per costruzione** |  |  |  |  |  |  |  |  |  |  |  |  |  |
| CEP.FUS.D.140 |  | Disegni costruttivi di officina Fusti |  | 12d | CEM.ENG.I.00040 | 335d | 0d | 5D 8h ITA H + 2W 2036 | CX1150 | 0 |  | SUP | ANN | P3 | 0 |
| CEP.FUS.D.150 |  | Approvazione disegni costruttivi Fusti |  | 20d | CEP.FUS.D.140 | 335d | 0d | 5D 8h ITA H + 2W 2036 | CX1150 | 0 |  | SUP | SOGIN | P3 |  |
|  | 2 | **Specifiche, ordine e procurement** |  |  |  |  |  |  |  |  |  |  |  |  |  |
| CEP.FUS.A.30 |  | Specifiche di acquisto Fusti |  | 12d | CEP.FUS.D.150 | 335d | 0d | 5D 8h ITA H + 2W 2036 | CX1150 | 0 |  | SUP | ANN | P3 | 0 |
| CEP.FUS.A.40 |  | Emissione ordini di acquisto Fusti |  | 12d | CEP.FUS.A.30 | 335d | 0d | 5D 8h ITA H + 2W 2036 | CX1150 | 0 |  | SUP | ANN | P3 | 0 |
| CEP.FUS.A.50 |  | Approvvigionamento materiali per realizzazione Fusti |  | 120d | CEP.FUS.A.40 | 335d | 0d | 5D 8h ITA H + 2W 2036 | CX1150 | 0 |  | SUP | ANN | P3 | 0 |
|  | 3 | **Realizzazione** |  |  |  |  |  |  |  |  |  |  |  |  |  |
| CEP.FUS.F.130 |  | Fabbricazione in officina Fusti 1° Lotto (incl. fusti per prove mock-up e prove non nucleari) |  | 580d | CEP.FUS.A.50 SS+18d | 410d | 0d |  | CX1150 | 0 |  | SUP | ANN | P3 | 0 |
| CEP.FUS.F.140 |  | Imballaggio e consegna al sito Fusti 1° Lotto (incl. fusti per prove mock-up e prove non nucleari) |  | 120d | CEP.FUS.F.150 FF+18d | 432d | 30d |  | CX1150 | 0 |  | SUP | ANN | P3 | 0 |
| CEP.FUS.F.150 |  | FAT Fusti 1° Lotto (incl. fusti per prove mock-up e prove non nucleari) |  | 120d | CEP.FUS.F.130 FS+8d | 410d | 0d |  | CX1150 | 0 |  | SUP | ANN | P3 | 0 |
| CEP.FUS.F.160 |  | Fabbricazione in officina Fusti 2° Lotto |  | 675d | CEP.FUS.A.50 | 488d | 0d |  | CX1150 | 0 |  | SUP | ANN | P3 | 0 |
| CEP.FUS.F.170 |  | Imballaggio e consegna al sito Fusti 2° Lotto |  | 120d | CEP.FUS.F.180 FF+18d | 516d | 27d |  | CX1150 | 0 |  | SUP | ANN | P3 | 0 |
| CEP.FUS.F.180 |  | FAT Fusti 2° Lotto |  | 120d | CEP.FUS.F.160 FS+5d | 488d | 0d |  | CX1150 | 0 |  | SUP | ANN | P3 | 0 |

Notes:
- CEP.ELV.F.00005: Note: 16 settimane da approvazione disegni (info Martha, fornitore Updinamic)
- CEP.ELV.F.00010: Note: 16 settimane da approvazione disegni (info Martha, fornitore Updinamic)
- CEP.ELV.F.10: Note: 16 settimane da approvazione disegni (info Martha, fornitore Updinamic)
- CEP.ELV.S.00040: Note: 16 settimane da approvazione disegni (info Martha, fornitore Updinamic)
- CEP.FUS.M.110: Note: aggiunto
- CEP.FUS.M.120: Note: aggiunto
- CEP.FUS.D.140: Note: aggiunto
- CEP.FUS.D.150: Note: aggiunto
- CEP.FUS.A.30: Note: aggiunto
- CEP.FUS.A.40: Note: aggiunto
- CEP.FUS.A.50: Note: aggiunto
- CEP.FUS.F.130: Note: aggiunto
- CEP.FUS.F.140: Note: aggiunto
- CEP.FUS.F.150: Note: aggiunto
- CEP.FUS.F.160: Note: aggiunto
- CEP.FUS.F.170: Note: aggiunto
- CEP.FUS.F.180: Note: aggiunto

| ID | WBS | Activity | Type | Duration | Predecessors | Total float | Free float | Calendar | Note | CEMEX 2025 - Activity code Sogin | CEMEX LOCALE | CEMEX ACTIVITY TYPE | CEMEX RESPONSABILITY | CEMEX PARTITE | CEMEX SISTEMI |
| --- | --- | --- | --- | --- | --- | --- | --- | --- | --- | --- | --- | --- | --- | --- | --- |
|  | 4 | **Documentazione finale** |  |  |  |  |  |  |  |  |  |  |  |  |  |
| CEP.FUS.D.160 |  | Dossier di fine fabbricazione Fusti 1° Lotto (incl. fusti per prove mock-up e prove non nucleari) |  | 16d | CEP.FUS.F.150 | 332d | 0d | 5D 8h ITA H + 2W 2036 | aggiunto | CX1150 | 0 | SUP | ANN | P3 | 0 |
| CEP.FUS.D.170 |  | Approvazione dossier di fine fabbricazione Fusti 1° Lotto (incl. fusti per prove mock-up e prove non nucleari) |  | 20d | CEP.FUS.D.160 | 332d | 0d | 5D 8h ITA H + 2W 2036 | aggiunto | CX1150 | 0 | SUP | SOGIN | P3 |  |
| CEP.FUS.D.180 |  | Dossier di fine fabbricazione Fusti 2° Lotto |  | 18d | CEP.FUS.F.180 | 403d | 0d | 5D 8h ITA H + 2W 2036 | aggiunto | CX1150 | 0 | SUP | ANN | P3 | 0 |
| CEP.FUS.D.190 |  | Approvazione dossier di fine fabbricazione Fusti 2° Lotto |  | 20d | CEP.FUS.D.180 | 403d | 0d | 5D 8h ITA H + 2W 2036 | aggiunto | CX1150 | 0 | SUP | SOGIN | P3 |  |
|  | 1 | **Fusti DEM** |  |  |  |  |  |  |  |  |  |  |  |  |  |
| CEP.FUS.M.00010 |  | Disponibilità Fusti DEM in sito 1° Lotto (incl. fusti per prove mock-up e prove non nucleari) | milestone | 0d | CEP.FUS.D.00040, CEP.FUS.F.00030 | 397d | 467d |  | Da mail Monsud | CX1150 | 0 | SUP | DEM | P3 |  |
| CEP.FUS.M.00110 |  | Disponibilità Fusti DEM in sito 2° Lotto | milestone | 0d | CEP.FUS.D.00140 FF, CEP.FUS.F.00130 FF | 486d | 485d |  | Da mail Monsud | CX1150 | 0 | SUP | DEM | P3 |  |
|  | 1 | **Documentazione per costruzione** |  |  |  |  |  |  |  |  |  |  |  |  |  |
| CEP.FUS.D.00010 |  | Disegni costruttivi di officina Fusti |  | 12d | CEM.ENG.I.00040 | 331d | 0d | 5D 8h ITA H + 2W 2036 | Da mail Monsud | CX1150 | 0 | SUP | DEM | P3 |  |
| CEP.FUS.D.00020 |  | Approvazione disegni costruttivi Fusti |  | 20d | CEP.FUS.D.00010 | 331d | 0d | 5D 8h ITA H + 2W 2036 | Da mail Monsud | CX1150 | 0 | SUP | SOGIN | P3 |  |
|  | 2 | **Specifiche, ordine e procurement** |  |  |  |  |  |  |  |  |  |  |  |  |  |
| CEP.FUS.A.00010 |  | Specifiche di acquisto Fusti |  | 12d | CEP.FUS.D.00020 | 331d | 0d | 5D 8h ITA H + 2W 2036 | Da mail Monsud | CX1150 | 0 | SUP | DEM | P3 |  |
| CEP.FUS.A.00020 |  | Emissione ordini di acquisto Fusti |  | 12d | CEP.FUS.A.00010 | 331d | 0d | 5D 8h ITA H + 2W 2036 | Da mail Monsud | CX1150 | 0 | SUP | DEM | P3 |  |
| CEP.FUS.A.00030 |  | Approvvigionamento materiali per realizzazione Fusti |  | 120d | CEP.FUS.A.00020 | 331d | 0d | 5D 8h ITA H + 2W 2036 | Da mail Monsud | CX1150 | 0 | SUP | DEM | P3 |  |
|  | 3 | **Realizzazione** |  |  |  |  |  |  |  |  |  |  |  |  |  |
| CEP.FUS.F.00010 |  | Fabbricazione in officina Fusti 1° Lotto (incl. fusti per prove mock-up e prove non nucleari) |  | 580d | CEP.FUS.A.00030 SS+18d | 405d | 0d |  | Da mail Monsud | CX1150 | 0 | SUP | DEM | P3 |  |
| CEP.FUS.F.00020 |  | FAT Fusti 1° Lotto (incl. fusti per prove mock-up e prove non nucleari) |  | 120d | CEP.FUS.F.00010 FS+8d | 405d | 0d |  | Da mail Monsud | CX1150 | 0 | SUP | DEM | P3 |  |
| CEP.FUS.F.00030 |  | Imballaggio e consegna al sito Fusti 1° Lotto (incl. fusti per prove mock-up e prove non nucleari) |  | 120d | CEP.FUS.F.00020 FF+18d | 432d | 35d |  | Da mail Monsud | CX1150 | 0 | SUP | DEM | P3 |  |
| CEP.FUS.F.00110 |  | Fabbricazione in officina Fusti 2° Lotto |  | 675d | CEP.FUS.A.00030 | 486d | 0d |  | Da mail Monsud | CX1150 | 0 | SUP | DEM | P3 |  |
| CEP.FUS.F.00120 |  | FAT Fusti 2° Lotto |  | 120d | CEP.FUS.F.00110 FS+5d | 486d | 0d |  | Da mail Monsud | CX1150 | 0 | SUP | DEM | P3 |  |
| CEP.FUS.F.00130 |  | Imballaggio e consegna al sito Fusti 2° Lotto |  | 120d | CEP.FUS.F.00120 FF+18d | 516d | 30d |  | Da mail Monsud | CX1150 | 0 | SUP | DEM | P3 |  |
|  | 4 | **Documentazione finale** |  |  |  |  |  |  |  |  |  |  |  |  |  |
| CEP.FUS.D.00030 |  | Dossier di fine fabbricazione Fusti 1° Lotto (incl. fusti per prove mock-up e prove non nucleari) |  | 20d | CEP.FUS.F.00020 | 328d | 0d | 5D 8h ITA H + 2W 2036 | Da mail Monsud | CX1150 | 0 | SUP | DEM | P3 |  |
| CEP.FUS.D.00040 |  | Approvazione dossier di fine fabbricazione Fusti 1° Lotto (incl. fusti per prove mock-up e prove non nucleari) |  | 20d | CEP.FUS.D.00030 | 328d | 0d | 5D 8h ITA H + 2W 2036 | Da mail Monsud | CX1150 | 0 | SUP | SOGIN | P3 |  |
| CEP.FUS.D.00130 |  | Dossier di fine fabbricazione Fusti 2° Lotto |  | 20d | CEP.FUS.F.00120 | 401d | 0d | 5D 8h ITA H + 2W 2036 | Da mail Monsud | CX1150 | 0 | SUP | DEM | P3 |  |
| CEP.FUS.D.00140 |  | Approvazione dossier di fine fabbricazione Fusti 2° Lotto |  | 20d | CEP.FUS.D.00130 | 401d | 0d | 5D 8h ITA H + 2W 2036 | Da mail Monsud | CX1150 | 0 | SUP | SOGIN | P3 |  |

| ID | WBS | Activity | Type | Duration | Predecessors | Total float | Free float | Calendar | Note | CEMEX 2025 - Activity code Sogin | CEMEX LOCALE | CEMEX ACTIVITY TYPE | CEMEX RESPONSABILITY | CEMEX PARTITE | CEMEX SISTEMI |
| --- | --- | --- | --- | --- | --- | --- | --- | --- | --- | --- | --- | --- | --- | --- | --- |
|  | 2 | **Cestelli ANN** |  |  |  |  |  |  |  |  |  |  |  |  |  |
| CEP.CES.M.00010 |  | Disponibilità Cestelli ANN in sito 1° Lotto (incl. cestelli per prove mock-up e prove non nucleari) | milestone | 0d | CEP.CES.F.00030 FF, CEP.CES.D.00040 FF | 403d | 473d |  | Da mail Monsud | CX1150 | 0 | SUP | ANN | P3 | 0 |
| CEP.CES.M.00110 |  | Disponibilità Cestelli ANN in sito 2° Lotto | milestone | 0d | CEP.CES.F.00130 FF, CEP.CES.D.00140 FF, CEP.CES.D.00140 SF | 926d | 925d |  | Da mail Monsud | CX1150 | 0 | SUP | ANN | P3 | 0 |
|  | 1 | **Documentazione per costruzione** |  |  |  |  |  |  |  |  |  |  |  |  |  |
| CEP.CES.D.00010 |  | Disegni costruttivi di officina Cestelli |  | 12d | CEM.ENG.I.00040 | 336d | 0d | 5D 8h ITA H + 2W 2036 | Da mail Monsud | CX1150 | 0 | SUP | ANN | P3 | 0 |
| CEP.CES.D.00020 |  | Approvazione disegni costruttivi Cestelli |  | 20d | CEP.CES.D.00010 | 336d | 0d | 5D 8h ITA H + 2W 2036 | Da mail Monsud | CX1150 | 0 | SUP | SOGIN | P3 |  |
|  | 2 | **Specifiche, ordine e procurement** |  |  |  |  |  |  |  |  |  |  |  |  |  |
| CEP.CES.A.00010 |  | Specifiche di acquisto Cestelli |  | 12d | CEP.CES.D.00020 | 336d | 0d | 5D 8h ITA H + 2W 2036 | Da mail Monsud | CX1150 | 0 | SUP | ANN | P3 | 0 |
| CEP.CES.A.00020 |  | Emissione ordini di acquisto Cestelli |  | 12d | CEP.CES.A.00010 | 336d | 0d | 5D 8h ITA H + 2W 2036 | Da mail Monsud | CX1150 | 0 | SUP | ANN | P3 | 0 |
| CEP.CES.A.00030 |  | Approvvigionamento materiali per realizzazione Cestelli |  | 120d | CEP.CES.A.00020 | 411d | 0d |  | Da mail Monsud | CX1150 | 0 | SUP | ANN | P3 | 0 |
|  | 3 | **Realizzazione** |  |  |  |  |  |  |  |  |  |  |  |  |  |
| CEP.CES.F.00010 |  | Fabbricazione in officina Cestelli 1° Lotto (incl. cestelli per prove mock-up e prove non nucleari) |  | 580d | CEP.CES.A.00030 SS+18d | 411d | 0d |  | Da mail Monsud | CX1150 | 0 | SUP | ANN | P3 | 0 |
| CEP.CES.F.00020 |  | FAT Cestelli 1° Lotto (incl. cestelli per prove mock-up e prove non nucleari) |  | 120d | CEP.CES.F.00010 FS+6d | 411d | 0d |  | Da mail Monsud | CX1150 | 0 | SUP | ANN | P3 | 0 |
| CEP.CES.F.00030 |  | Imballaggio e consegna al sito Cestelli 1° Lotto (incl. cestelli per prove mock-up e prove non nucleari) |  | 18d | CEP.CES.F.00020 FF+18d | 438d | 35d |  | Da mail Monsud | CX1150 | 0 | SUP | ANN | P3 | 0 |
| CEP.CES.F.00110 |  | Fabbricazione in officina Cestelli 2° Lotto |  | 675d | CEP.CES.A.00030 | 927d | 0d |  | Da mail Monsud | CX1150 | 0 | SUP | ANN | P3 | 0 |
| CEP.CES.F.00120 |  | FAT Cestelli 2° Lotto |  | 120d | CEP.CES.F.00110 FS+5d | 927d | 0d |  | Da mail Monsud | CX1150 | 0 | SUP | ANN | P3 | 0 |
| CEP.CES.F.00130 |  | Imballaggio e consegna al sito Cestelli 2° Lotto |  | 120d | CEP.CES.F.00120 FF+18d | 957d | 31d |  | Da mail Monsud | CX1150 | 0 | SUP | ANN | P3 | 0 |
|  | 4 | **Documentazione finale** |  |  |  |  |  |  |  |  |  |  |  |  |  |
| CEP.CES.D.00030 |  | Dossier di fine fabbricazione Cestelli 1° Lotto (incl. cestelli per prove mock-up e prove non nucleari) |  | 20d | CEP.CES.F.00020 | 333d | 0d | 5D 8h ITA H + 2W 2036 | Da mail Monsud | CX1150 | 0 | SUP | ANN | P3 | 0 |
| CEP.CES.D.00040 |  | Approvazione dossier di fine fabbricazione Cestelli 1° Lotto (incl. cestelli per prove mock-up e prove non nucleari) |  | 20d | CEP.CES.D.00030 | 333d | 0d | 5D 8h ITA H + 2W 2036 | Da mail Monsud | CX1150 | 0 | SUP | SOGIN | P3 |  |
| CEP.CES.D.00130 |  | Dossier di fine fabbricazione Cestelli 2° Lotto |  | 20d | CEP.CES.F.00120 | 763d | 0d | 5D 8h ITA H + 2W 2036 | Da mail Monsud | CX1150 | 0 | SUP | ANN | P3 | 0 |
| CEP.CES.D.00140 |  | Approvazione dossier di fine fabbricazione Cestelli 2° Lotto |  | 20d | CEP.CES.D.00130 | 763d | 0d | 5D 8h ITA H + 2W 2036 | Da mail Monsud | CX1150 | 0 | SUP | SOGIN | P3 |  |
|  | 5 | **Cestelli DEM** |  |  |  |  |  |  |  |  |  |  |  |  |  |
| CEP.CES.M.110 |  | Disponibilità Cestelli DEM in sito 1° Lotto (incl. cestelli per prove mock-up e prove non nucleari) | milestone | 0d | CEP.CES.F.140 FF, CEP.CES.D.170 FF | 406d | 476d |  | Da mail Monsud | CX1150 | 0 | SUP | DEM | P3 |  |
| CEP.CES.M.120 |  | Disponibilità Cestelli DEM in sito 2° Lotto | milestone | 0d | CEP.CES.F.170 FF, CEP.CES.D.190 FF, CEP.CES.D.190 SF | 926d | 925d |  | Da mail Monsud | CX1150 | 0 | SUP | DEM | P3 |  |

| ID | WBS | Activity | Type | Duration | Predecessors | Total float | Free float | Calendar | Note | CEMEX 2025 - Activity code Sogin | CEMEX LOCALE | CEMEX ACTIVITY TYPE | CEMEX RESPONSABILITY | CEMEX PARTITE | CEMEX DISCIPLINE | CEMEX REVISIONE |
| --- | --- | --- | --- | --- | --- | --- | --- | --- | --- | --- | --- | --- | --- | --- | --- | --- |
|  | 1 | **Documentazione per costruzione** |  |  |  |  |  |  |  |  |  |  |  |  |  |  |
| CEP.CES.D.140 |  | Disegni costruttivi di officina Cestelli |  | 12d | CEM.ENG.I.00040 | 337d | 0d | 5D 8h ITA H + 2W 2036 | aggiunto | CX1150 | 0 | SUP | DEM | P3 |  |  |
| CEP.CES.D.150 |  | Approvazione disegni costruttivi Cestelli |  | 20d | CEP.CES.D.140 | 337d | 0d | 5D 8h ITA H + 2W 2036 | aggiunto | CX1150 | 0 | SUP | SOGIN | P3 |  |  |
|  | 2 | **Specifiche, ordine e procurement** |  |  |  |  |  |  |  |  |  |  |  |  |  |  |
| CEP.CES.A.30 |  | Specifiche di acquisto Cestelli |  | 12d | CEP.CES.D.150 | 337d | 0d | 5D 8h ITA H + 2W 2036 | aggiunto | CX1150 | 0 | SUP | DEM | P3 |  |  |
| CEP.CES.A.40 |  | Emissione ordini di acquisto Cestelli |  | 12d | CEP.CES.A.30 | 337d | 0d | 5D 8h ITA H + 2W 2036 | aggiunto | CX1150 | 0 | SUP | DEM | P3 |  |  |
| CEP.CES.A.50 |  | Approvvigionamento materiali per realizzazione Cestelli |  | 120d | CEP.CES.A.40 | 413d | 0d |  | aggiunto | CX1150 | 0 | SUP | DEM | P3 |  |  |
|  | 3 | **Realizzazione** |  |  |  |  |  |  |  |  |  |  |  |  |  |  |
| CEP.CES.F.130 |  | Fabbricazione in officina Cestelli 1° Lotto (incl. cestelli per prove mock-up e prove non nucleari) |  | 580d | CEP.CES.A.50 SS+18d | 413d | 0d |  | aggiunto | CX1150 | 0 | SUP | DEM | P3 |  |  |
| CEP.CES.F.140 |  | Imballaggio e consegna al sito Cestelli 1° Lotto (incl. cestelli per prove mock-up e prove non nucleari) |  | 18d | CEP.CES.F.150 FF+18d | 438d | 32d |  | aggiunto | CX1150 | 0 | SUP | DEM | P3 |  |  |
| CEP.CES.F.150 |  | FAT Cestelli 1° Lotto (incl. cestelli per prove mock-up e prove non nucleari) |  | 120d | CEP.CES.F.130 FS+6d | 413d | 0d |  | aggiunto | CX1150 | 0 | SUP | DEM | P3 |  |  |
| CEP.CES.F.160 |  | Fabbricazione in officina Cestelli 2° Lotto |  | 675d | CEP.CES.A.50 | 927d | 0d |  | aggiunto | CX1150 | 0 | SUP | DEM | P3 |  |  |
| CEP.CES.F.170 |  | Imballaggio e consegna al sito Cestelli 2° Lotto |  | 120d | CEP.CES.F.180 FF+18d | 957d | 31d |  | aggiunto | CX1150 | 0 | SUP | DEM | P3 |  |  |
| CEP.CES.F.180 |  | FAT Cestelli 2° Lotto |  | 120d | CEP.CES.F.160 FS+5d | 927d | 0d |  | aggiunto | CX1150 | 0 | SUP | DEM | P3 |  |  |
|  | 4 | **Documentazione finale** |  |  |  |  |  |  |  |  |  |  |  |  |  |  |
| CEP.CES.D.160 |  | Dossier di fine fabbricazione Cestelli 1° Lotto (incl. cestelli per prove mock-up e prove non nucleari) |  | 18d | CEP.CES.F.150 | 335d | 0d | 5D 8h ITA H + 2W 2036 | aggiunto | CX1150 | 0 | SUP | DEM | P3 |  |  |
| CEP.CES.D.170 |  | Approvazione dossier di fine fabbricazione Cestelli 1° Lotto (incl. cestelli per prove mock-up e prove non nucleari) |  | 20d | CEP.CES.D.160 | 335d | 0d | 5D 8h ITA H + 2W 2036 | aggiunto | CX1150 | 0 | SUP | SOGIN | P3 |  |  |
| CEP.CES.D.180 |  | Dossier di fine fabbricazione Cestelli 2° Lotto |  | 20d | CEP.CES.F.180 | 763d | 0d | 5D 8h ITA H + 2W 2036 | aggiunto | CX1150 | 0 | SUP | DEM | P3 |  |  |
| CEP.CES.D.190 |  | Approvazione dossier di fine fabbricazione Cestelli 2° Lotto |  | 20d | CEP.CES.D.180 | 763d | 0d | 5D 8h ITA H + 2W 2036 | aggiunto | CX1150 | 0 | SUP | SOGIN | P3 |  |  |
|  | 11 | **Fabbricazione apparecchiature, componenti e sistemi e Approv. forniture - EDIFICIO DEPOSITO** |  |  |  |  |  |  |  |  |  |  |  |  |  |  |
|  | 14 | **Realizzazione Sistema HVAC** |  |  |  |  |  |  |  |  |  |  |  |  |  |  |
|  | 8 | **Supporti puntuali HVAC** |  |  |  |  |  |  |  |  |  |  |  |  |  |  |
| CEP.HVA.M.10500 |  | Disponibilità Supporti in sito | milestone | 0d | CEP.HVA.S.40350 FF, CEP.HVA.D.12440 | 448d | 518d |  |  | CX1250 | 0 | SUP | COS | P1 | HVA | AGG |
|  | 1 | **Documentazione iniziale** |  |  |  |  |  |  |  |  |  |  |  |  |  |  |
| CEP.HVA.D.12420 |  | Progettazione costruttiva Supporti |  | 30d | CEM.MLS.C.00010 SS, CEP.HVA.D.12060 | 368d | 0d | 5D 8h ITA H + 2W 2036 |  | CX1250 | 0 | SUP | COS | P1 | HVA | AGG |
| CEP.HVA.D.12450 |  | Approvazione Progettazione costruttiva |  | 20d | CEP.HVA.D.12420 | 368d | 0d | 5D 8h ITA H + 2W 2036 |  | CX1250 | 0 | SUP | SOGIN | P1 | HVA |  |

| ID | WBS | Activity | Type | Duration | Predecessors | Total float | Free float | Calendar | CEMEX 2025 - Activity code Sogin | CEMEX LOCALE | CEMEX DISCIPLINE | CEMEX ACTIVITY TYPE | CEMEX RESPONSABILITY | CEMEX PARTITE | CEMEX REVISIONE | Note |
| --- | --- | --- | --- | --- | --- | --- | --- | --- | --- | --- | --- | --- | --- | --- | --- | --- |
|  | 3 | **Fabbricazione Supporti** |  |  |  |  |  |  |  |  |  |  |  |  |  |  |
| CEP.HVA.F.40460 |  | Fabbricazione Supporti |  | 120d | CEP.HVA.D.12420, CEP.HVA.D.12450 | 454d | 0d |  | CX1250 | 0 | HVA | SUP | COS | P1 | AGG |  |
| CEP.HVA.F.40470 |  | Controlli CND |  | 5d | CEP.HVA.F.40460 | 454d | 0d |  | CX1250 | 0 | HVA | SUP | COS | P1 | AGG |  |
|  | 5 | **Packaging e trasporto in sito** |  |  |  |  |  |  |  |  |  |  |  |  |  |  |
| CEP.HVA.S.40350 |  | Imballaggio e Trasporto in sito |  | 10d | CEP.HVA.F.40470, CEP.HVA.D.12440 FF | 448d | 0d |  | CX1250 | 0 | HVA | SUP | COS | P1 | AGG |  |
|  | 6 | **Documentazione fine fabbricazione** |  |  |  |  |  |  |  |  |  |  |  |  |  |  |
| CEP.HVA.D.12430 |  | Dossier di fine fabbricazione |  | 5d | CEP.HVA.F.40470 | 367d | 0d | 5D 8h ITA H + 2W 2036 | CX1250 | 0 | HVA | SUP | COS | P1 | AGG |  |
| CEP.HVA.D.12440 |  | Approvazione del Dossier di fine fabbricazione |  | 20d | CEP.HVA.D.12430 | 367d | 0d | 5D 8h ITA H + 2W 2036 | CX1250 | 0 | HVA | SUP | SOGIN | P1 |  |  |
|  | 1 | **Ordine per Sistema HVAC** |  |  |  |  |  |  |  |  |  |  |  |  |  |  |
| CEP.HVA.O.440 |  | Specifiche d'Acquisto Sistema Ventilatori |  | 20d | CEM.ENG.I.00050 | 48d | 0d | 5D 8h ITA H + 2W 2036 | CX1250 | 0 | HVA | SUP | DEM | P5 | MOD |  |
| CEP.HVA.O.450 |  | Ordini per Sistema Ventilatori |  | 40d | CEP.HVA.O.440 | 48d | 0d | 5D 8h ITA H + 2W 2036 | CX1250 | 0 | HVA | SUP | DEM | P5 | MOD |  |
| CEP.HVA.O.460 |  | Specifiche d'Acquisto Sistema UTA |  | 20d | CEP.HVA.O.440 | 394d | 0d | 5D 8h ITA H + 2W 2036 | CX1250 | 0 | HVA | SUP | DEM | P5 | MOD |  |
| CEP.HVA.O.470 |  | Ordini per Sistema UTA |  | 40d | CEP.HVA.O.460 | 394d | 0d | 5D 8h ITA H + 2W 2036 | CX1250 | 0 | HVA | SUP | DEM | P5 | MOD |  |
| CEP.HVA.O.480 |  | Specifiche d'Acquisto Sistema Valvole |  | 20d | CEM.ENG.I.00050 | 133d | 0d | 5D 8h ITA H + 2W 2036 | CX1250 | 0 | HVA | SUP | DEM | P5 | MOD |  |
| CEP.HVA.O.490 |  | Ordini per Sistema Valvole |  | 40d | CEP.HVA.O.480 | 133d | 0d | 5D 8h ITA H + 2W 2036 | CX1250 | 0 | HVA | SUP | DEM | P5 | MOD |  |
| CEP.HVA.O.500 |  | Specifiche d'Acquisto Sistema Serrande |  | 20d | CEP.HVA.O.440 | 242d | 0d | 5D 8h ITA H + 2W 2036 | CX1250 | 0 | HVA | SUP | DEM | P5 | MOD |  |
| CEP.HVA.O.510 |  | Ordini per Sistema Serrande |  | 40d | CEP.HVA.O.500 | 1884d | 0d | 5D 8h ITA H + 2W 2036 | CX1250 | 0 | HVA | SUP | DEM | P5 | MOD |  |
| CEP.HVA.O.520 |  | Specifiche d'Acquisto Unità modulare di filtrazione e Filtri |  | 20d | CEP.HVA.O.500 | 242d | 0d | 5D 8h ITA H + 2W 2036 | CX1250 | 0 | HVA | SUP | DEM | P5 | MOD |  |
| CEP.HVA.O.530 |  | Ordini per Filtri |  | 40d | CEP.HVA.O.520 | 242d | 0d | 5D 8h ITA H + 2W 2036 | CX1250 | 0 | HVA | SUP | DEM | P5 | MOD |  |
| CEP.HVA.O.540 |  | Ordini HVAC bulk |  | 40d | CEP.HVA.O.550 | 436d | 495d | 5D 8h ITA H + 2W 2036 | CX1250 | 0 | HVA | SUP | DEM | P5 | MOD | Da dettagliare in WBS?? |
| CEP.HVA.O.550 |  | Specifiche d'Acquisto HVAC bulk |  | 20d | CEP.HVA.O.460 | 436d | 0d | 5D 8h ITA H + 2W 2036 | CX1250 | 0 | HVA | SUP | DEM | P5 | MOD |  |
|  | 3 | **Ventilatori** |  |  |  |  |  |  |  |  |  |  |  |  |  |  |
| CEP.HVA.M.10440 |  | Disponibilità Ventilatori processo in sito | milestone | 0d | CEP.HVA.S.40290 FF, CEP.HVA.D.12240 | 63d | 57d |  | CX1250 | 0 | HVA | SUP | DEM | P5 | MOD |  |
| CEP.HVA.M.10490 |  | Disponibilità Ventilatori deposito in sito | milestone | 0d | CEP.HVA.S.40340 FF, CEP.HVA.D.12410 FF | 105d | 57d |  | CX1250 | 0 | HVA | SUP | DEM | P5 | MOD |  |

| ID | WBS | Activity | Duration | Predecessors | Total float | Free float | Calendar | CEMEX 2025 - Activity code Sogin | CEMEX LOCALE | CEMEX DISCIPLINE | CEMEX ACTIVITY TYPE | CEMEX RESPONSABILITY | CEMEX PARTITE | CEMEX REVISIONE | Note |
| --- | --- | --- | --- | --- | --- | --- | --- | --- | --- | --- | --- | --- | --- | --- | --- |
|  | 1 | **Progettazione di dettaglio** |  |  |  |  |  |  |  |  |  |  |  |  |  |
| CEP.HVA.D.12220 |  | Progettazione costruttiva Ventilatori | 20d | CEP.HVA.O.450 | 48d | 0d | 5D 8h ITA H + 2W 2036 | CX1250 | 0 | HVA | SUP | DEM | P5 | MOD |  |
| CEP.HVA.D.12360 |  | Approvazione Progettazione costruttiva Ventilatori | 20d | CEP.HVA.D.12220 | 48d | 0d | 5D 8h ITA H + 2W 2036 | CX1250 | 0 | HVA | SUP | SOGIN | P5 | AGG |  |
|  | 2 | **Qualifiche** |  |  |  |  |  |  |  |  |  |  |  |  |  |
| CEP.HVA.Q.10200 |  | Realizzazione prototipi Ventilatori | 40d | CEP.HVA.Q.10270, CEP.HVA.Q.10250 | 64d | 0d |  | CX1250 | 0 | HVA | SUP | DEM | P5 | MOD | STIMATO??? |
| CEP.HVA.Q.10210 |  | Test ambientale/sismico Ventilatori | 20d | CEP.HVA.Q.10200, CEP.HVA.Q.10260 | 64d | 0d |  | CX1250 | 0 | HVA | TEST | DEM | P5 | MOD | verifica per ambientale |
| CEP.HVA.Q.10220 |  | Test Report Ventilatori | 10d | CEP.HVA.Q.10210 | 64d | 0d |  | CX1250 | 0 | HVA | SUP | DEM | P5 | MOD |  |
| CEP.HVA.Q.10230 |  | Approvazione del Test Report Ventilatori | 20d | CEP.HVA.Q.10220 | 53d | 0d | 5D 8h ITA H + 2W 2036 | CX1250 | 0 | HVA | SUP | SOGIN | P5 | AGG |  |
| CEP.HVA.Q.10240 |  | Protocollo di prova e procedura di qualifca Ventilatori | 5d | CEP.HVA.Q.10280, CEP.HVA.D.12360 | 58d | 0d |  | CX1250 | 0 | HVA | SUP | DEM | P5 | MOD |  |
| CEP.HVA.Q.10250 |  | Approvazione del Piano di qualifica Ventilatori | 20d | CEP.HVA.Q.10240 | 48d | 0d | 5D 8h ITA H + 2W 2036 | CX1250 | 0 | HVA | SUP | SOGIN | P5 | AGG |  |
| CEP.HVA.Q.10260 |  | FAT Ventilatori prototipi | 5d | CEP.HVA.Q.10200 | 64d | 0d |  | CX1250 | 0 | HVA | SUP | DEM | P5 | MOD |  |
| CEP.HVA.Q.10270 |  | Emissione Studio di analogia Ventilatori | 20d | CEP.HVA.Q.10280 | 81d | 17d |  | CX1250 | 0 | HVA | SUP | DEM | P5 | MOD |  |
| CEP.HVA.Q.10280 |  | Studio di analogia Ventilatori | 40d | CEP.HVA.O.450 | 66d | 0d |  | CX1250 | 0 | HVA | SUP | DEM | P5 | MOD |  |
|  | 3 | **Fabbricazione Ventilatori** |  |  |  |  |  |  |  |  |  |  |  |  |  |
| CEP.HVA.F.40340 |  | Fabbricazione Ventilatori processo | 180d | CEP.HVA.D.12360, CEP.HVA.Q.10230 | 64d | 0d |  | CX1250 | 0 | HVA | SUP | DEM | P5 | MOD |  |
| CEP.HVA.F.40350 |  | FAT Ventilatori processo | 5d | CEP.HVA.F.40340 | 64d | 0d |  | CX1250 | 0 | HVA | SUP | DEM | P5 | MOD |  |
| CEP.HVA.F.40440 |  | Fabbricazione Ventilatori deposito | 180d | CEP.HVA.D.12360, CEP.HVA.Q.10230 | 104d | 0d |  | CX1250 | 0 | HVA | SUP | DEM | P5 | MOD |  |
| CEP.HVA.F.40450 |  | FAT Ventilatori deposito | 5d | CEP.HVA.F.40440 | 104d | 0d |  | CX1250 | 0 | HVA | SUP | DEM | P5 | MOD |  |
|  | 5 | **Packaging e trasporto in sito** |  |  |  |  |  |  |  |  |  |  |  |  |  |
| CEP.HVA.S.40290 |  | Imballaggio e Trasporto in sito Ventilatori processo | 10d | CEP.HVA.F.40350, CEP.HVA.D.12240 FF | 63d | 0d |  | CX1250 | 0 | HVA | SUP | DEM | P5 | MOD |  |
| CEP.HVA.S.40340 |  | Imballaggio e Trasporto in sito Ventilatori deposito | 10d | CEP.HVA.F.40450, CEP.HVA.D.12410 FF | 105d | 0d |  | CX1250 | 0 | HVA | SUP | DEM | P5 | MOD |  |
|  | 6 | **Documentazione fine fabbricazione** |  |  |  |  |  |  |  |  |  |  |  |  |  |
| CEP.HVA.D.12230 |  | Dossier di fine fabbricazione Ventilatori processo | 20d | CEP.HVA.F.40350 | 49d | 0d | 5D 8h ITA H + 2W 2036 | CX1250 | 0 | HVA | SUP | DEM | P5 | MOD |  |
| CEP.HVA.D.12240 |  | Approvazione del Dossier di fine fabbricazione Ventilatori processo | 20d | CEP.HVA.Q.10230, CEP.HVA.D.12230 | 49d | 0d | 5D 8h ITA H + 2W 2036 | CX1250 | 0 | HVA | SUP | SOGIN | P5 | AGG |  |
| CEP.HVA.D.12400 |  | Dossier di fine fabbricazione Ventilatori deposito | 20d | CEP.HVA.F.40450 | 83d | 0d | 5D 8h ITA H + 2W 2036 | CX1250 | 0 | HVA | SUP | DEM | P5 | MOD |  |
| CEP.HVA.D.12410 |  | Approvazione del Dossier di fine fabbricazione Ventilatori deposito | 20d | CEP.HVA.D.12400, CEP.HVA.Q.10230 | 83d | 0d | 5D 8h ITA H + 2W 2036 | CX1250 | 0 | HVA | SUP | SOGIN | P5 | AGG |  |

| ID | WBS | Activity | Type | Duration | Predecessors | Total float | Free float | Calendar | CEMEX 2025 - Activity code Sogin | CEMEX LOCALE | CEMEX DISCIPLINE | CEMEX ACTIVITY TYPE | CEMEX RESPONSABILITY | CEMEX PARTITE | CEMEX REVISIONE | Note |
| --- | --- | --- | --- | --- | --- | --- | --- | --- | --- | --- | --- | --- | --- | --- | --- | --- |
|  | 2 | **UTA** |  |  |  |  |  |  |  |  |  |  |  |  |  |  |
| CEP.HVA.M.10450 |  | Disponibilità UTA in sito | milestone | 0d | CEP.HVA.S.40310 FF, CEP.HVA.D.12310 | 485d | 152d |  | CX1250 | 0 | HVA | SUP | DEM | P5 | MOD |  |
|  | 1 | **Progettazione di dettaglio** |  |  |  |  |  |  |  |  |  |  |  |  |  |  |
| CEP.HVA.D.12280 |  | Progettazione Costruttiva UTA |  | 20d | CEP.HVA.O.470 | 394d | 0d | 5D 8h ITA H + 2W 2036 | CX1250 | 0 | HVA | SUP | DEM | P5 | MOD |  |
| CEP.HVA.D.12290 |  | Approvazione della Progettazione Costruttiva UTA |  | 20d | CEP.HVA.D.12280 | 394d | 0d | 5D 8h ITA H + 2W 2036 | CX1250 | 0 | HVA | SUP | SOGIN | P5 | AGG |  |
|  | 2 | **Qualifiche** |  |  |  |  |  |  |  |  |  |  |  |  |  |  |
| CEP.HVA.T.12440 |  | Realizzazione prototipi UTA |  | 90d | CEP.HVA.T.12490, CEP.HVA.D.12290 | 486d | 0d |  | CX1250 | 0 | HVA | SUP | DEM | P5 | MOD |  |
| CEP.HVA.T.12450 |  | Test ambeintale/sismico UTA |  | 6d | CEP.HVA.T.12440, CEP.HVA.T.12500 | 486d | 0d |  | CX1250 | 0 | HVA | TEST | DEM | P5 | MOD | verifica per ambientale |
| CEP.HVA.T.12460 |  | Test Report UTA |  | 10d | CEP.HVA.T.12450 | 486d | 0d |  | CX1250 | 0 | HVA | SUP | DEM | P5 | MOD |  |
| CEP.HVA.T.12470 |  | Approvazione del Test Report UTA |  | 20d | CEP.HVA.T.12460 | 399d | 0d | 5D 8h ITA H + 2W 2036 | CX1250 | 0 | HVA | SUP | SOGIN | P5 | AGG |  |
| CEP.HVA.T.12480 |  | Piano di qualifica UTA |  | 10d | CEP.HVA.O.470 | 501d | 0d |  | CX1250 | 0 | HVA | SUP | DEM | P5 | MOD |  |
| CEP.HVA.T.12490 |  | Approvazione del Piano di qualifica UTA |  | 20d | CEP.HVA.T.12480 | 406d | 12d | 5D 8h ITA H + 2W 2036 | CX1250 | 0 | HVA | SUP | SOGIN | P5 | AGG |  |
| CEP.HVA.T.12500 |  | FAT UTA prototipi |  | 5d | CEP.HVA.T.12440 | 486d | 0d |  | CX1250 | 0 | HVA | SUP | DEM | P5 | MOD |  |
|  | 4 | **Fabbricazione UTA** |  |  |  |  |  |  |  |  |  |  |  |  |  |  |
| CEP.HVA.F.40380 |  | Fabbricazione UTA |  | 240d | CEP.HVA.D.12290, CEP.HVA.T.12470 | 486d | 0d |  | CX1250 | 0 | HVA | SUP | DEM | P5 | MOD |  |
| CEP.HVA.F.40390 |  | FAT UTA |  | 5d | CEP.HVA.F.40380 | 486d | 0d |  | CX1250 | 0 | HVA | SUP | DEM | P5 | MOD |  |
|  | 5 | **Packaging e trasporto in sito** |  |  |  |  |  |  |  |  |  |  |  |  |  |  |
| CEP.HVA.S.40310 |  | Imballaggio e Trasporto in sito UTA |  | 10d | CEP.HVA.F.40390, CEP.HVA.D.12310 FF | 485d | 0d |  | CX1250 | 0 | HVA | SUP | DEM | P5 | MOD |  |
|  | 6 | **Documentazione fine fabbricazione** |  |  |  |  |  |  |  |  |  |  |  |  |  |  |
| CEP.HVA.D.12300 |  | Dossier di fine fabbricazione UTA |  | 10d | CEP.HVA.F.40390 | 399d | 0d | 5D 8h ITA H + 2W 2036 | CX1250 | 0 | HVA | SUP | DEM | P5 | MOD |  |
| CEP.HVA.D.12310 |  | Approvazione del Dossier di fine fabbricazione |  | 20d | CEP.HVA.D.12300, CEP.HVA.T.12470 | 399d | 0d | 5D 8h ITA H + 2W 2036 | CX1250 | 0 | HVA | SUP | SOGIN | P5 | AGG |  |
|  | 4 | **Valvole** |  |  |  |  |  |  |  |  |  |  |  |  |  |  |
| CEP.HVA.M.10460 |  | Disponibilità Valvole in sito | milestone | 0d | CEP.HVA.S.40320 FF, CEP.HVA.D.12340 | 157d | 227d |  | CX1250 | 0 | HVA | SUP | DEM | P5 | MOD |  |
|  | 1 | **Progettazione di dettaglio** |  |  |  |  |  |  |  |  |  |  |  |  |  |  |
| CEP.HVA.D.12320 |  | Progettazione Costruttiva Valvole |  | 30d | CEP.HVA.O.490 | 133d | 0d | 5D 8h ITA H + 2W 2036 | CX1250 | 0 | HVA | SUP | DEM | P5 | MOD |  |

| ID | WBS | Activity | Type | Duration | Predecessors | Total float | Free float | Calendar | CEMEX 2025 - Activity code Sogin | CEMEX LOCALE | CEMEX DISCIPLINE | CEMEX ACTIVITY TYPE | CEMEX RESPONSABILITY | CEMEX PARTITE | CEMEX REVISIONE | Note |
| --- | --- | --- | --- | --- | --- | --- | --- | --- | --- | --- | --- | --- | --- | --- | --- | --- |
|  | 2 | **Qualifiche** |  |  |  |  |  |  |  |  |  |  |  |  |  |  |
| CEP.HVA.T.12510 |  | Realizzazione prototipi Valvole |  | 60d | CEP.HVA.T.12560, CEP.HVA.D.12320 | 166d | 0d |  | CX1250 | 0 | HVA | SUP | DEM | P5 | MOD |  |
| CEP.HVA.T.12520 |  | Test ambientale/sismico Valvole |  | 3d | CEP.HVA.T.12510, CEP.HVA.T.12570 | 166d | 0d |  | CX1250 | 0 | HVA | TEST | DEM | P5 | MOD | verifica per ambientale |
| CEP.HVA.T.12530 |  | Test Report Valvole |  | 10d | CEP.HVA.T.12520 | 166d | 4d |  | CX1250 | 0 | HVA | SUP | DEM | P5 | MOD |  |
| CEP.HVA.T.12540 |  | Approvazione del Test Report Valvole |  | 20d | CEP.HVA.T.12530 | 134d | 0d | 5D 8h ITA H + 2W 2036 | CX1250 | 0 | HVA | SUP | SOGIN | P5 | AGG |  |
| CEP.HVA.T.12550 |  | Piano di qualifica Valvole |  | 10d | CEP.HVA.O.490 | 168d | 0d |  | CX1250 | 0 | HVA | SUP | DEM | P5 | MOD |  |
| CEP.HVA.T.12560 |  | Approvazione del Piano di qualifica Valvole |  | 20d | CEP.HVA.T.12550 | 135d | 2d | 5D 8h ITA H + 2W 2036 | CX1250 | 0 | HVA | SUP | SOGIN | P5 | AGG |  |
| CEP.HVA.T.12570 |  | FAT Valvole prototipi |  | 5d | CEP.HVA.T.12510 | 166d | 0d |  | CX1250 | 0 | HVA | SUP | DEM | P5 | MOD |  |
|  | 4 | **Fabbricazione Valvole** |  |  |  |  |  |  |  |  |  |  |  |  |  |  |
| CEP.HVA.F.40400 |  | Fabbricazione Valvole |  | 240d | CEP.HVA.D.12320, CEP.HVA.T.12540 | 162d | 0d |  | CX1250 | 0 | HVA | SUP | DEM | P5 | MOD |  |
| CEP.HVA.F.40410 |  | FAT Valvole |  | 5d | CEP.HVA.F.40400 | 162d | 0d |  | CX1250 | 0 | HVA | SUP | DEM | P5 | MOD |  |
|  | 5 | **Packaging e trasporto in sito** |  |  |  |  |  |  |  |  |  |  |  |  |  |  |
| CEP.HVA.S.40320 |  | Imballaggio e Trasporto in sito Valvole |  | 10d | CEP.HVA.F.40410, CEP.HVA.D.12340 FF | 157d | 0d |  | CX1250 | 0 | HVA | SUP | DEM | P5 | MOD |  |
|  | 6 | **Documentazione fine fabbricazione** |  |  |  |  |  |  |  |  |  |  |  |  |  |  |
| CEP.HVA.D.12330 |  | Dossier di fine fabbricazione Valvole |  | 10d | CEP.HVA.F.40410 | 130d | 0d | 5D 8h ITA H + 2W 2036 | CX1250 | 0 | HVA | SUP | DEM | P5 | MOD |  |
| CEP.HVA.D.12340 |  | Approvazione del Dossier di fine fabbricazione |  | 20d | CEP.HVA.D.12330, CEP.HVA.T.12540 | 130d | 0d | 5D 8h ITA H + 2W 2036 | CX1250 | 0 | HVA | SUP | SOGIN | P5 | AGG |  |
|  | 5 | **Serrande** |  |  |  |  |  |  |  |  |  |  |  |  |  |  |
| CEP.HVA.M.10470 |  | Disponibilità Serrande in sito | milestone | 0d | CEP.HVA.S.40330 FF, CEP.HVA.D.12390 | 2302d |  |  | CX1250 | 0 | HVA | SUP | DEM | P5 | MOD |  |
|  | 1 | **Progettazione di dettaglio** |  |  |  |  |  |  |  |  |  |  |  |  |  |  |
| CEP.HVA.D.12370 |  | Progettazione Costruttiva Serrande |  | 30d | CEP.HVA.O.510 | 1884d | 0d | 5D 8h ITA H + 2W 2036 | CX1250 | 0 | HVA | SUP | DEM | P5 | MOD |  |
|  | 2 | **Qualifiche** |  |  |  |  |  |  |  |  |  |  |  |  |  |  |
| CEP.HVA.T.12580 |  | Realizzazione prototipi Serrande |  | 30d | CEP.HVA.T.12630, CEP.HVA.D.12370 | 2302d | 0d |  | CX1250 | 0 | HVA | SUP | DEM | P5 | MOD |  |
| CEP.HVA.T.12590 |  | Test ambientale/sismico Serrande |  | 13d | CEP.HVA.T.12580, CEP.HVA.T.12640 | 2302d | 0d |  | CX1250 | 0 | HVA | TEST | DEM | P5 | MOD | verifica per ambientale |
| CEP.HVA.T.12600 |  | Test Report Serrande |  | 10d | CEP.HVA.T.12590 | 2302d | 0d |  | CX1250 | 0 | HVA | SUP | DEM | P5 | MOD |  |
| CEP.HVA.T.12610 |  | Approvazione del Test Report Serrande |  | 20d | CEP.HVA.T.12600 | 1889d | 0d | 5D 8h ITA H + 2W 2036 | CX1250 | 0 | HVA | SUP | SOGIN | P5 | AGG |  |
| CEP.HVA.T.12620 |  | Piano di qualifica Serrande |  | 10d | CEP.HVA.O.510 | 2304d | 0d |  | CX1250 | 0 | HVA | SUP | DEM | P5 | MOD |  |
| CEP.HVA.T.12630 |  | Approvazione del Piano di qualifica Serrande |  | 20d | CEP.HVA.T.12620 | 1886d | 2d | 5D 8h ITA H + 2W 2036 | CX1250 | 0 | HVA | SUP | SOGIN | P5 | AGG |  |
| CEP.HVA.T.12640 |  | FAT Serrande prototipi |  | 5d | CEP.HVA.T.12580 | 2302d | 0d |  | CX1250 | 0 | HVA | SUP | DEM | P5 | MOD |  |

| ID | WBS | Activity | Type | Duration | Predecessors | Total float | Free float | Calendar | CEMEX 2025 - Activity code Sogin | CEMEX LOCALE | CEMEX DISCIPLINE | CEMEX ACTIVITY TYPE | CEMEX RESPONSABILITY | CEMEX PARTITE | CEMEX REVISIONE |
| --- | --- | --- | --- | --- | --- | --- | --- | --- | --- | --- | --- | --- | --- | --- | --- |
|  | 4 | **Fabbricazione Serrande** |  |  |  |  |  |  |  |  |  |  |  |  |  |
| CEP.HVA.F.40420 |  | Fabbricazione Serrande |  | 120d | CEP.HVA.D.12370, CEP.HVA.T.12610 | 2302d | 0d |  | CX1250 | 0 | HVA | SUP | DEM | P5 | MOD |
| CEP.HVA.F.40430 |  | FAT Serrande |  | 5d | CEP.HVA.F.40420 | 2302d | 0d |  | CX1250 | 0 | HVA | SUP | DEM | P5 | MOD |
|  | 5 | **Packaging e trasporto in sito** |  |  |  |  |  |  |  |  |  |  |  |  |  |
| CEP.HVA.S.40330 |  | Imballaggio e Trasporto in sito Serrande |  | 10d | CEP.HVA.F.40430 | 2328d | 26d |  | CX1250 | 0 | HVA | SUP | DEM | P5 | MOD |
|  | 6 | **Documentazione fine fabbricazione** |  |  |  |  |  |  |  |  |  |  |  |  |  |
| CEP.HVA.D.12380 |  | Dossier di fine fabbricazione Serrande |  | 10d | CEP.HVA.F.40430 | 1886d | 0d | 5D 8h ITA H + 2W 2036 | CX1250 | 0 | HVA | SUP | DEM | P5 | MOD |
| CEP.HVA.D.12390 |  | Approvazione del Dossier di fine fabbricazione |  | 20d | CEP.HVA.D.12380, CEP.HVA.T.12610 | 1886d | 0d | 5D 8h ITA H + 2W 2036 | CX1250 | 0 | HVA | SUP | SOGIN | P5 | AGG |
|  | 6 | **Filtri** |  |  |  |  |  |  |  |  |  |  |  |  |  |
| CEP.HVA.M.10480 |  | Disponibilità Filtri in sito | milestone | 0d | CEP.HVA.S.40300 FF, CEP.HVA.D.12270 | 298d | 338d |  | CX1250 | 0 | HVA | SUP | DEM | P5 | MOD |
|  | 1 | **Documentazione iniziale** |  |  |  |  |  |  |  |  |  |  |  |  |  |
| CEP.HVA.D.12250 |  | Progettazione costruttiva Filtri |  | 30d | CEP.HVA.O.530 | 242d | 0d | 5D 8h ITA H + 2W 2036 | CX1250 | 0 | HVA | SUP | DEM | P5 | MOD |
| CEP.HVA.D.12350 |  | Approvazione Progettazione costruttiva Filtri |  | 20d | CEP.HVA.D.12250 | 242d | 0d | 5D 8h ITA H + 2W 2036 | CX1250 | 0 | HVA | SUP | SOGIN | P5 | AGG |
|  | 3 | **Fabbricazione Filtri** |  |  |  |  |  |  |  |  |  |  |  |  |  |
| CEP.HVA.F.40360 |  | Fabbricazione Filtri |  | 180d | CEP.HVA.D.12250, CEP.HVA.D.12350 | 298d | 0d |  | CX1250 | 0 | HVA | SUP | DEM | P5 | MOD |
| CEP.HVA.F.40370 |  | FAT Filtri |  | 5d | CEP.HVA.F.40360 | 298d | 0d |  | CX1250 | 0 | HVA | SUP | DEM | P5 | MOD |
|  | 5 | **Packaging e trasporto in sito** |  |  |  |  |  |  |  |  |  |  |  |  |  |
| CEP.HVA.S.40300 |  | Imballaggio e Trasporto in sito Filtri |  | 10d | CEP.HVA.F.40370, CEP.HVA.D.12270 FF | 298d | 0d |  | CX1250 | 0 | HVA | SUP | DEM | P5 | MOD |
|  | 6 | **Documentazione fine fabbricazione** |  |  |  |  |  |  |  |  |  |  |  |  |  |
| CEP.HVA.D.12260 |  | Dossier di fine fabbricazione Filtri |  | 5d | CEP.HVA.F.40370 | 243d | 0d | 5D 8h ITA H + 2W 2036 | CX1250 | 0 | HVA | SUP | DEM | P5 | MOD |
| CEP.HVA.D.12270 |  | Approvazione del Dossier di fine fabbricazione |  | 20d | CEP.HVA.D.12260 | 243d | 0d | 5D 8h ITA H + 2W 2036 | CX1250 | 0 | HVA | SUP | SOGIN | P5 | AGG |
|  | 7 | **Approvvigionamento bulk HVAC** |  |  |  |  |  |  |  |  |  |  |  |  |  |
|  | 9 | **Canali** |  |  |  |  |  |  |  |  |  |  |  |  |  |
|  | 1 | **Documentazione iniziale** |  |  |  |  |  |  |  |  |  |  |  |  |  |
| CEP.HVA.D.12460 |  | Progettazione costruttiva Canali |  | 30d | CEM.ENG.I.00050 | 342d | 0d | 5D 8h ITA H + 2W 2036 | CX1250 | 0 | HVA | SUP | DEM | P5 | MOD |
| CEP.HVA.D.12490 |  | Approvazione Progettazione costruttiva Canali |  | 20d | CEP.HVA.D.12460 | 342d | 0d | 5D 8h ITA H + 2W 2036 | CX1250 | 0 | HVA | SUP | SOGIN | P5 | AGG |

| ID | WBS | Activity | Duration | Predecessors | Total float | Free float | Calendar | CEMEX 2025 - Activity code Sogin | CEMEX LOCALE | CEMEX DISCIPLINE | CEMEX ACTIVITY TYPE | CEMEX RESPONSABILITY | CEMEX PARTITE | CEMEX REVISIONE | CEMEX SISTEMI |
| --- | --- | --- | --- | --- | --- | --- | --- | --- | --- | --- | --- | --- | --- | --- | --- |
|  | 3 | **Fabbricazione Canali** |  |  |  |  |  |  |  |  |  |  |  |  |  |
| CEP.HVA.F.40480 |  | Fabbricazione Canali | 180d | CEP.HVA.D.12460, CEP.HVA.D.12490 | 418d | 0d |  | CX1250 | 0 | HVA | SUP | DEM | P5 | MOD |  |
| CEP.HVA.F.40490 |  | Certificazioni e documentazione | 5d | CEP.HVA.F.40480 | 418d | 0d |  | CX1250 | 0 | HVA | SUP | DEM | P5 | MOD |  |
|  | 5 | **Packaging e trasporto in sito** |  |  |  |  |  |  |  |  |  |  |  |  |  |
| CEP.HVA.S.40360 |  | Imballaggio e Trasporto in sito Canali e fitting | 10d | CEP.HVA.F.40490, CEP.HVA.D.12480 FF | 418d | 458d |  | CX1250 | 0 | HVA | SUP | DEM | P5 | MOD |  |
|  | 2 | **Documentazione fine fabbricazione** |  |  |  |  |  |  |  |  |  |  |  |  |  |
| CEP.HVA.D.12470 |  | Dossier di fine fabbricazione Condotti | 5d | CEP.HVA.F.40490 | 342d | 0d | 5D 8h ITA H + 2W 2036 | CX1250 | 0 | HVA | SUP | DEM | P5 | MOD |  |
| CEP.HVA.D.12480 |  | Approvazione del Dossier di fine fabbricazione | 20d | CEP.HVA.D.12470 | 342d | 0d | 5D 8h ITA H + 2W 2036 | CX1250 | 0 | HVA | SUP | SOGIN | P5 | AGG |  |
|  | 11 | **Condizionatori** |  |  |  |  |  |  |  |  |  |  |  |  |  |
|  | 1 | **Documentazione iniziale** |  |  |  |  |  |  |  |  |  |  |  |  |  |
| CEP.HVA.D.12500 |  | Progettazione costruttiva Condizionatori | 30d | CEM.ENG.I.00050 | 342d | 0d | 5D 8h ITA H + 2W 2036 | CX1250 | 0 | HVA | SUP | DEM | P5 | MOD |  |
| CEP.HVA.D.12530 |  | Approvazione Progettazione costruttiva Condizionatori | 20d | CEP.HVA.D.12500 | 342d | 0d | 5D 8h ITA H + 2W 2036 | CX1250 | 0 | HVA | SUP | SOGIN | P5 | AGG |  |
|  | 3 | **Fabbricazione Condizionatori** |  |  |  |  |  |  |  |  |  |  |  |  |  |
| CEP.HVA.F.40500 |  | Fabbricazione Condizionatori | 180d | CEP.HVA.D.12500, CEP.HVA.D.12530 | 418d | 0d |  | CX1250 | 0 | HVA | SUP | DEM | P5 | MOD |  |
| CEP.HVA.F.40510 |  | Certificazioni e documentazione | 5d | CEP.HVA.F.40500 | 418d | 0d |  | CX1250 | 0 | HVA | SUP | DEM | P5 | MOD |  |
|  | 5 | **Packaging e trasporto in sito** |  |  |  |  |  |  |  |  |  |  |  |  |  |
| CEP.HVA.S.40370 |  | Imballaggio e Trasporto in sito Canali e fitting | 10d | CEP.HVA.F.40510, CEP.HVA.D.12520 FF | 418d | 458d |  | CX1250 | 0 | HVA | SUP | DEM | P5 | MOD |  |
|  | 2 | **Documentazione fine fabbricazione** |  |  |  |  |  |  |  |  |  |  |  |  |  |
| CEP.HVA.D.12510 |  | Dossier di fine fabbricazione Condizionatori | 5d | CEP.HVA.F.40510 | 342d | 0d | 5D 8h ITA H + 2W 2036 | CX1250 | 0 | HVA | SUP | DEM | P5 | MOD |  |
| CEP.HVA.D.12520 |  | Approvazione del Dossier di fine fabbricazione | 20d | CEP.HVA.D.12510 | 342d | 0d | 5D 8h ITA H + 2W 2036 | CX1250 | 0 | HVA | SUP | SOGIN | P5 | AGG |  |
|  | 10 | **Realizzazione sistema di automazione e controllo** |  |  |  |  |  |  |  |  |  |  |  |  |  |
| CED.I&C.Q.00100 |  | Fornitura quadri automazione e controllo HVAC CPU 83B-SK005X | 240d | CEP.ELE.D.00010 | 608d | 153d |  | CX1840 | 87 | I&C |  | DEM | P6 |  | 83B |
|  | 5 | **Realizzazione carroponte 53B-DW001 (L.61,67) e 53B-DW002 (L.62) e Carrello 53B-DW003 (L.60B)** |  |  |  |  |  |  |  |  |  |  |  |  |  |
|  | 0 | **Ordini per Carriponte** |  |  |  |  |  |  |  |  |  |  |  |  |  |
| CED.CRA.O.01010 |  | Specifica di Acquisto carroponte 53B-DW001 | 10d | CEM.ENG.I.00040 | 133d | 0d | 5D 8h ITA H + 2W 2036 | CX1190 | 0 | CRA | SUP | ANN | P2 |  | 53B |
| CED.CRA.O.01020 |  | Ordine carroponte 53B-DW001 | 40d | CED.CRA.O.01010 | 133d | 0d | 5D 8h ITA H + 2W 2036 | CX1190 | 0 | CRA | SUP | ANN | P2 |  | 53B |
| CED.CRA.O.02010 |  | Specifica di Acquisto carroponte 53B-DW002 | 10d | CEM.ENG.I.00040 | 173d | 0d | 5D 8h ITA H + 2W 2036 | CX1190 | 0 | CRA | SUP | ANN | P2 |  | 53B |
| CED.CRA.O.02020 |  | Ordine carroponte 53B-DW002 | 40d | CED.CRA.O.02010 | 173d | 0d | 5D 8h ITA H + 2W 2036 | CX1190 | 0 | CRA | SUP | ANN | P2 |  | 53B |
| CED.CRA.O.03010 |  | Specifica di Acquisto carrello 53B-DW003 | 10d | CEM.ENG.I.00040 | 213d | 0d | 5D 8h ITA H + 2W 2036 | CX1190 | 0 | CRA | SUP | ANN | P2 |  |  |
| CED.CRA.O.03020 |  | Ordine carrello 53B-DW003 | 40d | CED.CRA.O.03010 | 213d | 80d | 5D 8h ITA H + 2W 2036 | CX1190 | 0 | CRA | SUP | ANN | P2 |  |  |

| ID | WBS | Activity | Duration | Predecessors | Total float | Free float | Calendar | CEMEX 2025 - Activity code Sogin | CEMEX LOCALE | CEMEX DISCIPLINE | CEMEX ACTIVITY TYPE | CEMEX RESPONSABILITY | CEMEX PARTITE | CEMEX SISTEMI | Note |
| --- | --- | --- | --- | --- | --- | --- | --- | --- | --- | --- | --- | --- | --- | --- | --- |
|  | 1 | **Realizzazione carriponte 53B-DW001** |  |  |  |  |  |  |  |  |  |  |  |  |  |
|  | 1 | **Progettazione di dettaglio 53B-DW001** |  |  |  |  |  |  |  |  |  |  |  |  |  |
| CED.CRA.D.01010 |  | Disegni carroponte 53B-DW001 | 40d | CED.CRA.O.01020 | 133d | 0d | 5D 8h ITA H + 2W 2036 | CX1190 | 0 | CRA | SUP | ANN | P2 | 53B |  |
| CED.CRA.D.01020 |  | Report di calcolo carroponte 53B-DW001 | 30d | CED.CRA.D.01010 SS+30d | 234d | 10d | 5D 8h ITA H + 2W 2036 | CX1190 | 0 | CRA | SUP | ANN | P2 | 53B |  |
| CED.CRA.D.01030 |  | Procedure carroponte 53B-DW001 | 30d | CED.CRA.D.01010 | 224d | 0d | 5D 8h ITA H + 2W 2036 | CX1190 | 0 | CRA | SUP | ANN | P2 | 53B |  |
| CED.CRA.D.01040 |  | Piani di controllo carroponte 53B-DW001 | 30d | CED.CRA.D.01010 | 224d | 0d | 5D 8h ITA H + 2W 2036 | CX1190 | 0 | CRA | SUP | ANN | P2 | 53B |  |
| CED.CRA.D.01060 |  | Approvazione del cliente per fabbricazione carroponte 53B-DW001 | 10d | CED.CRA.D.01040, CED.CRA.D.01030, CED.CRA.D.01020 | 224d | 0d | 5D 8h ITA H + 2W 2036 | CX1190 | 0 | CRA | SUP | SOGIN | P2 |  |  |
|  | 2 | **Approvvigionamento materiali 53B-DW001** |  |  |  |  |  |  |  |  |  |  |  |  |  |
| CED.CRA.M.01010 |  | Approvvigionamento materiali carroponte 53B-DW001 | 115d | CED.CRA.D.01060 | 277d | 0d |  | CX1190 | 0 | CRA | SUP | ANN | P2 | 53B | Aumentato di 75d |
|  | 3 | **Fabbricazione 53B-DW001** |  |  |  |  |  |  |  |  |  |  |  |  |  |
| CED.CRA.F.01010 |  | Lavorazioni preliminari carroponte 53B-DW001 | 120d | CED.CRA.M.01010, CEP.CRA.Q.00060, CEP.CRA.Q.00110 | 277d | 0d |  | CX1190 | 0 | CRA | SUP | ANN | P2 | 53B | Aumentato di 100d |
| CED.CRA.F.01020 |  | Assemblaggio carroponte 53B-DW001 | 180d | CED.CRA.F.01010 | 277d | 0d |  | CX1190 | 0 | CRA | SUP | ANN | P2 | 53B |  |
| CED.CRA.F.01030 |  | NDE carroponte 53B-DW001 | 20d | CED.CRA.F.01020 | 277d | 0d |  | CX1190 | 0 | CRA | SUP | ANN | P2 | 53B |  |
|  | 4 | **Prove di officina 53B-DW001** |  |  |  |  |  |  |  |  |  |  |  |  |  |
| CED.CRA.T.01010 |  | Prove di officina carroponte 53B-DW001 | 30d | CED.CRA.F.01030 | 277d | 1d |  | CX1190 | 0 | CRA | SUP | ANN | P2 | 53B |  |
|  | 5 | **Documentazione finale 53B-DW001** |  |  |  |  |  |  |  |  |  |  |  |  |  |
| CED.CRA.D.01070 |  | Emissione Dossier di Fine Fabbricazione (DFF) carroponte 53B-DW001 | 30d | CED.CRA.T.01010 | 227d | 0d | 5D 8h ITA H + 2W 2036 | CX1190 | 0 | CRA | SUP | ANN | P2 | 53B |  |
| CED.CRA.D.01080 |  | Approvazione del cliente carroponte 53B-DW001 | 20d | CED.CRA.D.01070 | 227d | 0d | 5D 8h ITA H + 2W 2036 | CX1190 | 0 | CRA | SUP | SOGIN | P2 |  |  |
|  | 6 | **Packaging e trasporto in sito 53B-DW001** |  |  |  |  |  |  |  |  |  |  |  |  |  |
| CED.CRA.S.01010 |  | Imballaggio e trasporto in sito carroponte 53B-DW001 | 10d | CED.CRA.D.01080 | 277d | 0d |  | CX1190 | 0 | CRA | SUP | ANN | P2 | 53B |  |
|  | 2 | **Realizzazione carriponte 53B-DW002** |  |  |  |  |  |  |  |  |  |  |  |  |  |
|  | 1 | **Progettazione di dettaglio 53B-DW002** |  |  |  |  |  |  |  |  |  |  |  |  |  |
| CED.CRA.D.02010 |  | Disegni carroponte 53B-DW002 | 40d | CED.CRA.D.01010, CED.CRA.O.02020 | 133d | 0d | 5D 8h ITA H + 2W 2036 | CX1190 | 0 | CRA | SUP | ANN | P2 | 53B |  |
| CED.CRA.D.02020 |  | Report di calcolo carroponte 53B-DW002 | 30d | CED.CRA.D.02010 SS+30d | 216d | 10d | 5D 8h ITA H + 2W 2036 | CX1190 | 0 | CRA | SUP | ANN | P2 | 53B |  |
| CED.CRA.D.02030 |  | Procedure carroponte 53B-DW002 | 30d | CED.CRA.D.02010 | 206d | 0d | 5D 8h ITA H + 2W 2036 | CX1190 | 0 | CRA | SUP | ANN | P2 | 53B |  |
| CED.CRA.D.02040 |  | Piani di controllo carroponte 53B-DW002 | 30d | CED.CRA.D.02010 | 206d | 0d | 5D 8h ITA H + 2W 2036 | CX1190 | 0 | CRA | SUP | ANN | P2 | 53B |  |
| CED.CRA.D.02060 |  | Approvazione del cliente per fabbricazione carroponte 53B-DW002 | 10d | CED.CRA.D.02040, CED.CRA.D.02030, CED.CRA.D.02020 | 206d | 0d | 5D 8h ITA H + 2W 2036 | CX1190 | 0 | CRA | SUP | SOGIN | P2 |  |  |

| ID | WBS | Activity | Duration | Predecessors | Total float | Free float | Calendar | Note | CEMEX 2025 - Activity code Sogin | CEMEX LOCALE | CEMEX DISCIPLINE | CEMEX ACTIVITY TYPE | CEMEX RESPONSABILITY | CEMEX PARTITE | CEMEX SISTEMI | CEMEX REVISIONE |
| --- | --- | --- | --- | --- | --- | --- | --- | --- | --- | --- | --- | --- | --- | --- | --- | --- |
|  | 2 | **Approvvigionamento materiali 53B-DW002** |  |  |  |  |  |  |  |  |  |  |  |  |  |  |
| CED.CRA.M.02010 |  | Approvvigionamento materiali carroponte 53B-DW002 | 120d | CED.CRA.D.02060 | 255d | 0d |  | Aumentato di 80d | CX1190 | 0 | CRA | SUP | ANN | P2 | 53B |  |
|  | 3 | **Fabbricazione 53B-DW002** |  |  |  |  |  |  |  |  |  |  |  |  |  |  |
| CED.CRA.F.02010 |  | Lavorazioni preliminari carroponte 53B-DW002 | 120d | CED.CRA.M.02010, CEP.CRA.Q.00060, CEP.CRA.Q.00110 | 255d | 0d |  | Aumentato di 100d | CX1190 | 0 | CRA | SUP | ANN | P2 | 53B |  |
| CED.CRA.F.02020 |  | Assemblaggio carroponte 53B-DW002 | 180d | CED.CRA.F.02010 | 255d | 0d |  |  | CX1190 | 0 | CRA | SUP | ANN | P2 | 53B |  |
| CED.CRA.F.02030 |  | NDE carroponte 53B-DW002 | 20d | CED.CRA.F.02020 | 255d | 0d |  |  | CX1190 | 0 | CRA | SUP | ANN | P2 | 53B |  |
|  | 4 | **Prove di officina 53B-DW002** |  |  |  |  |  |  |  |  |  |  |  |  |  |  |
| CED.CRA.T.02010 |  | Prove di officina carroponte 53B-DW002 | 30d | CED.CRA.F.02030 | 255d | 0d |  |  | CX1190 | 0 | CRA | SUP | ANN | P2 | 53B |  |
|  | 5 | **Documentazione finale 53B-DW002** |  |  |  |  |  |  |  |  |  |  |  |  |  |  |
| CED.CRA.D.02070 |  | Emissione Dossier di Fine Fabbricazione (DFF) carroponte 53B-DW002 | 30d | CED.CRA.T.02010 | 208d | 0d | 5D 8h ITA H + 2W 2036 |  | CX1190 | 0 | CRA | SUP | ANN | P2 | 53B |  |
| CED.CRA.D.02080 |  | Approvazione del cliente carroponte 53B-DW002 | 20d | CED.CRA.D.02070 | 208d | 0d | 5D 8h ITA H + 2W 2036 |  | CX1190 | 0 | CRA | SUP | SOGIN | P2 |  |  |
|  | 6 | **Packaging e trasporto in sito 53B-DW002** |  |  |  |  |  |  |  |  |  |  |  |  |  |  |
| CED.CRA.S.02010 |  | Imballaggio e trasporto in sito carroponte 53B-DW002 | 10d | CED.CRA.D.02080 | 255d | 0d |  |  | CX1190 | 0 | CRA | SUP | ANN | P2 | 53B |  |
|  | 3 | **Realizzazione carrello 53B-DW003** |  |  |  |  |  |  |  |  |  |  |  |  |  |  |
|  | 1 | **Progettazione di dettaglio 53B-DW003** |  |  |  |  |  |  |  |  |  |  |  |  |  |  |
| CED.CRA.D.03010 |  | Disegni carrello 53B-DW003 | 90d | CED.CRA.D.02010, CED.CRA.O.03020 | 133d | 0d | 5D 8h ITA H + 2W 2036 |  | CX1190 | 0 | CRA | SUP | DEM | P3 | 53B | MOD |
| CED.CRA.D.03020 |  | Report di calcolo carrello 53B-DW003 | 80d | CED.CRA.D.03010 SS+30d | 153d | 20d | 5D 8h ITA H + 2W 2036 |  | CX1190 | 0 | CRA | SUP | DEM | P3 | 53B | MOD |
| CED.CRA.D.03030 |  | Procedure carrello 53B-DW003 | 40d | CED.CRA.D.03010 | 133d | 0d | 5D 8h ITA H + 2W 2036 |  | CX1190 | 0 | CRA | SUP | DEM | P3 | 53B | MOD |
| CED.CRA.D.03040 |  | Piani di controllo carrello 53B-DW003 | 40d | CED.CRA.D.03010 | 133d | 0d | 5D 8h ITA H + 2W 2036 |  | CX1190 | 0 | CRA | SUP | DEM | P3 | 53B | MOD |
| CED.CRA.D.03060 |  | Approvazione del cliente per fabbricazione carrello 53B-DW003 | 10d | CED.CRA.D.03040, CED.CRA.D.03030, CED.CRA.D.03020 | 133d | 0d | 5D 8h ITA H + 2W 2036 |  | CX1190 | 0 | CRA | SUP | SOGIN | P3 |  |  |
|  | 2 | **Approvvigionamento materiali 53B-DW003** |  |  |  |  |  |  |  |  |  |  |  |  |  |  |
| CED.CRA.M.03010 |  | Approvvigionamento materiali carrello 53B-DW003 | 180d | CED.CRA.D.03060 | 160d | 0d |  |  | CX1190 | 0 | CRA | SUP | DEM | P3 | 53B | MOD |
|  | 3 | **Fabbricazione 53B-DW003** |  |  |  |  |  |  |  |  |  |  |  |  |  |  |
| CED.CRA.F.03010 |  | Lavorazioni preliminari carrello 53B-DW003 | 120d | CED.CRA.M.03010, CEP.CRA.Q.00060, CEP.CRA.Q.00110 | 160d | 0d |  |  | CX1190 | 0 | CRA | SUP | DEM | P3 | 53B | MOD |
| CED.CRA.F.03020 |  | Assemblaggio carrello 53B-DW003 | 180d | CED.CRA.F.03010 | 160d | 0d |  |  | CX1190 | 0 | CRA | SUP | DEM | P3 | 53B | MOD |
| CED.CRA.F.03030 |  | NDE carrello 53B-DW003 | 90d | CED.CRA.F.03020 | 160d | 0d |  |  | CX1190 | 0 | CRA | SUP | DEM | P3 | 53B | MOD |

| ID | WBS | Activity | Type | Duration | Predecessors | Total float | Free float | Constraint | Calendar | CEMEX 2025 - Activity code Sogin | CEMEX LOCALE | CEMEX DISCIPLINE | CEMEX ACTIVITY TYPE | CEMEX RESPONSABILITY | CEMEX PARTITE | CEMEX SISTEMI | CEMEX REVISIONE |
| --- | --- | --- | --- | --- | --- | --- | --- | --- | --- | --- | --- | --- | --- | --- | --- | --- | --- |
|  | 4 | **Prove di officina 53B-DW003** |  |  |  |  |  |  |  |  |  |  |  |  |  |  |  |
| CED.CRA.T.03010 |  | Prove di officina carrello 53B-DW003 |  | 90d | CED.CRA.F.03030 | 160d | 0d |  |  | CX1190 | 0 | CRA | SUP | DEM | P3 | 53B | MOD |
|  | 5 | **Documentazione finale 53B-DW003** |  |  |  |  |  |  |  |  |  |  |  |  |  |  |  |
| CED.CRA.D.03070 |  | Emissione Dossier di Fine Fabbricazione (DFF) carrello 53B-DW003 |  | 30d | CED.CRA.T.03010 | 129d | 0d |  | 5D 8h ITA H + 2W 2036 | CX1190 | 0 | CRA | SUP | DEM | P3 | 53B | MOD |
| CED.CRA.D.03080 |  | Approvazione del cliente carrello 53B-DW003 |  | 20d | CED.CRA.D.03070 | 129d | 0d |  | 5D 8h ITA H + 2W 2036 | CX1190 | 0 | CRA | SUP | SOGIN | P3 |  |  |
|  | 6 | **Packaging e trasporto in sito 53B-DW003** |  |  |  |  |  |  |  |  |  |  |  |  |  |  |  |
| CED.CRA.S.03010 |  | Imballaggio e trasporto in sito carrello 53B-DW003 |  | 10d | CED.CRA.D.03080 | 161d | 19d |  |  | CX1190 | 0 | CRA | SUP | ANN | P3 | 53B |  |
|  | 19 | **Realizzazione Camino** |  |  |  |  |  |  |  |  |  |  |  |  |  |  |  |
|  | 1 | **Ordini materiali** |  |  |  |  |  |  |  |  |  |  |  |  |  |  |  |
| CED.CAM.O.00010 |  | Specifiche e ordini per materiali camino (lamiere vari spessori, grigliati, pezzi speciali) |  | 30d | CEM.ENG.I.00040 | 294d | 0d | start on or after 03/07/2028 | 5D 8h ITA H + 2W 2036 | CX1860 | 0 | CAM | SUP | DEM | P5 |  |  |
|  | 5 | **Progettazione costruttiva** |  |  |  |  |  |  |  |  |  |  |  |  |  |  |  |
| CED.CAM.O.00020 |  | Elaborazione disegni costruttivi camino |  | 36d | CED.CAM.O.00010 | 294d | 0d |  | 5D 8h ITA H + 2W 2036 | CX1860 | 0 | CAM | SUP | DEM | P5 |  |  |
| CED.CAM.O.00030 |  | Approvazione disegni costruttivi camino |  | 20d | CED.CAM.O.00020 | 294d | 0d |  | 5D 8h ITA H + 2W 2036 | CX1860 | 0 | CAM | SUP | SOGIN | P5 |  |  |
|  | 2 | **Approvvigionamento materiali** |  |  |  |  |  |  |  |  |  |  |  |  |  |  |  |
| CED.CAM.M.00010 |  | Approvvigionamento materiali (lamiere vari spessori, grigliati, pezzi speciali) |  | 120d | CED.CAM.O.00010 | 372d | 13d |  |  | CX1860 | 0 | CAM | SUP | DEM | P5 |  |  |
|  | 3 | **Fabbricazione e preassemblaggio camino** |  |  |  |  |  |  |  |  |  |  |  |  |  |  |  |
| CED.CAM.F.00010 |  | Lavorazioni preliminari (taglio e foratura lamiere, calandrature virole) |  | 60d | CED.CAM.O.00020, CED.CAM.M.00010 SS+36d, CED.CAM.O.00030 | 359d | 0d |  |  | CX1860 | 0 | CAM | SUP | DEM | P5 |  | MOD |
| CED.CAM.F.00020 |  | Assemblaggio delle flange e delle costole irrigidenti ai tronchi |  | 60d | CED.CAM.F.00010, CED.CAM.O.00020, CED.CAM.M.00010, CED.CAM.O.00030 | 359d | 0d |  |  | CX1860 | 0 | CAM | SUP | DEM | P5 |  | MOD |
|  | 4 | **Packaging e trasporto in sito** |  |  |  |  |  |  |  |  |  |  |  |  |  |  |  |
| CED.CAM.P.00010 |  | Imballaggio e trasporto in sito |  | 12d | CED.CAM.F.00020 | 359d | 0d |  |  | CX1860 | 0 | CAM | SUP | DEM | P5 |  | MOD |
|  | 5 | **Realizzazione edificio processo e test** |  |  |  |  |  |  |  |  |  |  |  |  |  |  |  |
|  | 5 | **Realizzazione opere strutturali civili** |  |  |  |  |  |  |  |  |  |  |  |  |  |  |  |
|  | 11 | **Attività preliminari** |  |  |  |  |  |  |  |  |  |  |  |  |  |  |  |
| CEP.CIV.A.00010 |  | Avvio cantiere edificio processo | milestone | 0d | CEP.MOB.I.00010, CEM.MLS.C.00020 | -3d | 0d |  |  | CX1410 | 0 | CIV |  | COS | P1 |  |  |
| CEP.CIV.A.00020 |  | Pulizia e trattamenti per ripresa dei getti e ferri di armatura |  | 48d | CEP.CIV.A.00010 SS | -3d | 0d |  |  | CX1410 | 0 | CIV |  | COS | P1 |  |  |
| CEP.CIV.A.00030 |  | Predisposizione ammorsamenti e scassi |  | 42d | CEP.CIV.A.00020 SS+20d | -3d | 0d |  |  | CX1410 | 0 | CIV |  | COS | P1 |  |  |

| ID | WBS | Activity | Type | Duration | Predecessors | Total float | Free float | CEMEX 2025 - Activity code Sogin | CEMEX LOCALE | CEMEX DISCIPLINE | CEMEX RESPONSABILITY | CEMEX PARTITE |
| --- | --- | --- | --- | --- | --- | --- | --- | --- | --- | --- | --- | --- |
|  | 2 | **Realizzazione pareti da q.ta 0.00m a 6.00m (120 m3 - 15 t)** |  |  |  |  |  |  |  |  |  |  |
| CEP.CIV.P.00000 |  | Realizzazione pareti da q.ta 0.00m a 6.00m (120 m3 - 15 t) SUMMARY | WBS summary | 80d |  | -3d | 2504d | CX1420 | 0 | CIV | COS | P1 |
| CEP.CIV.P.00020 |  | Posizionamento armatura e casseri q.ta 0.00m a 6.00m |  | 50d | CEP.CIV.A.00030 SS+30d | -3d | 0d | CX1420 | 0 | CIV | COS | P1 |
| CEP.CIV.P.00030 |  | Fasi di getto calcestruzzo q.ta 0.00m a 6.00m |  | 50d | CEP.CIV.A.00030, CEP.CIV.P.00020 SS+30d | -3d | 0d | CX1420 | 0 | CIV | COS | P1 |
|  | 3 | **Realizzazione soletta a q.ta 6.00m (440 m3 - 53 t)** |  |  |  |  |  |  |  |  |  |  |
| CEP.CIV.S.06000 |  | Realizzazione soletta a q.ta 6.00m (440 m3 - 53 t) SUMMARY | WBS summary | 134d |  | -3d | 2405d | CX1430 | 0 | CIV | COS | P1 |
| CEP.CIV.S.06010 |  | Approvvigionamento elementi prefabbricati q.ta 6.00m |  | 48d | CEP.CIV.P.00030 SS+15d | 12d | 15d | CX1430 | 0 | CIV | COS | P1 |
| CEP.CIV.S.06020 |  | Montaggio elementi prefabbricati e puntellamento q.ta 6.00m |  | 24d | CEP.CIV.P.00030, CEP.CIV.S.06010 SS+20d, CEP.CIV.P.00020 | -3d | 0d | CX1430 | 0 | CIV | COS | P1 |
| CEP.CIV.S.06030 |  | Posizionamento armatura e casseri q.ta 6.00m |  | 70d | CEP.CIV.S.06020 SS+9d | -3d | 0d | CX1430 | 0 | CIV | COS | P1 |
| CEP.CIV.S.06040 |  | Fasi di getto calcestruzzo q.ta 6.00m |  | 70d | CEP.CIV.S.06030 SS+20d | -3d | 0d | CX1430 | 0 | CIV | COS | P1 |
|  | 4 | **Realizzazione pareti q.ta da 6.00 a 12.00 (921 m3 - 118 t )** |  |  |  |  |  |  |  |  |  |  |
| CEP.CIV.P.06000 |  | Realizzazione pareti q.ta da 6.00 a 12.00 (921 m3 - 118 t ) SUMMARY | WBS summary | 68d |  | -70d | 2278d | CX1440 | 0 | CIV | COS | P1 |
| CEP.CIV.P.06010 |  | Posizionamento armatura e casseri q.ta da 6.00 a 12.00 |  | 60d | CEP.CIV.S.06030, CEP.CIV.O.00050 | -70d | 0d | CX1440 | 0 | CIV | COS | P1 |
| CEP.CIV.P.06020 |  | Fasi di getto calcestruzzo q.ta da 6.00 a 12.00 |  | 60d | CEP.CIV.S.06040, CEP.CIV.P.06010 SS+8d | -70d | 0d | CX1440 | 0 | CIV | COS | P1 |
|  | 5 | **Realizzazione soletta a q.ta 12.00 (698 m3 - 90 t)** |  |  |  |  |  |  |  |  |  |  |
| CEP.CIV.S.12000 |  | Realizzazione soletta a q.ta 12.00 (698 m3 - 90 t) SUMMARY | WBS summary | 221d |  | -70d | 2204d | CX1450 | 0 | CIV | COS | P1 |
| CEP.CIV.S.12010 |  | Approvvigionamento elementi prefabbricati a q.ta 12.00 |  | 70d | CEP.CIV.S.06030 | 7d | 77d | CX1450 | 0 | CIV | COS | P1 |
| CEP.CIV.S.12020 |  | Montaggio elementi prefabbricati e puntellamento a q.ta 12.00 |  | 24d | CEP.CIV.S.12010, CEP.CIV.P.06020, CEP.CIV.O.00030 FF | -70d | 0d | CX1450 | 0 | CIV | COS | P1 |
| CEP.CIV.S.12030 |  | Posizionamento armatura e casseri a q.ta 12.00 |  | 60d | CEP.CIV.S.12020 SS+6d, CEP.CIV.P.06010 | -70d | 0d | CX1450 | 0 | CIV | COS | P1 |
| CEP.CIV.S.12040 |  | Fasi di getto calcestruzzo a q.ta 12.00 |  | 60d | CEP.CIV.S.12030 SS+8d, CEP.CIV.P.06020 | -70d | 0d | CX1450 | 0 | CIV | COS | P1 |
|  | 6 | **Realizzazione pareti q.ta da 12.00 a 18.00 (711 m3 - 90 t)** |  |  |  |  |  |  |  |  |  |  |
| CEP.CIV.P.12000 |  | Realizzazione pareti q.ta da 12.00 a 18.00 (711 m3 - 90 t) SUMMARY | WBS summary | 50d |  | 104d | 2162d | CX1460 | 0 | CIV | COS | P1 |
| CEP.CIV.P.12010 |  | Posizionamento armatura e casseri q.ta da 12.00 a 18.00 |  | 48d | CEP.CIV.S.12030 | 104d | 0d | CX1460 | 0 | CIV | COS | P1 |
| CEP.CIV.P.12020 |  | Fasi di getto calcestruzzo q.ta da 12.00 a 18.00 |  | 42d | CEP.CIV.S.12040, CEP.CIV.P.12010 SS+8d | 104d | 15d | CX1460 | 0 | CIV | COS | P1 |

| ID | WBS | Activity | Type | Duration | Predecessors | Total float | Free float | CEMEX 2025 - Activity code Sogin | CEMEX LOCALE | CEMEX DISCIPLINE | CEMEX RESPONSABILITY | CEMEX PARTITE | Note |
| --- | --- | --- | --- | --- | --- | --- | --- | --- | --- | --- | --- | --- | --- |
|  | 7 | **Realizzazione soletta a q.ta 18.00 (531 m3 - 66 t)** |  |  |  |  |  |  |  |  |  |  |  |
| CEP.CIV.S.18000 |  | Realizzazione soletta a q.ta 18.00 (531 m3 - 66 t) SUMMARY | WBS summary | 133d |  | 89d | 2079d | CX1470 | 0 | CIV | COS | P1 |  |
| CEP.CIV.S.18010 |  | Approvvigionamento elementi prefabbricati a q.ta 18.00 |  | 65d | CEP.CIV.S.12030 | 89d | 0d | CX1470 | 0 | CIV | COS | P1 |  |
| CEP.CIV.S.18020 |  | Montaggio elementi prefabbricati e puntellamento a q.ta 18.00 |  | 24d | CEP.CIV.S.18010, CEP.CIV.P.12020 | 89d | 0d | CX1470 | 0 | CIV | COS | P1 |  |
| CEP.CIV.S.18030 |  | Posizionamento armatura e casseri a q.ta 18.00 |  | 54d | CEP.CIV.P.12010, CEP.CIV.S.18020 SS+6d | 89d | 0d | CX1470 | 0 | CIV | COS | P1 |  |
| CEP.CIV.S.18040 |  | Fasi di getto calcestruzzo a q.ta 18.00 |  | 54d | CEP.CIV.P.12020, CEP.CIV.S.18030 SS+8d | 89d | 0d | CX1470 | 0 | CIV | COS | P1 |  |
|  | 8 | **Pacchetto di copertura e strutture provvisorie di chiusura varchi costruibilità** |  |  |  |  |  |  |  |  |  |  |  |
| CEP.CIV.C.00000 |  | Realizzazione pacchetto di copertura SUMMARY | WBS summary | 62d |  | 141d | 2049d | CX1480 | 0 | CIV | COS | P1 |  |
| CEP.CIV.M.00000 |  | Completamento copertura | milestone | 0d | CEP.CIV.VT.00030 FF, CEP.CIV.C.00030 FF | 141d | 27d | CX1480 | 0 | CIV | COS | P1 |  |
|  | 1 | **Pacchetto di copertura** |  |  |  |  |  |  |  |  |  |  |  |
| CEP.CIV.C.00010 |  | Realizzazione massetto delle pendenze |  | 12d | CEP.CIV.S.18040 | 89d | 0d | CX1480 | 0 | CIV | COS | P1 |  |
| CEP.CIV.C.00020 |  | Posa barriera al vapore ed isolmento termico |  | 6d | CEP.CIV.C.00010 | 89d | 0d | CX1480 | 0 | CIV | COS | P1 |  |
| CEP.CIV.C.00030 |  | Posa doppia membrana impermeabile |  | 12d | CEP.CIV.C.00020 | 89d | 0d | CX1480 | 0 | CIV | COS | P1 |  |
|  | 2 | **Strutture provvisorie di chiusura varchi costruibilità** |  |  |  |  |  |  |  |  |  |  |  |
| CEP.CIV.VT.00010 |  | Approvvigionamento materiali (acciaio, cordoli in c.a., porte) |  | 24d | CEP.CIV.S.18030 FF | 143d | 0d | CX1480 | 0 | CIV | COS | P1 |  |
| CEP.CIV.VT.00020 |  | Attività di officina |  | 24d | CEP.CIV.VT.00010 | 143d | 2d | CX1480 | 0 | CIV | COS | P1 |  |
| CEP.CIV.VT.00030 |  | Montaggio in sito |  | 12d | CEP.CIV.VT.00020, CEP.CIV.C.00030 FF | 141d | 0d | CX1480 | 0 | CIV | COS | P1 |  |
|  | 9 | **Realizzazione finiture (incluso resina e pittura decontaminabile)** |  |  |  |  |  |  |  |  |  |  |  |
|  | 1 | **Realizzazione finiture di q.ta 0.00m** |  |  |  |  |  |  |  |  |  |  |  |
| CEP.CIV.F.00000 |  | Realizzazione finiture di q.ta 0.00m SUMMARY | WBS summary | 170d |  | 39d | 2084d | CX1490 | 0 | CIV | COS | P1 |  |
| CEP.CIV.F.00015 |  | Approvvigionamento e preparazione materiale in officina q.ta 0.00m |  | 80d | CEP.CIV.S.06040, CEP.CIV.S.12040 SS+10d | -70d | 0d | CX1490 | 0 | CIV | COS | P1 | Diminuito di 10d |
| CEP.CIV.F.00050 |  | Montaggio infissi q.ta 0.00m |  | 24d | CEP.CIV.F.00090, CEP.CIV.F.00070 | -8d | 0d | CX1490 | 0 | CIV | COS | P1 | Aumentato del 10% |
| CEP.CIV.F.00080 |  | Realizzazione finiture pareti interne e soffitti q.ta 0.00m |  | 50d | CEP.CIV.F.00015, CEP.CIV.S.12020, CEP.CIV.S.06040, CEP.CIV.S.12040 | -70d | 0d | CX1490 | 0 | CIV | COS | P1 |  |
| CEP.CIV.F.00090 |  | Realizzazione liner in acciaio inox q.ta 0.00m |  | 54d | CEP.CIV.F.00080 SS+12d | -8d | 0d | CX1490 | 0 | CIV | COS | P1 |  |
| CEP.CIV.F.00100 |  | Realizzazione pavimentazioni interne q.ta 0.00m |  | 60d | CEP.CIV.F.00090 SS+12d | 45d | 0d | CX1490 | 0 | CIV | COS | P1 |  |

| ID | WBS | Activity | Type | Duration | Predecessors | Total float | Free float | Note | CEMEX 2025 - Activity code Sogin | CEMEX LOCALE | CEMEX DISCIPLINE | CEMEX RESPONSABILITY | CEMEX PARTITE | CEMEX ACTIVITY TYPE | CEMEX REVISIONE | CEMEX SISTEMI |
| --- | --- | --- | --- | --- | --- | --- | --- | --- | --- | --- | --- | --- | --- | --- | --- | --- |
|  | 2 | **Realizzazione finiture di q.ta 6.00m** |  |  |  |  |  |  |  |  |  |  |  |  |  |  |
| CEP.CIV.F.04000 |  | Realizzazione finiture di q.ta 6.00m SUMMARY | WBS summary | 176d |  | -70d | 1998d | Diminuito di 13d | CX1490 | 0 | CIV | COS | P1 |  |  |  |
| CEP.CIV.F.04010 |  | Approvvigionamento e preparazione materiale in officina q.ta 6.00m |  | 72d | CEP.CIV.F.00015 | -46d | 0d |  | CX1490 | 0 | CIV | COS | P1 |  |  |  |
| CEP.CIV.F.04020 |  | Realizzazione finiture pareti interne e soffitti q.ta 6.00m |  | 60d | CEP.CIV.F.04010 SS+10d, CEP.CIV.F.00080, CEP.CIV.S.06040 | -70d | 0d |  | CX1490 | 0 | CIV | COS | P1 |  |  |  |
| CEP.CIV.F.04030 |  | Realizzazione liner in acciaio inox q.ta 6.00m |  | 18d | CEP.CIV.F.04020 SS | -70d | 0d |  | CX1490 | 0 | CIV | COS | P1 |  |  |  |
| CEP.CIV.F.04040 |  | Realizzazione pavimentazioni interne q.ta 6.00m |  | 84d | CEP.CIV.F.04030 | -70d | 0d |  | CX1490 | 0 | CIV | COS | P1 |  |  |  |
| CEP.CIV.F.04050 |  | Montaggio infissi q.ta 6.00m |  | 24d | CEP.CIV.F.04020, CEP.CIV.F.04030, CEP.CIV.F.04040, CEP.CIV.F.00070, CEP.CIV.F.00050 | -70d | 0d |  | CX1490 | 0 | CIV | COS | P1 |  |  |  |
|  | 3 | **Realizzazione finiture di q.ta 12.00m** |  |  |  |  |  |  |  |  |  |  |  |  |  |  |
| CEP.CIV.F.12000 |  | Realizzazione finiture di q.ta 12.00m SUMMARY | WBS summary | 128d |  | -70d | 1974d | Diminuito di 13d in quanto CEP.CIV.F.12050 dipende da q.ta6m | CX1490 | 0 | CIV | COS | P1 |  |  |  |
| CEP.CIV.F.12010 |  | Approvvigionamento e preparazione materiale in officina q.ta 12.00m |  | 66d | CEP.CIV.F.04010 | -46d | 18d |  | CX1490 | 0 | CIV | COS | P1 |  |  |  |
| CEP.CIV.F.12020 |  | Realizzazione finiture pareti interne e soffitti q.ta 12.00m |  | 42d | CEP.CIV.F.12010 SS+20d, CEP.CIV.F.04020 | -64d | 0d |  | CX1490 | 0 | CIV | COS | P1 |  |  |  |
| CEP.CIV.F.12040 |  | Realizzazione pavimentazioni interne q.ta 12.00m |  | 48d | CEP.CIV.F.12020 SS+30d | -64d | 0d |  | CX1490 | 0 | CIV | COS | P1 |  |  |  |
| CEP.CIV.F.12050 |  | Montaggio infissi q.ta 12.00m |  | 24d | CEP.CIV.F.12010, CEP.CIV.F.12040 SS+30d, CEP.CIV.F.00070, CEP.CIV.F.04050 | -70d | 0d |  | CX1490 | 0 | CIV | COS | P1 |  |  |  |
|  | 4 | **Realizzazione Infissi Schermanti da +0,00 a +8,00** |  |  |  |  |  |  |  |  |  |  |  |  |  |  |
| CEP.CIV.F.12060 |  | Montaggio infissi Schermati da q.ta 0.00m a +8,00 |  | 24d | CEP.CIV.F.00070, CEP.CIV.F.12050 | -70d | 0d |  | CX1490 | 0 | CIV | DEM | P1 | INST | AGG |  |
|  | 6 | **Installazione sistemi di impianto** |  |  |  |  |  |  |  |  |  |  |  |  |  |  |
| CEP.INS.M.00005 |  | Autorizzazione inizio installazioni | milestone | 0d | CEM.ENG.I.00060 | 418d | 317d |  |  | 0 |  | SOGIN |  |  |  |  |
| CEP.INS.M.00010 |  | Disponibilità quota 0 per installazioni | milestone | 0d | CEP.CIV.F.00100 | 45d | 0d |  |  | 0 |  | COS | P1 |  |  |  |
| CEP.INS.M.00025 |  | Disponibilità quota 6 per installazioni | milestone | 0d | CEP.CIV.F.04040 | 10d | 0d |  |  | 0 |  | COS | P1 |  |  |  |
| CEP.INS.M.00035 |  | Disponibilità quota 12 per installazioni | milestone | 0d | CEP.CIV.F.12040 | 83d | 0d |  |  | 0 |  | COS | P1 |  |  |  |
| CEP.INS.M.35 |  | Disponibilità chiusura varchi costruibilità | milestone | 0d | CEP.I&C.Q.12010, CEP.I&C.T.12020, CEP.I&C.T.12030, CEP.I&C.Q.12020, CEP.I&C.Q.06010, CEP.I&C.A.12040, CEP.I&C.Q.06020, CEP.I&C.A.06040, CEP.I&C.Q.00060, CEP.I&C.A.00060, CEP.ELE.T.12020, CEP.ELE.I.12160, CEP.ELE.I.12150, CEP.ELE.I.12080, CEP.ELE.I.12210, CEP.ELE.I.06150, CEP.ELE.I.06080, CEP.ELE.I.06210, CEP.ELE.I.00150, CEP.ELE.I.00080, CEP.ELE.I.00210, CEP.SS.I.00010, CEP.COM.I.00230, CEP.FIR.I.00050, CEP.COM.I.00130, CEP.COM.I.00030, CEP.ELV.I.00010, CEP.CRA.I.00010, CEP.SPC.I.00050, CEP.RUL.I.00090, CEP.RUL.I.00100, CEP.HVA.T.00010, CEP.HVA.T.00020, CEP.HVA.D.12030, CEP.HVA.C.12120, CEP.HVA.D.06030, CEP.HVA.C.06110, CEP.HVA.D.04080, CEP.HVA.E.04030, CEP.HVA.D.00530, CEP.HVA.E.00570, CEP.CRA.I.12090, CEP.CRA.I.12000, CEP.CRA.I.04120, CEP.CRA.I.04000, CEP.CRA.I.02120, CEP.CRA.I.02000, CEP.CRA.I.03000, CEP.CRA.I.01120, CEP.CRA.I.01000, CEP.INS.107.00020, CEP.INS.55.00070, CEP.INS.50.00290, CEP.INS.46.00190, CEP.INS.45.00120, CEP.INS.56.00030, CEP.INS.24.00040, CEP.INS.31.00060, CEP.INS.29.00100, CEP.INS.28.00080, CEP.INS.26.00090, CEP.INS.25.00040, CEP.INS.77.00060, CEP.INS.53.00110, CEP.INS.04.00120, CEP.INS.05.00080, CEP.INS.03.00030, CEP.INS.02.00100, CEP.INS.10.00080, CEP.INS.16.00050, CEP.INS.21.00070, CEP.INS.06.00120, CEP.INS.01.00170 | 53d | 0d |  |  | 0 |  | COS | P1 |  |  |  |
|  | 2 | **Installazione componenti** |  |  |  |  |  |  |  |  |  |  |  |  |  |  |
|  | 1 | **Installazione componenti a q.ta 0.00m** |  |  |  |  |  |  |  |  |  |  |  |  |  |  |
|  | 14 | **Installazione equipment and piping ASME VIII** |  |  |  |  |  |  |  |  |  |  |  |  |  |  |
|  | 1 | **Room L01** |  |  |  |  |  |  |  |  |  |  |  |  |  |  |
| CEP.INS.01.00010 |  | Installazione 2 Pompe transferimento drenaggi contaminate 67A-CA101B/A |  | 5d | CEP.CIV.F.00100, CEP.POM.M.00010, CEP.INS.M.00010 SS | 434d | 0d | locale a se non vincola altre installazioni | CX1530 | 1 | PRO | DEM | P4 | INST | MOD | 67A |
| CEP.INS.01.00030 |  | Installazione 2 Pompe transferimento drenaggi puliti 67A-CA103A/B |  | 5d | CEP.INS.01.00010, CEP.POM.M.00010 | 434d | 0d | locale a se non vincola altre installazioni | CX1530 | 1 | PRO | DEM | P4 | INST | MOD | 67A |
| CEP.INS.01.00050 |  | Installazione 2 Pompe transferimento drenaggi puliti 67A-CA104A/B |  | 5d | CEP.INS.01.00030, CEP.POM.M.00010 | 434d | 0d | locale a se non vincola altre installazioni | CX1530 | 1 | PRO | DEM | P4 | INST | MOD | 67A |
| CEP.INS.01.00070 |  | Installazione 2 Pompe transferimento drenaggi potenzialmente contaminate 67A-CA102B/A |  | 5d | CEP.INS.01.00050, CEP.POM.M.00010 | 434d | 0d | locale a se non vincola altre installazioni | CX1530 | 1 | PRO | DEM | P4 | INST | MOD | 67A |
| CEP.INS.01.00090 |  | Installazione 2 Filtri meccanici a servizio della vasca 67A-PT003A/B (ASME VIII) 51D-FG008B/A |  | 5d | CEP.ASM.A.00010, CEP.INS.01.00070 | 434d | 0d | locale a se non vincola altre installazioni | CX1530 | 1 | PRO | DEM | P4 | INST | MOD | 67A |
| CEP.INS.01.00110 |  | Installazione Separatore a scambio ionico (ASME VIII) 51D-FG009X |  | 7d | CEP.ASM.A.00030, CEP.INS.01.00090 | 434d | 0d | locale a se non vincola altre installazioni | CX1530 | 1 | PRO | DEM | P4 | INST | MOD | 51D |
| CEP.INS.01.00120 |  | Installazione 2 Filtri meccanici a servizio della vasca 67A-PT002X (ASME VIII) 51D-FG007B/A |  | 5d | CEP.ASM.A.00040, CEP.INS.01.00110 | 434d | 0d | locale a se non vincola altre installazioni | CX1530 | 1 | PRO | DEM | P4 | INST | MOD | 67A |
| CEP.INS.01.00140 |  | Installazione 2 Filtri meccanici a servizio della vasca 67A-PT001X (ASME VIII) 51D-FG006B/A |  | 5d | CEP.ASM.A.00060, CEP.INS.01.00120 | 434d | 137d | locale a se non vincola altre installazioni | CX1530 | 1 | PRO | DEM | P4 | INST | MOD | 67A |
| CEP.INS.01.00160 |  | Installazione Piping, valvole, eiettori... DRENAGGI CONTROLLATI |  | 90d | CEP.INS.01.00010 SS, CEP.CIV.F.00100, CEP.LIN.M.00010, CEP.INS.01.00140 | 297d | 0d | Aumentato di 2d | CX1530 | 1 | PRO | DEM | P4 | INST | MOD |  |
| CEP.INS.01.00170 |  | Collaudo idraulico DRENAGGI CONTROLLATI |  | 12d | CEP.INS.01.00160 | 297d | 71d | locale a se non vincola altre installazioni | CX1530 | 1 | PRO | DEM | P4 | INST | MOD |  |

| ID | WBS | Activity | Duration | Predecessors | Total float | Free float | CEMEX 2025 - Activity code Sogin | CEMEX LOCALE | CEMEX DISCIPLINE | CEMEX ACTIVITY TYPE | CEMEX RESPONSABILITY | CEMEX PARTITE | CEMEX SISTEMI | CEMEX REVISIONE |
| --- | --- | --- | --- | --- | --- | --- | --- | --- | --- | --- | --- | --- | --- | --- |
|  | 2 | **Room L06** |  |  |  |  |  |  |  |  |  |  |  |  |
| CEP.INS.06.00010 |  | Installazione Guardia idraulica idrossido di sodio (ASME VIII) 54A-BL002X | 5d | CEP.ASM.B.00010, CEP.INS.M.00010 SS | 452d | 0d | CX1530 | 6 | PRO | INST | DEM | P4 | 54A | MOD |
| CEP.INS.06.00020 |  | Installazione Guardia idraulica acido nitrico (ASME VIII) 54B-BL002X | 5d | CEP.ASM.B.00020, CEP.INS.06.00010 | 452d | 0d | CX1530 | 6 | PRO | INST | DEM | P4 | 54A | MOD |
| CEP.INS.06.00030 |  | Installazione Serbatoio stoccaggio idrossido di sodio (ASME VIII) 54A-BL001X | 7d | CEP.ASM.B.00030, CEP.INS.06.00020 | 452d | 0d | CX1530 | 6 | PRO | INST | DEM | P4 | 54A | MOD |
| CEP.INS.06.00040 |  | Installazione Serbatoio stoccaggio acido nitrico (ASME VIII) 54B-BL001X | 7d | CEP.ASM.B.00040, CEP.INS.06.00030 | 452d | 0d | CX1530 | 6 | PRO | INST | DEM | P4 | 54A | MOD |
| CEP.INS.06.00050 |  | Installazione 2 Pompe trasferimento idrossido di sodio 54A-CA102A/B | 5d | CEP.INS.06.00040, CEP.POM.M.00010 | 514d | 0d | CX1530 | 6 | PRO | INST | DEM | P4 | 54A | MOD |
| CEP.INS.06.00070 |  | Installazione 2 Pompe trasferimento acido nitrico 54B-CA102B/A | 5d | CEP.INS.06.00050, CEP.POM.M.00010 | 514d | 0d | CX1530 | 6 | PRO | INST | DEM | P4 | 54B | MOD |
| CEP.INS.06.00090 |  | Installazione Pompa caricamento idrossido di sodio (API 675) 54A-CA101X | 5d | CEP.INS.06.00070, CEP.POM.M.00010 | 514d | 0d | CX1530 | 6 | PRO | INST | DEM | P4 | 54A | MOD |
| CEP.INS.06.00100 |  | Installazione Pompa caricamento acido nitrico (API 675) 54B-CA101X | 5d | CEP.INS.06.00090, CEP.POM.M.00010 | 514d | 217d | CX1530 | 6 | PRO | INST | DEM | P4 | 54B | MOD |
| CEP.INS.06.00110 |  | Installazione Piping, valvole, eiettori... SERBATOI REAGENTI | 90d | CEP.INS.06.00010 SS, CEP.CIV.F.00100, CEP.LIN.M.00010, CEP.INS.06.00100 FF+8d, CEP.INS.06.00040 | 297d | 0d | CX1530 | 6 | PRO | INST | DEM | P4 |  | MOD |
| CEP.INS.06.00120 |  | Collaudo idraulico SERBATOI REAGENTI | 12d | CEP.INS.06.00110 | 297d | 71d | CX1530 | 6 | PRO | INST | DEM | P4 |  | MOD |
|  | 3 | **Room L21** |  |  |  |  |  |  |  |  |  |  |  |  |
| CEP.INS.21.00010 |  | Installazione Serbatoio separatore di fase fanghi (ASME VIII) 67A-BL004X | 5d | CEP.ASM.C.00010, CEP.INS.06.00040, CEP.INS.M.00010 SS | 452d | 0d | CX1530 | 21 | PRO | INST | DEM | P4 | 67A | MOD |
| CEP.INS.21.00020 |  | Installazione Pompa trasferimento drenaggi (API 610) 67A-CA106X | 5d | CEP.INS.21.00010, CEP.POM.M.00010 | 493d | 0d | CX1530 | 21 | PRO | INST | DEM | P4 | 67A | MOD |
| CEP.INS.21.00030 |  | Installazione Pompa trasferimento drenaggi (API 610) 67A-CA105X | 5d | CEP.INS.21.00020, CEP.POM.M.00010 | 493d | 0d | CX1530 | 21 | PRO | INST | DEM | P4 | 67A | MOD |
| CEP.INS.21.00040 |  | Installazione Serbatoio stoccaggio aque chiarificate (ASME VIII) 67A-BL005B | 7d | CEP.ASM.C.00020, CEP.INS.21.00030 | 493d | 0d | CX1530 | 21 | PRO | INST | DEM | P4 | 67A | MOD |
| CEP.INS.21.00050 |  | Installazione Serbatoio stoccaggio aque chiarificate (ASME VIII) 67A-BL005A | 7d | CEP.ASM.C.00030, CEP.INS.21.00040 | 493d | 0d | CX1530 | 21 | PRO | INST | DEM | P4 | 67A | MOD |
| CEP.INS.21.00060 |  | Installazione Piping, valvole, eiettori... OFFICINA/MAGAZZINO CALDO | 90d | CEP.INS.21.00010 SS, CEP.CIV.F.00100, CEP.LIN.M.00010, CEP.INS.21.00050 FF+20d, CEP.INS.21.00030 FF+8d | 297d | 0d | CX1530 | 21 | PRO | INST | DEM | P4 | 67A | MOD |
| CEP.INS.21.00070 |  | Collaudo idraulico OFFICINA/MAGAZZINO CALDO | 12d | CEP.INS.21.00060 | 297d | 71d | CX1530 | 21 | PRO | INST | DEM | P4 | 67A | MOD |
|  | 4 | **Room L16** |  |  |  |  |  |  |  |  |  |  |  |  |
| CEP.INS.16.00010 |  | Installazione Telemanipolatore 53A-TL001 | 7d | CEP.INS.21.00050, CEP.TEL.M.00010, CEP.INS.M.00010 SS | 497d | 0d | CX1530 | 16 | PRO | INST | ANN | P2 |  |  |
| CEP.INS.16.00020 |  | Installazione Telemanipolatore 53A-TL002 | 6d | CEP.INS.16.00010 | 497d | 0d | CX1530 | 16 | PRO | INST | ANN | P2 |  |  |
| CEP.INS.16.00030 |  | Installazione Telemanipolatore 53A-TL003 | 6d | CEP.INS.16.00020 | 497d | 0d | CX1530 | 16 | PRO | INST | ANN | P2 |  |  |
| CEP.INS.16.00040 |  | Installazione Telemanipolatore 53A-TL004 | 5d | CEP.INS.16.00030 | 497d | 0d | CX1530 | 16 | PRO | INST | ANN | P2 |  |  |
| CEP.INS.16.00050 |  | Installazione Telemanipolatore 53A-TL005 | 4d | CEP.INS.16.00040 | 497d | 271d | CX1530 | 16 | PRO | INST | ANN | P2 |  |  |

Notes:
- CEP.INS.06.00010: Note: locale a se non vincola altre installazioni
- CEP.INS.06.00020: Note: locale a se non vincola altre installazioni
- CEP.INS.06.00030: Note: locale a se non vincola altre installazioni
- CEP.INS.06.00040: Note: locale a se non vincola altre installazioni
- CEP.INS.06.00050: Note: locale a se non vincola altre installazioni
- CEP.INS.06.00070: Note: locale a se non vincola altre installazioni
- CEP.INS.06.00090: Note: locale a se non vincola altre installazioni
- CEP.INS.06.00100: Note: locale a se non vincola altre installazioni
- CEP.INS.06.00110: Note: "Aumentato di 2d;"
- CEP.INS.06.00120: Note: locale a se non vincola altre installazioni
- CEP.INS.21.00010: Note: installazioni dopo la stanza 6 per distribuire il lavoro
- CEP.INS.21.00020: Note: installazioni dopo la stanza 6 per distribuire il lavoro
- CEP.INS.21.00030: Note: installazioni dopo la stanza 6 per distribuire il lavoro
- CEP.INS.21.00040: Note: installazioni dopo la stanza 6 per distribuire il lavoro
- CEP.INS.21.00050: Note: installazioni dopo la stanza 6 per distribuire il lavoro
- CEP.INS.21.00070: Note: installazioni dopo la stanza 6 per distribuire il lavoro
- CEP.INS.16.00010: Note: "Installazione 4 settimane Martha; locale a se non vincola altre installazioni"
- CEP.INS.16.00020: Note: "Installazione 4 settimane Martha; locale a se non vincola altre installazioni"
- CEP.INS.16.00030: Note: "Installazione 4 settimane Martha; locale a se non vincola altre installazioni"
- CEP.INS.16.00040: Note: "Installazione 4 settimane Martha; locale a se non vincola altre installazioni"
- CEP.INS.16.00050: Note: "Installazione 4 settimane Martha; locale a se non vincola altre installazioni"

| ID | WBS | Activity | Duration | Predecessors | Total float | Free float | CEMEX 2025 - Activity code Sogin | CEMEX LOCALE | CEMEX DISCIPLINE | CEMEX RESPONSABILITY | CEMEX PARTITE | CEMEX SISTEMI | CEMEX REVISIONE | CEMEX ACTIVITY TYPE | Note |
| --- | --- | --- | --- | --- | --- | --- | --- | --- | --- | --- | --- | --- | --- | --- | --- |
|  | 15 | **Other rooms** |  |  |  |  |  |  |  |  |  |  |  |  |  |
| CEP.INS.10.00080 |  | Installazione Serbatoio raccolta liquidi (ASME VIII) 51C-BL001X | 7d | CEP.ASM.A.00105, CEP.RUL.I.00040, CEP.INS.M.00010 SS | 159d | 0d | CX1530 | 10 | PRO | DEM | P2 | 51C | MOD |  |  |
|  | 1 | **Installazione equipment and piping ASME III** |  |  |  |  |  |  |  |  |  |  |  |  |  |
|  | 2 | **Room L02** |  |  |  |  |  |  |  |  |  |  |  |  |  |
| CEP.HVA.02.00100 |  | Installazione Canali di Ventilazione | 60d | CEP.CIV.F.00080, CEP.CIV.F.00090 FS+5d, CEP.INS.M.00005 SS+90d | 57d | 0d | CX1520 | 2 | PRO | DEM | P5 |  | MOD | INST |  |
| CEP.INS.02.00005 |  | Installazione mensole per Guardia Idrauliche | 10d | CEP.CIV.F.00090, CEP.HVA.02.00100 | 57d | 0d | CX1630 | 2 | PRO | DEM | P4 |  | MOD | INST |  |
| CEP.INS.02.00007 |  | Instalazione piastre ancorate per supporti | 15d | CEP.INS.02.00005 | 57d | 0d | CX1630 | 2 | PRO | DEM | P4 |  | MOD | INST |  |
| CEP.INS.02.00008 |  | Installazione monorotaia per Serbatoi di testa (ASME III) 51A-BL001A/1B | 15d | CEP.INS.02.00007 | 57d | 0d | CX1630 | 2 | PRO | DEM | P4 | 51A | MOD | INST |  |
| CEP.INS.02.00009 |  | Installazione Bitrave per serbatoi 51A-BL002X/009X | 15d | CEP.INS.02.00008 SS, CEP.INS.02.00008 FF | 57d | 0d | CX1630 | 2 | PRO | DEM | P4 | 51A | MOD | INST |  |
| CEP.INS.02.00010 |  | Installazione monorotaia per serbatoi 57A-BL001X | 10d | CEP.INS.02.00009 | 57d | 0d | CX1630 | 2 | PRO | DEM | P4 | 57A | MOD | INST |  |
| CEP.INS.02.00015 |  | Installazione Serbatoio di testa (ASME III) 51A-BL001A | 7d | CEP.CIV.F.00100, CEP.CIV.F.00090, CEP.INS.02.00007 FS+5d, CEP.INS.02.00007 FF, CEP.INS.02.00008, CEP.INS.02.00010, CEP.ASM.E.00014, CEP.ASM.E.00018 | 57d | 0d | CX1630 | 2 | PRO | DEM | P4 | 51A | MOD | INST |  |
| CEP.INS.02.00020 |  | Installazione Serbatoio di testa (ASME III) 51A-BL001B | 7d | CEP.INS.02.00015, CEP.ASM.E.00024, CEP.ASM.E.00028 | 57d | 0d | CX1630 | 2 | PRO | DEM | P4 | 51A | MOD | INST |  |
| CEP.INS.02.00030 |  | Installazione Guardia idraulica (ASME III) 51A-BL013X | 5d | CEP.INS.02.00020, CEP.INS.02.00005, CEP.ASM.E.00064, CEP.ASM.E.00068 | 57d | 0d | CX1630 | 2 | PRO | DEM | P4 | 51A | MOD | INST |  |
| CEP.INS.02.00040 |  | Installazione Serbatoio raccolta concentrato da evaporatore (ASME III) 51A-BL009X | 7d | CEP.INS.02.00030, CEP.INS.02.00009, CEP.ASM.E.00034, CEP.ASM.E.00038 | 57d | 0d | CX1630 | 2 | PRO | DEM | P4 | 51A | MOD | INST |  |
| CEP.INS.02.00050 |  | Installazione Serbatoio raccolta rifiuti liquidi (ASME III) 51A-BL002X | 7d | CEP.INS.02.00040, CEP.ASM.E.00044, CEP.ASM.E.00048 | 57d | 0d | CX1630 | 2 | PRO | DEM | P4 | 51A | MOD | INST |  |
| CEP.INS.02.00060 |  | Installazione Guardia idraulica (ASME III) 57A-BL016X | 5d | CEP.INS.02.00050, CEP.ASM.E.00074, CEP.ASM.E.00078 | 57d | 0d | CX1630 | 2 | PRO | DEM | P4 | 57A | MOD | INST |  |
| CEP.INS.02.00070 |  | Installazione Serbatoio alimentazione evaporatore (ASME III) 57A-BL001X | 7d | CEP.INS.02.00060, CEP.ASM.E.00054, CEP.ASM.E.00058 | 57d | 0d | CX1630 | 2 | PRO | DEM | P4 | 57A | MOD | INST | verificare legami successore necessario? |
| CEP.INS.02.00073 |  | Disinstallazione monorotaie e bitrave | 10d | CEP.INS.02.00070 | 266d | 0d | CX1630 | 2 | PRO | DEM | P4 |  | MOD | INST |  |
| CEP.INS.02.00075 |  | Installazione supporti Piping, eiettori, locale serbatoi bunker | 90d | CEP.INS.02.00073 | 266d | 17d | CX1630 | 2 | PRO | DEM | P4 |  | MOD | INST |  |
| CEP.INS.02.00080 |  | Installazione Piping, eiettori, locale serbatoi bunker | 90d | CEP.INS.02.00015 SS, CEP.HVA.02.00100, CEP.INS.02.00075 SS+10d, CEP.LIN.M.00010 | 249d | 0d | CX1630 | 2 | PRO | DEM | P4 |  | MOD | INST |  |
| CEP.INS.02.00090 |  | NDE saldature piping | 60d | CEP.INS.02.00080 FS-10d, CEP.INS.02.00080 FF | 249d | 0d | CX1630 | 2 | PRO | DEM | P4 |  | MOD | INST |  |
| CEP.INS.02.00100 |  | Prove in pressione piping | 10d | CEP.INS.02.00090 | 249d | 95d | CX1630 | 2 | PRO | DEM | P4 |  | MOD | INST |  |
|  | 3 | **Room L03** |  |  |  |  |  |  |  |  |  |  |  |  |  |
| CEP.INS.03.00010 |  | Installazione Evaporatore URANUS S1 (ASME III) | 15d | CEP.INS.02.00070, CEP.ASM.F.00014, CEP.ASM.F.00018, CEP.INS.M.00010 SS | 84d | 0d | CX1630 | 3 | PRO | DEM | P4 |  | MOD | INST |  |
| CEP.INS.03.00020 |  | Installazione Piping, valvole, eiettori... EVAPORATORE | 90d | CEP.INS.03.00010 SS, CEP.LIN.M.00010 | 84d | 0d | CX1630 | 3 | PRO | DEM | P4 |  | MOD | INST |  |
| CEP.INS.03.00030 |  | Collaudo idraulico EVAPORATORE | 12d | CEP.INS.03.00020 | 287d | 133d | CX1630 | 3 | PRO | DEM | P4 |  | MOD | INST |  |

| ID | WBS | Activity | Duration | Predecessors | Total float | Free float | CEMEX 2025 - Activity code Sogin | CEMEX LOCALE | CEMEX DISCIPLINE | CEMEX ACTIVITY TYPE | CEMEX RESPONSABILITY | CEMEX PARTITE | CEMEX SISTEMI | CEMEX REVISIONE |
| --- | --- | --- | --- | --- | --- | --- | --- | --- | --- | --- | --- | --- | --- | --- |
|  | 5 | **Room L05** |  |  |  |  |  |  |  |  |  |  |  |  |
| CEP.INS.05.00010 |  | Installazione Serbatoio raccolta distillato (ASME III) 57A-BL009B | 7d | CEP.INS.02.00070, CEP.ASM.H.00014, CEP.ASM.H.00018, CEP.INS.M.00010 SS | 107d | 0d | CX1630 | 5 | PRO | INST | DEM | P4 | 57A | MOD |
| CEP.INS.05.00020 |  | Installazione Serbatoio raccolta distillato (ASME III) 57A-BL009A | 7d | CEP.INS.05.00010, CEP.ASM.H.00024, CEP.ASM.H.00028 | 107d | 0d | CX1630 | 5 | PRO | INST | DEM | P4 | 57A | MOD |
| CEP.INS.05.00030 |  | Installazione 2 Pompe di ricircolo 57A-CA106B/A | 5d | CEP.INS.05.00020, CEP.POM.M.00010 | 107d | 0d | CX1630 | 5 | PRO | INST | DEM | P4 | 57A | MOD |
| CEP.INS.05.00050 |  | Installazione 2 Pompe distillato 57A-CA105B/A | 5d | CEP.INS.05.00030, CEP.POM.M.00010 | 107d | 0d | CX1630 | 5 | PRO | INST | DEM | P4 | 57A | MOD |
| CEP.INS.05.00070 |  | Installazione Piping, valvole, eiettori... SERBATOI FINALI | 90d | CEP.INS.05.00010 SS, CEP.LIN.M.00010, CEP.INS.05.00050 FF | 260d | 0d | CX1630 | 5 | PRO | INST | DEM | P4 | 57A | MOD |
| CEP.INS.05.00080 |  | Collaudo idraulico SERBATOI FINALI | 5d | CEP.INS.05.00070 | 304d | 150d | CX1630 | 5 | PRO | INST | DEM | P4 | 57A | MOD |
|  | 4 | **Room L04** |  |  |  |  |  |  |  |  |  |  |  |  |
| CEP.INS.04.00010 |  | Installazione Colonna di distillazione URANUS S1 (ASME III) 57A-BD005X | 60d | CEP.INS.05.00050, CEP.ASM.G.00014, CEP.ASM.G.00018, CEP.INS.M.00010 SS | 107d | 0d | CX1630 | 4 | PRO | INST | DEM | P4 | 57A | MOD |
| CEP.INS.04.00020 |  | Installazione 2 Pompe dosaggio acido nitrico 57A-CA103A/B | 5d | CEP.INS.04.00010, CEP.POM.M.00010 | 252d | 0d | CX1630 | 4 | PRO | INST | DEM | P4 | 57A | MOD |
| CEP.INS.04.00040 |  | Installazione Ribollitore colonna distillazione URANUS S1 (ASME III) 57A-BA007X | 15d | CEP.INS.04.00020, CEP.ASM.G.00024, CEP.ASM.G.00028 | 252d | 0d | CX1630 | 4 | PRO | INST | DEM | P4 | 57A | MOD |
| CEP.INS.04.00050 |  | Installazione Serbatoio raccolta condensato (ASME III) 57A-BL004X | 7d | CEP.INS.04.00040, CEP.ASM.G.00084, CEP.ASM.G.00088 | 252d | 0d | CX1630 | 4 | PRO | INST | DEM | P4 | 57A | MOD |
| CEP.INS.04.00060 |  | Installazione Serbatoio diluzione acido nitrico URANUS 65 (ASME III) 57A-BL015X | 7d | CEP.INS.04.00050, CEP.ASM.G.00144, CEP.ASM.G.00148 | 252d | 0d | CX1630 | 4 | PRO | INST | DEM | P4 | 57A | MOD |
| CEP.INS.04.00070 |  | Installazione Serbatoio recupero acido nitrico URANUS 65 (ASME III) 57A-BL008X | 7d | CEP.INS.04.00060, CEP.ASM.G.00138, CEP.ASM.G.00134 | 252d | 0d | CX1630 | 4 | PRO | INST | DEM | P4 | 57A | MOD |
| CEP.INS.04.00080 |  | Installazione 2 Pompe transferimento condensato 57A-CA102B/A | 5d | CEP.INS.04.00070, CEP.POM.M.00010 | 252d | 0d | CX1630 | 4 | PRO | INST | DEM | P4 | 57A | MOD |
| CEP.INS.04.00100 |  | Installazione Pompa riciclo acido nitrico (Supplier Std) 57A-CA104X | 5d | CEP.INS.04.00080, CEP.POM.M.00010 | 252d | 0d | CX1630 | 4 | PRO | INST | DEM | P4 | 57A | MOD |
| CEP.INS.04.00110 |  | Installazione Piping, valvole, eiettori... DISTILLATORE | 90d | CEP.INS.04.00010 SS, CEP.LIN.M.00010 | 94d | 0d | CX1630 | 4 | PRO | INST | DEM | P4 | 57A | MOD |
| CEP.INS.04.00120 |  | Collaudo idraulico DISTILLATORE | 12d | CEP.INS.04.00110, CEP.INS.04.00100 | 289d | 135d | CX1630 | 4 | PRO | INST | DEM | P4 | 57A | MOD |
|  | 13 | **Room L53** |  |  |  |  |  |  |  |  |  |  |  |  |
| CEP.INS.53.00010 |  | Installazione ancoraggi e mensole di sostegno copertura schermante | 30d | CEP.CIV.F.00090 | 90d | 0d | CX1630 | 53 | PRO | INST | DEM | P4 |  | MOD |
| CEP.INS.53.00020 |  | Installazione mensole serbatoio alimentazione fusti | 30d | CEP.INS.53.00010 | 90d | 0d | CX1630 | 53 | PRO | INST | DEM | P4 |  | MOD |
| CEP.INS.53.00025 |  | Installazione Canali di ventilazione | 60d | CEP.INS.53.00020, CEP.INS.M.00010 SS | 90d | 0d | CX1630 | 53 | PRO | INST | DEM | P4 |  | MOD |
| CEP.INS.53.00030 |  | Installazione Serbatoio di neutralizzazione (ASME III) 51A-BL003X | 7d | CEP.INS.53.00025, CEP.CIV.VT.00030, CEP.ASM.J.00024, CEP.ASM.J.00028, CEP.INS.53.00025 SS | 90d | 33d | CX1630 | 53 | PRO | INST | DEM | P4 | 51A | MOD |
| CEP.INS.53.00040 |  | Installazione Serbatoio alimentazione fusti (ASME III) 51A-BL004X | 7d | CEP.INS.02.00070, CEP.INS.53.00030, CEP.ASM.J.00014, CEP.ASM.J.00018 | 57d | 0d | CX1630 | 53 | PRO | INST | DEM | P4 | 51A | MOD |
| CEP.INS.53.00050 |  | Installazione supporti locale REATTORE NEUTRALIZZAZIONE | 7d | CEP.INS.53.00040 | 130d | 23d | CX1630 | 53 | PRO | INST | DEM | P4 |  | MOD |
| CEP.INS.53.00060 |  | Installazione Piping locale REATTORE NEUTRALIZZAZIONE | 30d | CEP.INS.53.00025, CEP.INS.53.00050, CEP.LIN.M.00010 | 107d | 0d | CX1630 | 53 | PRO | INST | DEM | P4 |  | MOD |
| CEP.INS.53.00070 |  | NDE saldature piping locale REATTORE NEUTRALIZZAZIONE | 30d | CEP.INS.53.00060 | 107d | 0d | CX1630 | 53 | PRO | INST | DEM | P4 |  | MOD |
| CEP.INS.53.00080 |  | Prove in pressione piping locale REATTORE NEUTRALIZZAZIONE | 15d | CEP.INS.53.00070 | 107d | 0d | CX1630 | 53 | PRO | INST | DEM | P4 |  | MOD |
| CEP.INS.53.00090 |  | Realizzazione e posa della copertura schermante | 30d | CEP.INS.53.00080 | 107d | 0d | CX1630 | 53 | PRO | INST | DEM | P4 |  | MOD |
| CEP.INS.53.00100 |  | Installazione motori elettrici per agitatori serbatoi locale REATTORE NEUTRALIZZAZIONE | 7d | CEP.INS.53.00090 | 107d | 0d | CX1630 | 53 | PRO | INST | DEM | P4 |  | MOD |
| CEP.INS.53.00110 |  | Collegamento elettrico locale REATTORE NEUTRALIZZAZIONE | 15d | CEP.INS.53.00100 | 107d | 75d | CX1630 | 53 | PRO | INST | DEM | P4 |  | MOD |

Notes:
- CEP.INS.05.00010: Note: legame con 02 per distribuzione lavori
- CEP.INS.05.00070: Note: "Aumentato di 4d;"
- CEP.INS.04.00040: Note: "Aumentato di 1d;"
- CEP.INS.53.00080: Note: aveva come successore le pompe in stanza 50 (CEP.INS.50.00050) non strettamente necessario dal punto di vista sequenza d'installazione

| ID | WBS | Activity | Duration | Predecessors | Total float | Free float | CEMEX 2025 - Activity code Sogin | CEMEX LOCALE | CEMEX DISCIPLINE | CEMEX ACTIVITY TYPE | CEMEX RESPONSABILITY | CEMEX PARTITE | CEMEX SISTEMI | CEMEX REVISIONE | Note |
| --- | --- | --- | --- | --- | --- | --- | --- | --- | --- | --- | --- | --- | --- | --- | --- |
|  | 2 | **Installazione componenti a q.ta 4.20m-6.00m** |  |  |  |  |  |  |  |  |  |  |  |  |  |
|  | 1 | **Installazione equipment and piping ASME** |  |  |  |  |  |  |  |  |  |  |  |  |  |
|  | 14 | **Room L77** |  |  |  |  |  |  |  |  |  |  |  |  |  |
| CEP.INS.77.00010 |  | Installazione 2 Pompe transferimento rifiuti liquidi 51A-CA101A/B | 5d | CEP.CIV.F.04040, CEP.CRA.I.12090, CEP.POM.M.00010, CEP.INS.M.00025 SS | 191d | 0d | CX1630 | 77 | PRO | INST | DEM | P4 | 51A | MOD |  |
| CEP.INS.77.00030 |  | Installazione 2 Pompe transferimento rifiuti liquidi 51A-CA102A/B | 5d | CEP.INS.77.00010, CEP.POM.M.00010 | 494d | 161d | CX1630 | 77 | PRO | INST | DEM | P4 | 51A | MOD |  |
| CEP.INS.77.00050 |  | Installazione Piping, valvole, eiettori... POMPE NEUTRALIZZAZIONE | 60d | CEP.INS.77.00010 SS, CEP.LIN.M.00010, CEP.INS.M.00025 SS | 80d | 0d | CX1630 | 77 | PRO | INST | DEM | P4 |  | MOD |  |
| CEP.INS.77.00060 |  | Collaudo idraulico POMPE NEUTRALIZZAZIONE | 6d | CEP.INS.77.00050, CEP.INS.77.00030 | 333d | 388d | CX1630 | 77 | PRO | INST | DEM | P4 |  | MOD |  |
|  | 9 | **Room L25** |  |  |  |  |  |  |  |  |  |  |  |  |  |
| CEP.INS.25.00010 |  | Installazione 2 Pompe transferimento liquidi di processo 57A-CA101B/A | 5d | CEP.CIV.F.00100, CEP.POM.M.00010, CEP.CIV.M.00000, CEP.INS.M.00025 SS | 114d | 31d | CX1630 | 25 | PRO | INST | DEM | P4 | 57A | MOD |  |
| CEP.INS.25.00030 |  | Installazione Piping, valvole, eiettori... POMPE EVAPORATORE | 60d | CEP.INS.25.00010 SS, CEP.LIN.M.00010, CEP.INS.M.00025 SS | 80d | 0d | CX1630 | 25 | PRO | INST | DEM | P4 |  | MOD | SS con celle in stanza 24...perchè? indipendente dal 24 |
| CEP.INS.25.00040 |  | Collaudo idraulico POMPE EVAPORATORE | 7d | CEP.INS.25.00030, CEP.CIV.F.00100 | 332d | 387d | CX1630 | 25 | PRO | INST | DEM | P4 |  | MOD |  |
|  | 4 | **Room L26** |  |  |  |  |  |  |  |  |  |  |  |  |  |
| CEP.INS.26.00010 |  | Installazione Serbatoio preparazione soda (ASME VIII) 54A-BL003X | 7d | CEP.ASM.D.00010, CEP.CIV.F.04040, CEP.INS.M.00025 SS | 47d | 0d | CX1530 | 26 | PRO | INST | DEM | P4 | 54A | MOD |  |
| CEP.INS.26.00020 |  | Installazione Serbatoio dosaggio soda (ASME VIII) 54A-BL004X | 7d | CEP.ASM.D.00020, CEP.INS.26.00010 | 47d | 0d | CX1530 | 26 | PRO | INST | DEM | P4 | 54A | MOD |  |
| CEP.INS.26.00030 |  | Installazione Serbatoio preparazione acido nitrico (ASME VIII) 54B-BL003X | 7d | CEP.ASM.D.00030, CEP.INS.26.00020 | 47d | 0d | CX1530 | 26 | PRO | INST | DEM | P4 | 54B | MOD |  |
| CEP.INS.26.00040 |  | Installazione 2 Pompe dosaggio idrossido di sodio 54A-CA103B/A | 5d | CEP.INS.26.00030, CEP.POM.M.00010 | 47d | 0d | CX1530 | 26 | PRO | INST | DEM | P4 | 54A | MOD |  |
| CEP.INS.26.00060 |  | Installazione 2 Pompe trasferimento acido nitrico 54B-CA103A/B | 5d | CEP.INS.26.00040, CEP.POM.M.00010 | 47d | 0d | CX1530 | 26 | PRO | INST | DEM | P4 | 54B | MOD |  |
| CEP.INS.26.00080 |  | Installazione Piping, valvole, eiettori... POMPE DOSATRICI REAGENTI | 90d | CEP.INS.26.00010 SS, CEP.CIV.F.04040, CEP.LIN.M.00010, CEP.INS.M.00025 SS | 297d | 0d | CX1530 | 26 | PRO | INST | DEM | P4 |  | MOD |  |
| CEP.INS.26.00090 |  | Collaudo idraulico POMPE DOSATRICI REAGENTI | 12d | CEP.INS.26.00080 | 297d | 352d | CX1530 | 26 | PRO | INST | DEM | P4 |  | MOD |  |
|  | 1 | **Room L28** |  |  |  |  |  |  |  |  |  |  |  |  |  |
| CEP.INS.28.00010 |  | Installazione Tramoggia dosaggio 52A-BT007X | 15d | CEP.CIV.F.04040, CEP.INS.53.00040 FS-60d, CEP.INS.26.00060, CEP.STO.M.00010, CEP.INS.M.00025 SS | 47d | 0d | CX1530 | 28 | PRO | INST | DEM | P4 |  | MOD |  |
| CEP.INS.28.00020 |  | Installazione Filtro per abbattimento polveri 52A-DH006X | 5d | CEP.INS.28.00010, CEP.STO.M.00010 | 47d | 0d | CX1530 | 28 | PRO | INST | DEM | P4 | 52A | MOD |  |
| CEP.INS.28.00030 |  | Installazione Tramoggia intermedia 52A-BT006X | 5d | CEP.INS.28.00020, CEP.STO.M.00010 | 47d | 0d | CX1530 | 28 | PRO | INST | DEM | P4 | 52A | MOD |  |
| CEP.INS.28.00040 |  | Installazione Filtro a maniche 52A-DH005X | 5d | CEP.INS.28.00030, CEP.STO.M.00010 | 47d | 0d | CX1530 | 28 | PRO | INST | DEM | P4 | 52A | MOD |  |
| CEP.INS.28.00050 |  | Installazione Coclea 52A-CA105X | 5d | CEP.INS.28.00040, CEP.STO.M.00010 | 47d | 0d | CX1530 | 28 | PRO | INST | DEM | P4 | 52A | MOD |  |
| CEP.INS.28.00060 |  | Installazione Pompa centralina oleodinamica testa di cementazione 51C-CA101X | 5d | CEP.INS.28.00050, CEP.STO.M.00010 | 47d | 0d | CX1530 | 28 | PRO | INST | DEM | P4 | 51C | MOD |  |
| CEP.INS.28.00070 |  | Installazione Piping, valvole, eiettori... AREA TRAMOGGE CEMENTO IMPASTO | 90d | CEP.INS.28.00010 SS, CEP.CIV.F.04040, CEP.STO.M.00010, CEP.INS.M.00025 SS | 377d | 0d | CX1530 | 28 | PRO | INST | DEM | P4 |  | MOD |  |
| CEP.INS.28.00080 |  | Collaudo idraulico AREA TRAMOGGE CEMENTO IMPASTO | 12d | CEP.INS.28.00070 | 377d | 432d | CX1530 | 28 | PRO | INST | DEM | P4 |  | MOD |  |

| ID | WBS | Activity | Duration | Predecessors | Total float | Free float | CEMEX 2025 - Activity code Sogin | CEMEX LOCALE | CEMEX DISCIPLINE | CEMEX ACTIVITY TYPE | CEMEX RESPONSABILITY | CEMEX PARTITE | CEMEX SISTEMI | CEMEX REVISIONE | Note |
| --- | --- | --- | --- | --- | --- | --- | --- | --- | --- | --- | --- | --- | --- | --- | --- |
|  | 2 | **Room L29** |  |  |  |  |  |  |  |  |  |  |  |  |  |
| CEP.INS.29.00010 |  | Installazione Tramoggia intermedia cemento capping 52B-BT006X | 5d | CEP.CIV.F.04040, CEP.STO.M.00010, CEP.INS.28.00010, CEP.INS.28.00060, CEP.INS.M.00025 SS | 47d | 0d | CX1530 | 29 | PRO | INST | DEM | P4 | 52B | MOD |  |
| CEP.INS.29.00020 |  | Installazione Filtro a maniche 52B-DH005 | 5d | CEP.INS.29.00010, CEP.STO.M.00010, CEP.INS.M.00025 SS | 47d | 0d | CX1530 | 29 | PRO | INST | DEM | P4 | 52B | MOD |  |
| CEP.INS.29.00030 |  | Installazione Impastatrice cemento per capping 52B-BT107X | 5d | CEP.INS.29.00020, CEP.STO.M.00010 | 47d | 0d | CX1530 | 29 | PRO | INST | DEM | P4 | 52B | MOD |  |
| CEP.INS.29.00040 |  | Installazione Coclea 52B-CA108X | 5d | CEP.INS.29.00030, CEP.STO.M.00010 | 47d | 0d | CX1530 | 29 | PRO | INST | DEM | P4 | 52B | MOD |  |
| CEP.INS.29.00050 |  | Installazione Coclea 52B-CA106X | 5d | CEP.INS.29.00040, CEP.STO.M.00010 | 47d | 0d | CX1530 | 29 | PRO | INST | DEM | P4 | 52B | MOD |  |
| CEP.INS.29.00060 |  | Installazione Serbatoio dosaggio acqua 52B-BL007X | 7d | CEP.INS.29.00050, CEP.SER.M.00020 | 47d | 0d | CX1530 | 29 | PRO | INST | DEM | P4 | 52B | MOD |  |
| CEP.INS.29.00070 |  | Installazione Serbatoio accumulo aria compressa 52B-BL008X | 7d | CEP.INS.29.00060, CEP.SER.M.00020 | 47d | 0d | CX1530 | 29 | PRO | INST | DEM | P4 | 52B | MOD |  |
| CEP.INS.29.00080 |  | Installazione Serbatoio accumulo aria compressa 52B-BL009X | 7d | CEP.INS.29.00070, CEP.SER.M.00020 | 47d | 0d | CX1530 | 29 | PRO | INST | DEM | P4 | 52B | MOD |  |
| CEP.INS.29.00090 |  | Installazione Piping, valvole, eiettori... AREA TRAMOGGE CEMENTO CAPPING | 60d | CEP.INS.29.00010, CEP.CIV.F.04040, CEP.INS.29.00080 FF+10d, CEP.STO.M.00010, CEP.INS.29.00080 | 324d | 0d | CX1530 | 29 | PRO | INST | DEM | P4 |  | MOD |  |
| CEP.INS.29.00100 |  | Collaudo idraulico AREA TRAMOGGE CEMENTO CAPPING | 9d | CEP.INS.29.00090 | 324d | 379d | CX1530 | 29 | PRO | INST | DEM | P4 |  | MOD |  |
|  | 11 | **Room L31** |  |  |  |  |  |  |  |  |  |  |  |  |  |
| CEP.INS.31.00010 |  | Installazione Cella schermata per ricevimento e diluizione del campione 55-PK101X | 60d | CEP.INS.29.00080, CEP.CIV.F.04040, CEP.LAB.M.20010 | 47d | 0d | CX1350 | 31 | PRO | INST | DEM | P4 | 55 | MOD |  |
| CEP.INS.31.00020 |  | Installazione Scatola a guanti per cromatografo ionico 55-PK104X | 50d | CEP.INS.31.00010 SS | 47d | 0d | CX1350 | 31 | PRO | INST | DEM | P4 | 55 | MOD |  |
| CEP.INS.31.00030 |  | Installazione Scatola a guanti per misura di acidità e diluizione campione 55-PK103X | 50d | CEP.INS.31.00020 | 47d | 0d | CX1350 | 31 | PRO | INST | DEM | P4 | 55 | MOD |  |
| CEP.INS.31.00040 |  | Installazione Scatola a guanti per smear test 55-PK102X | 50d | CEP.INS.31.00030 | 47d | 0d | CX1350 | 31 | PRO | INST | DEM | P4 | 55 | MOD |  |
| CEP.INS.31.00045 |  | Installazione arredi/banchi laboratorio | 7d | CEP.LAB.M.10010, CEP.INS.31.00040 | 47d | 0d | CX1320 | 31 | PRO |  | DEM | P4 | 55 | MOD |  |
| CEP.INS.31.00050 |  | Installazione Piping, valvole, eiettori... LABORATORIO RADIOCHIMICO | 26d | CEP.INS.31.00010 SS, CEP.CIV.F.04040, CEP.INS.31.00045 FF, CEP.LIN.M.00010 | 47d | 0d | CX1350 | 31 | PRO | INST | DEM | P4 | 55 | MOD | vedere successore....FF + 54 !!!! non ha molto senso!! |
| CEP.INS.31.00060 |  | Collaudo idraulico LABORATORIO RADIOCHIMICO | 12d | CEP.INS.31.00050 | 224d | 279d | CX1350 | 31 | PRO | INST | DEM | P4 | 55 | MOD |  |
|  | 5 | **Room L24** |  |  |  |  |  |  |  |  |  |  |  |  |  |
| CEP.INS.24.00010 |  | Installazione Cella schermata per campionamento bassa attività (AISC N690 - ASME 31.1) 56A-PK002X | 75d | CEP.CIV.F.04040, CEP.LAB.M.20010, CEP.INS.M.00025 SS | 1d | 0d | CX1350 | 24 | PRO | INST | DEM | P4 | 56A | MOD | Fornitore ROBATEL Industrie 2025 |
| CEP.INS.24.00020 |  | Installazione Cella schermata per campionamento alta attività (AISC N690 - ASME III) 56A-PK001X | 150d | CEP.INS.24.00010, CEP.LAB.M.20010, CEP.INS.M.00025 SS | 1d | 0d | CX1350 | 24 | PRO | INST | DEM | P4 | 56A | MOD | Fornitore ROBATEL Industrie 2025 |
| CEP.INS.24.00030 |  | Installazione Piping, valvole, eiettori... CAMPIONAMENTO | 40d | CEP.CIV.F.04040, CEP.INS.24.00020, CEP.LIN.M.00010 | 1d | 0d | CX1350 | 24 | PRO | INST | DEM | P4 |  | MOD |  |
| CEP.INS.24.00040 |  | Collaudo idraulico CAMPIONAMENTO | 4d | CEP.INS.24.00030 | 232d | 287d | CX1350 | 24 | PRO | INST | DEM | P4 |  | MOD |  |

| ID | WBS | Activity | Duration | Predecessors | Total float | Free float | CEMEX 2025 - Activity code Sogin | CEMEX LOCALE | CEMEX DISCIPLINE | CEMEX ACTIVITY TYPE | CEMEX RESPONSABILITY | CEMEX PARTITE | CEMEX REVISIONE | CEMEX SISTEMI |
| --- | --- | --- | --- | --- | --- | --- | --- | --- | --- | --- | --- | --- | --- | --- |
|  | 3 | **Room L56** |  |  |  |  |  |  |  |  |  |  |  |  |
| CEP.INS.56.00010 |  | Installazione Valvole evaporatore | 15d | CEP.INS.03.00020, CEP.INS.M.00025 SS | 266d | 0d | CX1630 | 56 | PRO | INST | DEM | P4 | MOD |  |
| CEP.INS.56.00020 |  | Installazione Piping, valvole, eiettori... VALVOLE EVAPORATORE | 30d | CEP.INS.56.00010 SS, CEP.INS.M.00025 SS | 266d | 0d | CX1630 | 56 | PRO | INST | DEM | P4 | MOD |  |
| CEP.INS.56.00030 |  | Collaudo idraulico VALVOLE EVAPORATORE | 3d | CEP.INS.56.00020 | 266d | 321d | CX1630 | 56 | PRO | INST | DEM | P4 | MOD |  |
|  | 3 | **Installazione componenti a q.ta 12.00m** |  |  |  |  |  |  |  |  |  |  |  |  |
|  | 1 | **Installazione equipment and piping** |  |  |  |  |  |  |  |  |  |  |  |  |
|  | 12 | **Room L45** |  |  |  |  |  |  |  |  |  |  |  |  |
| CEP.INS.45.00010 |  | Installazione 2 Pompe ricircolo rifiuti liquidi 51D-CA101A/B | 5d | CEP.INS.25.00010, CEP.CIV.F.12040 SS+24d, CEP.POM.M.00010, CEP.INS.M.00035 SS | 83d | 0d | CX1580 | 45 | PRO | INST | DEM | P4 | MOD | 51D |
| CEP.INS.45.00030 |  | Installazione Separatore a scambio ionico del jet scrubber 51D-FG010X | 7d | CEP.INS.45.00010, CEP.CEL.M.00010, CEP.INS.M.00035 SS | 86d | 0d | CX1580 | 45 | PRO | INST | DEM | P4 | MOD | 51D |
| CEP.INS.45.00040 |  | Installazione 2 Filtri meccanici del jet scrubber 51D-FG005B/A | 4d | CEP.LIN.L.00090, CEP.INS.45.00030, CEP.INS.M.00035 SS | 86d | 0d | CX1580 | 45 | PRO | INST | DEM | P4 | MOD | 51D |
| CEP.INS.45.00060 |  | Installazione 2 Pompe trasferimento acqua contaminata 51D-CA102A/B | 4d | CEP.INS.45.00040, CEP.LIN.L.00090, CEP.POM.M.00010, CEP.INS.M.00035 SS | 86d | 0d | CX1580 | 45 | PRO | INST | DEM | P4 | MOD | 51D |
| CEP.INS.45.00080 |  | Installazione Scrubber tube ASME VIII 51D-BD001X | 4d | CEP.ASM.A.00085, CEP.INS.45.00060, CEP.POM.M.00010, CEP.INS.M.00035 SS | 86d | 0d | CX1580 | 45 | PRO | INST | DEM | P4 | MOD | 51D |
| CEP.INS.45.00090 |  | Installazione Banco filtrante 51D-DJ109 | 6d | CEP.LIN.L.00140, CEP.INS.45.00080, CEP.INS.M.00035 SS | 86d | 0d | CX1580 | 45 | PRO | INST | DEM | P4 | MOD | 51D |
| CEP.INS.45.00100 |  | Installazione Riscaldatore elettrico aria di miscelazione 51D-BJ001X | 6d | CEP.LIN.L.00150, CEP.INS.45.00090, CEP.INS.M.00035 SS | 86d | 0d | CX1580 | 45 | PRO | INST | DEM | P4 | MOD | 51D |
| CEP.INS.45.00110 |  | Installazione Piping, valvole, eiettori... OFF-GAS | 60d | CEP.INS.45.00010 SS, CEP.CIV.F.12040, CEP.LIN.M.00010 | 8d | 0d | CX1580 | 45 | PRO | INST | DEM | P4 | MOD | 51D |
| CEP.INS.45.00120 |  | Collaudo idraulico OFF-GAS | 6d | CEP.INS.45.00110 | 333d | 388d | CX1580 | 45 | PRO | INST | DEM | P4 | MOD | 51D |
|  | 1 | **Room L46** |  |  |  |  |  |  |  |  |  |  |  |  |
| CEP.INS.46.00010 |  | Installazione 2 Pompe acqua di alimento 95A-CA101A/B | 5d | CEP.INS.45.00100, CEP.CIV.F.12040, CEP.POM.M.00010, CEP.INS.M.00035 SS | 86d | 0d | CX1580 | 46 | PRO | INST | DEM | P4 | MOD | 95A |
| CEP.INS.46.00030 |  | Installazione Serbatoio raccolta condensato 95A-BL001X | 7d | CEP.INS.46.00010, CEP.SER.M.00010 | 86d | 0d | CX1580 | 46 | PRO | INST | DEM | P4 | MOD | 95A |
| CEP.INS.46.00050 |  | Installazione 2 Pompe acqua calda batterie UTA 94A-CA101A/B | 5d | CEP.HVA.C.12100, CEP.POM.M.00010 | 86d | 0d | CX1580 | 46 | PRO | INST | DEM | P4 | MOD | 94A |
| CEP.INS.46.00070 |  | Installazione 2 Pompe acqua calda aerotermi 94A-CA102A/B | 5d | CEP.INS.46.00050, CEP.POM.M.00010 | 86d | 0d | CX1580 | 46 | PRO | INST | DEM | P4 | MOD | 94A |
| CEP.INS.46.00090 |  | Installazione Filtro a cartuccia 95A-EB001X | 5d | CEP.INS.46.00070, CEP.PAC.M.00010 | 86d | 0d | CX1580 | 46 | PRO | INST | DEM | P4 | MOD | 95A |
| CEP.INS.46.00100 |  | Installazione Serbatoio di espansione 94D-BL001X | 7d | CEP.INS.46.00090, CEP.SER.M.00010 | 86d | 0d | CX1580 | 46 | PRO | INST | DEM | P4 | MOD | 94D |
| CEP.INS.46.00110 |  | Installazione Scambiatore di calore 95A-BA002X | 7d | CEP.INS.46.00100, CEP.SDC.M.00010 | 86d | 0d | CX1580 | 46 | PRO | INST | DEM | P4 | MOD | 94D |
| CEP.INS.46.00120 |  | Installazione Serbatoio additivi chimici 94D-BL003X | 7d | CEP.INS.46.00110, CEP.SER.M.00010 | 86d | 0d | CX1580 | 46 | PRO | INST | DEM | P4 | MOD | 94D |
| CEP.INS.46.00130 |  | Installazione 2 Pompe acqua di raffreddamento 94D-CA102A/B | 5d | CEP.INS.46.00120, CEP.POM.M.00010 | 86d | 0d | CX1580 | 46 | PRO | INST | DEM | P4 | MOD | 94D |
| CEP.INS.46.00150 |  | Installazione Serbatoio inerziale 94D-BL002X | 7d | CEP.INS.46.00130, CEP.SER.M.00010 | 86d | 0d | CX1580 | 46 | PRO | INST | DEM | P4 | MOD | 94D |
| CEP.INS.46.00180 |  | Installazione Piping, vaIvole, eiettori... VAPORE AUSILIARIO | 90d | CEP.INS.46.00010 SS, CEP.CIV.F.12040, CEP.INS.45.00110, CEP.PAC.A.00180 | 8d | 0d | CX1580 | 46 | PRO | INST | DEM | P4 | MOD |  |
| CEP.INS.46.00190 |  | Collaudo idraulico VAPORE AUSILIARIO | 8d | CEP.INS.46.00180 | 241d | 296d | CX1580 | 46 | PRO | INST | DEM | P4 | MOD | 94D |

Notes:
- CEP.INS.56.00010: Note: linkata alla 31...non ha molto senso forse? legata ad installazione evaporatore stanza 03
- CEP.INS.45.00010: Note: verificare tempi e se necessaria la serie di tutto, la ZONA di pavimentazione a quota +12 può iniziare dalla zona stanze 44, 45...e quindi essere terminata prima per installazione in quelle stanze
- CEP.INS.45.00030: Note: verificare tempi e se necessaria la serie di tutto
- CEP.INS.45.00040: Note: verificare tempi e se necessaria la serie di tutto
- CEP.INS.45.00060: Note: verificare tempi e se necessaria la serie di tutto
- CEP.INS.45.00080: Note: verificare tempi e se necessaria la serie di tutto
- CEP.INS.45.00090: Note: verificare tempi e se necessaria la serie di tutto
- CEP.INS.45.00100: Note: verificare tempi e se necessaria la serie di tutto
- CEP.INS.45.00110: Note: la ZONA di pavimentazione a quota +12 può iniziare dalla zona stanze 44, 45...e quindi essere terminata prima per installazione in quelle stanze
- CEP.INS.45.00120: Note: verificare tempi e se necessaria la serie di tutto
- CEP.INS.46.00010: Note: verificare tempi e se necessaria la serie di tutto
- CEP.INS.46.00030: Note: verificare tempi e se necessaria la serie di tutto
- CEP.INS.46.00050: Note: verificare tempi e se necessaria la serie di tutto
- CEP.INS.46.00070: Note: verificare tempi e se necessaria la serie di tutto
- CEP.INS.46.00090: Note: verificare tempi e se necessaria la serie di tutto
- CEP.INS.46.00100: Note: verificare tempi e se necessaria la serie di tutto
- CEP.INS.46.00110: Note: verificare tempi e se necessaria la serie di tutto
- CEP.INS.46.00120: Note: verificare tempi e se necessaria la serie di tutto
- CEP.INS.46.00130: Note: verificare tempi e se necessaria la serie di tutto
- CEP.INS.46.00150: Note: verificare tempi e se necessaria la serie di tutto

| ID | WBS | Activity | Duration | Predecessors | Total float | Free float | CEMEX 2025 - Activity code Sogin | CEMEX LOCALE | CEMEX DISCIPLINE | CEMEX ACTIVITY TYPE | CEMEX RESPONSABILITY | CEMEX PARTITE | CEMEX SISTEMI | CEMEX REVISIONE |
| --- | --- | --- | --- | --- | --- | --- | --- | --- | --- | --- | --- | --- | --- | --- |
|  | 2 | **Room L50** |  |  |  |  |  |  |  |  |  |  |  |  |
| CEP.INS.50.00010 |  | Installazione Serbatoio accumulo aria servizi 96A-BL001X | 7d | CEP.CIV.F.12040, CEP.SER.M.00010, CEP.INS.46.00150, CEP.INS.M.00035 SS | 86d | 0d | CX1580 | 50 | PRO | INST | DEM | P4 | 96A | MOD |
| CEP.INS.50.00020 |  | Installazione Compressore di emergenza 96A-CG101X | 7d | CEP.INS.50.00010, CEP.GAC.M.00010 | 86d | 0d | CX1580 | 50 | PRO | INST | DEM | P4 | 96A | MOD |
| CEP.INS.50.00030 |  | Installazione Essiccatore aria strumenti 96A-BE102X | 5d | CEP.INS.50.00020, CEP.GAC.M.00010 | 86d | 0d | CX1580 | 50 | PRO | INST | DEM | P4 | 96A | MOD |
| CEP.INS.50.00040 |  | Installazione Serbatoio accumulo aria strumenti 96A-BL002X | 5d | CEP.INS.50.00030, CEP.SER.M.00010 | 86d | 0d | CX1580 | 50 | PRO | INST | DEM | P4 | 96A | MOD |
| CEP.INS.50.00050 |  | Installazione 2 Pompe primario impianto a ciclo chiuso 92A-CA101A/B | 5d | CEP.INS.50.00040, CEP.POM.M.00010 | 86d | 0d | CX1580 | 50 | PRO | INST | DEM | P4 | 92A | MOD |
| CEP.INS.50.00060 |  | Installazione Serbatoio di espansione 92A-BL003X | 7d | CEP.SER.M.00010, CEP.INS.50.00050 | 86d | 0d | CX1580 | 50 | PRO | INST | DEM | P4 | 92A | MOD |
| CEP.INS.50.00080 |  | Installazione Serbatoio accumulo acqua demi 91A-BL001A | 7d | CEP.INS.50.00050, CEP.SER.M.00010, CEP.POM.M.00010, CEP.INS.50.00060 | 86d | 0d | CX1580 | 50 | PRO | INST | DEM | P4 | 91A | MOD |
| CEP.INS.50.00090 |  | Installazione Serbatoio accumulo acqua demi 91A-BL001B | 7d | CEP.SER.M.00010, CEP.INS.50.00080 | 86d | 0d | CX1580 | 50 | PRO | INST | DEM | P4 | 91A | MOD |
| CEP.INS.50.00100 |  | Installazione Scambiatore di calore 92A-BA005X | 7d | CEP.INS.50.00080, CEP.SDC.M.00010 | 96d | 0d | CX1580 | 50 | PRO | INST | DEM | P4 | 92A | MOD |
| CEP.INS.50.00110 |  | Installazione Serbatoio accumulo aria alimentazione eiettori 96A-BL005X | 7d | CEP.INS.50.00090, CEP.SER.M.00010 | 86d | 0d | CX1580 | 50 | PRO | INST | DEM | P4 | 96A | MOD |
| CEP.INS.50.00120 |  | Installazione Serbatoio accumulo aria alimentazione eiettori 96A-BL004X | 7d | CEP.INS.50.00100, CEP.SER.M.00010 | 96d | 0d | CX1580 | 50 | PRO | INST | DEM | P4 | 96A | MOD |
| CEP.INS.50.00130 |  | Installazione 2 Pompe secondario impianto a ciclo chiuso 92A-CA102B/A | 5d | CEP.INS.50.00110, CEP.POM.M.00010 | 86d | 0d | CX1580 | 50 | PRO | INST | DEM | P4 | 92A | MOD |
| CEP.INS.50.00150 |  | Installazione Serbatoio di espansione 92A-BL001X | 7d | CEP.INS.50.00130, CEP.SER.M.00010 | 86d | 0d | CX1580 | 50 | PRO | INST | DEM | P4 | 92A | MOD |
| CEP.INS.50.00160 |  | Installazione Serbatoio accumulo acqua potabile 91H-BL001X | 7d | CEP.INS.50.00120, CEP.SER.M.00010 | 96d | 0d | CX1580 | 50 | PRO | INST | DEM | P4 |  | MOD |
| CEP.INS.50.00170 |  | Installazione Gruppo pressurizzazione acqua potabile 91H-91N | 7d | CEP.INS.50.00150, CEP.GAC.M.00010 | 86d | 0d | CX1580 | 50 | PRO | INST | DEM | P4 |  | MOD |
| CEP.INS.50.00180 |  | Installazione Serbatoio accumulo acqua industriale 91F-BL001X | 7d | CEP.INS.50.00160, CEP.SER.M.00010 | 96d | 0d | CX1580 | 50 | PRO | INST | DEM | P4 | 91F | MOD |
| CEP.INS.50.00190 |  | Installazione Gruppo pressurizzazione acqua industriale 91F-91M | 7d | CEP.INS.50.00170, CEP.GAC.M.00010 | 86d | 0d | CX1580 | 50 | PRO | INST | DEM | P4 | 91F | MOD |
| CEP.INS.50.00200 |  | Installazione Filtro dissabbiatore 91F-EF002X | 7d | CEP.INS.50.00180, CEP.PAC.M.00010 | 96d | 0d | CX1580 | 50 | PRO | INST | DEM | P4 | 91F | MOD |
| CEP.INS.50.00210 |  | Installazione Debatterizzatore 91F-BV101X | 7d | CEP.INS.50.00190, CEP.PAC.M.00010 | 86d | 0d | CX1580 | 50 | PRO | INST | DEM | P4 | 91A | MOD |
| CEP.INS.50.00220 |  | Installazione Serbatoio accumulo acqua di lavaggio 51A-BL011X | 7d | CEP.INS.50.00200, CEP.SER.M.00010 | 96d | 0d | CX1580 | 50 | PRO | INST | DEM | P4 | 51A | MOD |
| CEP.INS.50.00230 |  | Installazione Pompa di trasferimento 51A-CA104X | 5d | CEP.INS.50.00210, CEP.POM.M.00010 | 86d | 0d | CX1580 | 50 | PRO | INST | DEM | P4 | 51A | MOD |
| CEP.INS.50.00240 |  | Installazione Serbatoio accumulo aria strumenti linea fusti 96A-BL003X | 7d | CEP.INS.50.00220, CEP.SER.M.00010 | 96d | 0d | CX1580 | 50 | PRO | INST | DEM | P4 | 96A | MOD |
| CEP.INS.50.00250 |  | Installazione Serbatoio additivi chimici 92A-BL004X | 7d | CEP.INS.50.00230, CEP.SER.M.00010 | 86d | 0d | CX1580 | 50 | PRO | INST | DEM | P4 | 92A | MOD |
| CEP.INS.50.00260 |  | Installazione Serbatoio inerziale 92A-BL002X | 7d | CEP.INS.50.00240, CEP.SER.M.00010 | 96d | 10d | CX1580 | 50 | PRO | INST | DEM | P4 | 92A | MOD |
| CEP.INS.50.00270 |  | Installazione Additivatore 91F-BV102X | 7d | CEP.INS.50.00250, CEP.PAC.M.00010 | 86d | 0d | CX1580 | 50 | PRO | INST | DEM | P4 | 91F | MOD |
| CEP.INS.50.00280 |  | Installazione Piping, valvole, eiettori... SERVIZI AUSILIARI | 90d | CEP.CIV.F.12040, CEP.INS.50.00010 SS, CEP.INS.50.00270 FF+1d, CEP.INS.50.00260 FF+3d, CEP.INS.46.00180, CEP.STO.M.00010 | 8d | 0d | CX1580 | 50 | PRO | INST | DEM | P4 |  | MOD |
| CEP.INS.50.00290 |  | Collaudo idraulico SERVIZI AUSILIARI | 12d | CEP.INS.50.00280, CEP.INS.50.00270, CEP.INS.50.00260 | 147d | 202d | CX1580 | 50 | PRO | INST | DEM | P4 |  | MOD |

| ID | WBS | Activity | Type | Duration | Predecessors | Total float | Free float | CEMEX 2025 - Activity code Sogin | CEMEX LOCALE | CEMEX DISCIPLINE | CEMEX ACTIVITY TYPE | CEMEX RESPONSABILITY | CEMEX PARTITE | CEMEX SISTEMI | CEMEX REVISIONE |
| --- | --- | --- | --- | --- | --- | --- | --- | --- | --- | --- | --- | --- | --- | --- | --- |
|  | 3 | **Room L55** |  |  |  |  |  |  |  |  |  |  |  |  |  |
| CEP.INS.55.00010 |  | Installazione 2 Pompe circuito acqua demi alta pressione 91A-CA102B/A |  | 5d | CEP.INS.50.00270, CEP.CIV.F.12040, CEP.INS.50.00260, CEP.POM.M.00010, CEP.INS.M.00035 SS | 86d | 0d | CX1580 | 55 | PRO | INST | DEM | P4 | 91A | MOD |
| CEP.INS.55.00030 |  | Installazione 2 Pompe circuito acqua demi bassa pressione 91A-CA101B/A |  | 5d | CEP.INS.55.00010, CEP.POM.M.00010 | 94d | 0d | CX1580 | 55 | PRO | INST | DEM | P4 | 91A | MOD |
| CEP.INS.55.00050 |  | Installazione Skid produzione acqua demineralizzata 91A-91L |  | 7d | CEP.INS.55.00030, CEP.PAC.M.00010 | 94d | 8d | CX1580 | 55 | PRO | INST | DEM | P4 | 91A | MOD |
| CEP.INS.55.00060 |  | Installazione Piping, valvole, eiettori... IMPIANTO DEMINERALIZZAZIONE |  | 30d | CEP.INS.55.00010 SS, CEP.CIV.F.12040, CEP.INS.55.00050 FF+5d, CEP.PAC.A.00180 | 86d | 0d | CX1580 | 55 | PRO | INST | DEM | P4 | 91A | MOD |
| CEP.INS.55.00070 |  | Collaudo idraulico IMPIANTO DEMINERALIZZAZIONE |  | 8d | CEP.INS.55.00060 | 229d | 284d | CX1580 | 55 | PRO | INST | DEM | P4 | 91A | MOD |
|  | 4 | **Rooms 107, 108, 109** |  |  |  |  |  |  |  |  |  |  |  |  |  |
| CEP.INS.107.00010 |  | Installazione Piping, valvole, eiettori... CAVEDIO IMPIANTISTICO |  | 90d | CEP.INS.03.00010, CEP.CIV.F.12040, CEP.INS.M.00035 SS | 272d | 0d | CX1580 | 107 | PRO | INST | DEM | P4 |  | MOD |
| CEP.INS.107.00020 |  | Collaudo idraulico CAVEDIO IMPIANTISTICO |  | 12d | CEP.INS.107.00010 | 272d | 327d | CX1580 | 107 | PRO | INST | DEM | P4 |  | MOD |
|  | 15 | **Other rooms** |  |  |  |  |  |  |  |  |  |  |  |  |  |
|  | 3 | **Installazione carriponte e paranchi** |  |  |  |  |  |  |  |  |  |  |  |  |  |
|  | 1 | **Installazione carriponte q.ta 0.00m** |  |  |  |  |  |  |  |  |  |  |  |  |  |
|  | 1 | **Installazione carroponte 53A-DW001 (L.07)** |  |  |  |  |  |  |  |  |  |  |  |  |  |
| CEP.CRA.I.01000 |  | Installazione CARROPONTE 53A-DW001 SUMMARY | WBS summary | 28d |  | 272d | 2062d | CX1600 | 7 | CRA | INST | ANN | P2 | 53A |  |
| CEP.CRA.I.01010 |  | Inserimento vie di corsa tramite porta di accesso E4 nel locale L07 53A-DW001 |  | 2d | CEM.MLS.P.00060 FS+20d, CEP.CRA.M.14070, CEM.MLS.C.00030, CEP.INS.M.00010 SS | 272d | 0d | CX1600 | 7 | CRA | INST | ANN | P2 | 53A |  |
| CEP.CRA.I.01020 |  | Installazione vie di corsa nel locale L07 con gru semovente da 3.2t 53A-DW001 |  | 2d | CEP.CRA.I.01010 | 272d | 0d | CX1600 | 7 | CRA | INST | ANN | P2 | 53A |  |
| CEP.CRA.I.01030 |  | Inserimento prima trave ponte tramite porta di accesso E4 nel locale L07 53A-DW001 |  | 2d | CEP.CRA.I.01020 | 272d | 0d | CX1600 | 7 | CRA | INST | ANN | P2 | 53A |  |
| CEP.CRA.I.01040 |  | Sospensione prima trave ponte con paranco fissato a soffitto 53A-DW001 |  | 2d | CEP.CRA.I.01030 | 272d | 0d | CX1600 | 7 | CRA | INST | ANN | P2 | 53A |  |
| CEP.CRA.I.01050 |  | Inserimento testate tramite porta di accesso E4 nel locale L07 53A-DW001 |  | 2d | CEP.CRA.I.01040 | 272d | 0d | CX1600 | 7 | CRA | INST | ANN | P2 | 53A |  |
| CEP.CRA.I.01060 |  | Installazione testate con gru semovente da 3.2t 53A-DW001 |  | 3d | CEP.CRA.I.01050 | 272d | 0d | CX1600 | 7 | CRA | INST | ANN | P2 | 53A |  |
| CEP.CRA.I.01070 |  | Posizionamento e fissaggio prima trave ponte 53A-DW001 |  | 3d | CEP.CRA.I.01060 | 272d | 0d | CX1600 | 7 | CRA | INST | ANN | P2 | 53A |  |
| CEP.CRA.I.01080 |  | Inserimento carrello tramite porta di accesso E4 nel locale L07 53A-DW001 |  | 2d | CEP.CRA.I.01070 | 272d | 0d | CX1600 | 7 | CRA | INST | ANN | P2 | 53A |  |
| CEP.CRA.I.01090 |  | Sospensione carrello con paranco fissato a soffitto 53A-DW001 |  | 2d | CEP.CRA.I.01080 | 272d | 0d | CX1600 | 7 | CRA | INST | ANN | P2 | 53A |  |
| CEP.CRA.I.01100 |  | Inserimento seconda trave ponte varco di costrubilità L62-01 53A-DW001 |  | 2d | CEP.CRA.I.01090 | 272d | 0d | CX1600 | 7 | CRA | INST | ANN | P2 | 53A |  |
| CEP.CRA.I.01110 |  | Installazione seconda trave ponte con gru semovente da 3.2t 53A-DW001 |  | 3d | CEP.CRA.I.01100 | 272d | 0d | CX1600 | 7 | CRA | INST | ANN | P2 | 53A |  |
| CEP.CRA.I.01120 |  | Posizionamento e fissaggio carrello 53A-DW001 |  | 3d | CEP.CRA.I.01110 | 272d | 0d | CX1600 | 7 | CRA | INST | ANN | P2 | 53A |  |

| ID | WBS | Activity | Type | Duration | Predecessors | Total float | Free float | CEMEX 2025 - Activity code Sogin | CEMEX LOCALE | CEMEX DISCIPLINE | CEMEX ACTIVITY TYPE | CEMEX RESPONSABILITY | CEMEX PARTITE | CEMEX SISTEMI |
| --- | --- | --- | --- | --- | --- | --- | --- | --- | --- | --- | --- | --- | --- | --- |
|  | 3 | **Installazione carroponte 53A-DW003 (L.13)** |  |  |  |  |  |  |  |  |  |  |  |  |
| CEP.CRA.I.03000 |  | Installazione CARROPONTE 53A-DW003 SUMMARY | WBS summary | 33d |  | 272d | 2029d | CX1600 | 13 | CRA | INST | ANN | P2 | 53A |
| CEP.CRA.I.03010 |  | Inserimento vie di corsa tramite varco di costrubilità L62-01 e trasporto fino al locale L13 53A-DW003 |  | 2d | CEP.CRA.I.01120, CEP.CRA.M.14050, CEP.INS.M.00010 SS | 272d | 0d | CX1600 | 13 | CRA | INST | ANN | P2 | 53A |
| CEP.CRA.I.03020 |  | Installazione vie di corsa nel locale L13 con gru semovente da 3.2t 53A-DW003 |  | 7d | CEP.CRA.I.03010 | 272d | 0d | CX1600 | 13 | CRA | INST | ANN | P2 | 53A |
| CEP.CRA.I.03030 |  | Inserimento prima trave ponte tramite varco di costrubilità L62-01 e trasporto fino al locale L13 53A-DW003 |  | 2d | CEP.CRA.I.03020 | 272d | 0d | CX1600 | 13 | CRA | INST | ANN | P2 | 53A |
| CEP.CRA.I.03040 |  | Sospensione prima trave ponte con paranco fissato a soffitto 53A-DW003 |  | 2d | CEP.CRA.I.03030 | 272d | 0d | CX1600 | 13 | CRA | INST | ANN | P2 | 53A |
| CEP.CRA.I.03050 |  | Inserimento testate tramite varco di costrubilità L62-01 e trasporto fino al locale L13 53A-DW003 |  | 2d | CEP.CRA.I.03040 | 272d | 0d | CX1600 | 13 | CRA | INST | ANN | P2 | 53A |
| CEP.CRA.I.03060 |  | Installazione testate con gru semovente da 3.2t 53A-DW003 |  | 3d | CEP.CRA.I.03050 | 272d | 0d | CX1600 | 13 | CRA | INST | ANN | P2 | 53A |
| CEP.CRA.I.03070 |  | Posizionamento e fissaggio prima trave ponte 53A-DW003 |  | 3d | CEP.CRA.I.03060 | 272d | 0d | CX1600 | 13 | CRA | INST | ANN | P2 | 53A |
| CEP.CRA.I.03080 |  | Inserimento carrello varco di costrubilità L62-01 e trasporto fino al locale L13 53A-DW003 |  | 2d | CEP.CRA.I.03070 | 272d | 0d | CX1600 | 13 | CRA | INST | ANN | P2 | 53A |
| CEP.CRA.I.03090 |  | Sospensione carrello con paranco fissato a soffitto 53A-DW003 |  | 2d | CEP.CRA.I.03080 | 272d | 0d | CX1600 | 13 | CRA | INST | ANN | P2 | 53A |
| CEP.CRA.I.03100 |  | Inserimento seconda trave ponte varco di costrubilità L62-01 e trasporto fino al locale L13 53A-DW003 |  | 2d | CEP.CRA.I.03090 | 272d | 0d | CX1600 | 13 | CRA | INST | ANN | P2 | 53A |
| CEP.CRA.I.03110 |  | Installazione seconda trave ponte con gru semovente da 3.2t 53A-DW003 |  | 3d | CEP.CRA.I.03100 | 272d | 0d | CX1600 | 13 | CRA | INST | ANN | P2 | 53A |
| CEP.CRA.I.03120 |  | Posizionamento e fissaggio carrello carroponte 53A-DW003 |  | 3d | CEP.CRA.I.03110 | 272d | 6d | CX1600 | 13 | CRA | INST | ANN | P2 | 53A |
|  | 2 | **Installazione carroponte 53A-DW002 (L.12)** |  |  |  |  |  |  |  |  |  |  |  |  |
| CEP.CRA.I.02000 |  | Installazione CARROPONTE 53A-DW002 SUMMARY | WBS summary | 31d |  | 266d | 1992d | CX1600 | 12 | CRA | INST | ANN | P2 | 53A |
| CEP.CRA.I.02010 |  | Inserimento vie di corsa tramite varco di costrubilità L62-01 e trasporto fino al locale L12 53A-DW002 |  | 2d | CEP.CRA.I.03120, CEP.CRA.I.01120, CEP.CRA.M.14060, CEP.INS.M.00010 SS | 266d | 0d | CX1600 | 12 | CRA | INST | ANN | P2 | 53A |
| CEP.CRA.I.02020 |  | Installazione vie di corsa nel locale L12 con gru semovente da 3.2t 53A-DW002 |  | 5d | CEP.CRA.I.02010 | 266d | 0d | CX1600 | 12 | CRA | INST | ANN | P2 | 53A |
| CEP.CRA.I.02030 |  | Inserimento prima trave ponte tramite varco di costrubilità L62-01 e trasporto fino al locale L12 53A-DW002 |  | 2d | CEP.CRA.I.02020 | 266d | 0d | CX1600 | 12 | CRA | INST | ANN | P2 | 53A |
| CEP.CRA.I.02040 |  | Sospensione prima trave ponte con paranco fissato a soffitto 53A-DW002 |  | 2d | CEP.CRA.I.02030 | 266d | 0d | CX1600 | 12 | CRA | INST | ANN | P2 | 53A |
| CEP.CRA.I.02050 |  | Inserimento testate ponte tramite varco di costrubilità L62-01 e trasporto fino al locale L12 53A-DW002 |  | 2d | CEP.CRA.I.02040 | 266d | 0d | CX1600 | 12 | CRA | INST | ANN | P2 | 53A |
| CEP.CRA.I.02060 |  | Installazione testate con gru semovente da 3.2t 53A-DW002 |  | 3d | CEP.CRA.I.02050 | 266d | 0d | CX1600 | 12 | CRA | INST | ANN | P2 | 53A |
| CEP.CRA.I.02070 |  | Posizionamento e fissaggio prima trave ponte 53A-DW002 |  | 3d | CEP.CRA.I.02060 | 266d | 0d | CX1600 | 12 | CRA | INST | ANN | P2 | 53A |
| CEP.CRA.I.02080 |  | Inserimento testate ponte tramite varco di costrubilità L62-01 e trasporto fino al locale L12 53A-DW002 |  | 2d | CEP.CRA.I.02070 | 266d | 0d | CX1600 | 12 | CRA | INST | ANN | P2 | 53A |
| CEP.CRA.I.02090 |  | Sospensione carrello con paranco fissato a soffitto 53A-DW002 |  | 2d | CEP.CRA.I.02080 | 266d | 0d | CX1600 | 12 | CRA | INST | ANN | P2 | 53A |
| CEP.CRA.I.02100 |  | Inserimento seconda trave ponte varco di costrubilità L62-01 e trasporto fino al locale L12 53A-DW002 |  | 2d | CEP.CRA.I.02090 | 266d | 0d | CX1600 | 12 | CRA | INST | ANN | P2 | 53A |
| CEP.CRA.I.02110 |  | Installazione seconda trave ponte con gru semovente da 3.2t 53A-DW002 |  | 3d | CEP.CRA.I.02100 | 266d | 0d | CX1600 | 12 | CRA | INST | ANN | P2 | 53A |
| CEP.CRA.I.02120 |  | Posizionamento e fissaggio carrello carroponte 53A-DW002 |  | 3d | CEP.CRA.I.02110 | 266d | 34d | CX1600 | 12 | CRA | INST | ANN | P2 | 53A |

| ID | WBS | Activity | Type | Duration | Predecessors | Total float | Free float | CEMEX 2025 - Activity code Sogin | CEMEX LOCALE | CEMEX DISCIPLINE | CEMEX ACTIVITY TYPE | CEMEX RESPONSABILITY | CEMEX PARTITE | CEMEX SISTEMI | Note |
| --- | --- | --- | --- | --- | --- | --- | --- | --- | --- | --- | --- | --- | --- | --- | --- |
|  | 4 | **Installazione carroponte 53A-DW004 (L.14)** |  |  |  |  |  |  |  |  |  |  |  |  |  |
| CEP.CRA.I.04000 |  | Installazione CARROPONTE 53A-DW004 SUMMARY | WBS summary | 28d |  | 232d | 1930d | CX1600 | 14 | CRA | INST | ANN | P2 | 53A |  |
| CEP.CRA.I.04010 |  | Inserimento vie di corsa tramite varco di costrubilità L62-01 e trasporto fino al locale L14 53A-DW004 |  | 2d | CEP.CRA.I.02120, CEP.CRA.I.03120, CEP.CRA.M.14040, CEP.INS.M.00010 SS | 232d | 0d | CX1600 | 14 | CRA | INST | ANN | P2 | 53A |  |
| CEP.CRA.I.04020 |  | Installazione vie di corsa nel locale L14 con gru semovente da 3.2t 53A-DW004 |  | 2d | CEP.CRA.I.04010 | 232d | 0d | CX1600 | 14 | CRA | INST | ANN | P2 | 53A |  |
| CEP.CRA.I.04030 |  | Inserimento prima trave ponte tramite varco di costrubilità L62-01 e trasporto fino al locale L14 53A-DW004 |  | 2d | CEP.CRA.I.04020 | 232d | 0d | CX1600 | 14 | CRA | INST | ANN | P2 | 53A |  |
| CEP.CRA.I.04040 |  | Sospensione prima trave ponte con paranco fissato a soffitto 53A-DW004 |  | 2d | CEP.CRA.I.04030 | 232d | 0d | CX1600 | 14 | CRA | INST | ANN | P2 | 53A |  |
| CEP.CRA.I.04050 |  | Inserimento testate tramite varco di costrubilità L62-01 e trasporto fino al locale L14 53A-DW004 |  | 2d | CEP.CRA.I.04040 | 232d | 0d | CX1600 | 14 | CRA | INST | ANN | P2 | 53A |  |
| CEP.CRA.I.04060 |  | Installazione testate con gru semovente da 3.2t 53A-DW004 |  | 3d | CEP.CRA.I.04050 | 232d | 0d | CX1600 | 14 | CRA | INST | ANN | P2 | 53A |  |
| CEP.CRA.I.04070 |  | Posizionamento e fissaggio prima trave ponte 53A-DW004 |  | 3d | CEP.CRA.I.04060 | 232d | 0d | CX1600 | 14 | CRA | INST | ANN | P2 | 53A |  |
| CEP.CRA.I.04080 |  | Inserimento carrello varco di costrubilità L62-01 e trasporto fino al locale L14 53A-DW004 |  | 2d | CEP.CRA.I.04070 | 232d | 0d | CX1600 | 14 | CRA | INST | ANN | P2 | 53A |  |
| CEP.CRA.I.04090 |  | Sospensione carrello con paranco fissato a soffitto 53A-DW004 |  | 2d | CEP.CRA.I.04080 | 232d | 0d | CX1600 | 14 | CRA | INST | ANN | P2 | 53A |  |
| CEP.CRA.I.04100 |  | Inserimento seconda trave ponte varco di costrubilità L62-01 e trasporto fino al locale L14 53A-DW004 |  | 2d | CEP.CRA.I.04090 | 232d | 0d | CX1600 | 14 | CRA | INST | ANN | P2 | 53A |  |
| CEP.CRA.I.04110 |  | Installazione seconda trave ponte con gru semovente da 3.2t 53A-DW004 |  | 3d | CEP.CRA.I.04100 | 232d | 0d | CX1600 | 14 | CRA | INST | ANN | P2 | 53A |  |
| CEP.CRA.I.04120 |  | Posizionamento e fissaggio carrello carroponte 53A-DW004 |  | 3d | CEP.CRA.I.04110 | 232d | 51d | CX1600 | 14 | CRA | INST | ANN | P2 | 53A |  |
|  | 2 | **Installazione carriponte q.ta 6.00m** |  |  |  |  |  |  |  |  |  |  |  |  |  |
|  | 1 | **Installazione carriponte 53A-DW012 (L.23)** |  |  |  |  |  |  |  |  |  |  |  |  |  |
| CEP.CRA.I.12000 |  | Installazione CARROPONTE 53A-DW012 SUMMARY | WBS summary | 28d |  | 231d | 2062d | CX1600 | 23 | CRA | INST | ANN | P2 | 53A |  |
| CEP.CRA.I.12010 |  | Inserimento vie di corsa tramite varco maggiorato L40-01 e trasporto fino al locale L23 53A-DW012 |  | 2d | CEM.MLS.P.00070 FS+20d, CEP.CRA.M.12110, CEP.INS.M.00005 SS+90d, CEP.INS.M.00010 SS | 231d | 0d | CX1600 | 40 | CRA | INST | ANN | P2 | 53A |  |
| CEP.CRA.I.12020 |  | Installazione vie di corsa nel locale L23 53A-DW012 |  | 2d | CEP.CRA.I.12010 | 231d | 0d | CX1600 | 23 | CRA | INST | ANN | P2 | 53A |  |
| CEP.CRA.I.12030 |  | Inserimento testate e travi ponte nel Locale L40 tramite varco maggiorato L40-01 53A-DW012 |  | 3d | CEP.CRA.I.12020 | 231d | 0d | CX1600 | 40 | CRA | INST | ANN | P2 | 53A |  |
| CEP.CRA.I.12040 |  | Assemblaggio testate e travi ponte nel locale L40 tramite varco maggiorato L40-01 53A-DW012 |  | 6d | CEP.CRA.I.12030 | 231d | 0d | CX1600 | 40 | CRA | INST | ANN | P2 | 53A | "Diminuito di 2d;" |
| CEP.CRA.I.12050 |  | Trasporto del carroponte assemblato nel locale 44B 53A-DW012 |  | 3d | CEP.CRA.I.12040 | 231d | 0d | CX1600 | 44 | CRA | INST | ANN | P2 | 53A | "Aumentato di 1d;" |
| CEP.CRA.I.12060 |  | Sollevamento e posizionamento del ponte assemblato sulle vie di corsa nel locale L23 53A-DW012 |  | 3d | CEP.CRA.I.12050 | 231d | 0d | CX1600 | 23 | CRA | INST | ANN | P2 | 53A |  |
| CEP.CRA.I.12070 |  | Inserimento carrello nel locale L40 tramite varco maggiorato L40-01 53A-DW012 |  | 3d | CEP.CRA.I.12060 | 231d | 0d | CX1600 | 40 | CRA | INST | ANN | P2 | 53A |  |
| CEP.CRA.I.12080 |  | Trasporto carrello nel locale L44A 53A-DW012 |  | 2d | CEP.CRA.I.12070 | 231d | 0d | CX1600 | 44 | CRA | INST | ANN | P2 | 53A |  |
| CEP.CRA.I.12090 |  | Sollevamento e posizionamento del carrello sul ponte installato nel locale L23 53A-DW012 |  | 4d | CEP.CRA.I.12080 | 231d | 40d | CX1600 | 23 | CRA | INST | ANN | P2 | 53A |  |

| ID | WBS | Activity | Type | Duration | Predecessors | Total float | Free float | Calendar | CEMEX LOCALE | CEMEX RESPONSABILITY | CEMEX PARTITE | CEMEX SISTEMI | Note | CEMEX DISCIPLINE | CEMEX ACTIVITY TYPE | CEMEX REVISIONE | CEMEX 2025 - Activity code Sogin | CEMEX N° COMPONENTE | CEMEX TAG COMPONENTE |
| --- | --- | --- | --- | --- | --- | --- | --- | --- | --- | --- | --- | --- | --- | --- | --- | --- | --- | --- | --- |
|  | 3 | **Installazione paranchi 53A** |  |  |  |  |  |  |  |  |  |  |  |  |  |  |  |  |  |
| CEP.CRA.I.12082 |  | Installazione paranchi 53A |  | 15d | CEP.CRA.D.14145 | 634d | 0d | Standard 5 Day Workweek with ITA Basic Holidays (2016-2031) | 0 | ANN | P2 | 53A |  |  |  |  |  |  |  |
| CEP.CRA.I.12086 |  | Collegamenti elettrici paranchi 53A |  | 10d | CEP.CRA.I.12082 | 634d | 695d | Standard 5 Day Workweek with ITA Basic Holidays (2016-2031) | 0 | ANN | P2 | 53A |  |  |  |  |  |  |  |
|  | 5 | **Montaggi HVAC** |  |  |  |  |  |  |  |  |  |  |  |  |  |  |  |  |  |
| CEP.HVA.E.00000 |  | Montaggi HVAC SUMMARY | WBS summary | 418d |  | 179d | 1672d |  | 0 | DEM | P5 |  | Distribuzione ore 85% | HVA | INST | MOD |  |  |  |
|  | 2 | **Montaggi HVAC q.ta 0.00m - +4.20m** |  |  |  |  |  |  |  |  |  |  |  |  |  |  |  |  |  |
|  | 1 | **Componenti** |  |  |  |  |  |  |  |  |  |  |  |  |  |  |  |  |  |
| CEP.HVA.E.00510 |  | Ventilatore mandata loc quadri elettrici 94B-CD138A/B (loc 75C) |  | 5d | CEP.CIV.F.00100, CEP.HVA.M.10020, CEP.INS.M.00005 SS+90d, CEP.INS.M.00010 SS | 45d | 0d |  | 75 | DEM | P5 | 94B |  | HVA | INST | MOD | CX1520 |  |  |
| CEP.HVA.E.00520 |  | Ventilatore mandata loc serbatoi reagenti 94B-CD141X (loc 06) |  | 5d | CEP.HVA.E.00510, CEP.HVA.M.10020 | 96d | 136d |  | 6 | DEM | P5 | 94B |  | HVA | INST | MOD | CX1520 | 121 |  |
| CEP.HVA.E.00530 |  | Aerotermo di riscaldamento ad acqua 94B-BJ106X (loc 06) |  | 5d | CEP.HVA.E.00510 | 45d | 0d |  | 6 | DEM | P5 | 94B |  | HVA | INST | MOD | CX1520 | 116 |  |
| CEP.HVA.E.00540 |  | Condizionatore 94B-DB146X (loc 17) |  | 5d | CEP.HVA.E.00530 | 45d | 0d |  | 17 | DEM | P5 | 94B |  | HVA | INST | MOD | CX1520 | 123 |  |
| CEP.HVA.E.00550 |  | Umidificatore 94B-UV001X (loc 17) |  | 5d | CEP.HVA.E.00540 | 45d | 0d |  | 17 | DEM | P5 | 94B |  | HVA | INST | MOD | CX1520 | 146? |  |
| CEP.HVA.E.00570 |  | 4 Case filtri 94B-DJ013/15/16/17 (loc 15-15-16-16) |  | 5d | CEP.HVA.E.00550, CEP.HVA.M.10410 | 45d | 0d |  | 0 | DEM | P5 | 94B |  | HVA | INST | MOD | CX1520 | 225 |  |
|  | 2 | **Canali** |  |  |  |  |  |  |  |  |  |  |  |  |  |  |  |  |  |
| CEP.HVA.D.00510 |  | Supporti canali q.ta 0.00 VINCOLO TEMPORANEO (POST FORNITURA HVAC) |  | 66d | CEP.CIV.F.12060, CEP.HVA.O.00440, CEP.INS.M.00010 SS, CEP.HVA.E.00570, CEP.HVA.M.10430, CEP.HVA.M.10460, CEP.HVA.O.540, CEP.HVA.M.10500 | -70d | 0d |  | 0 | COS | P1 |  | VINCOLO TEMPORANEO (POST FORNITURA BULK HVAC) | HVA | INST | AGG | CX1520 |  | SUPPORTI |
| CEP.HVA.D.00520 |  | Canali di ventilazione e serrande q.ta 0.00 |  | 60d | CEP.HVA.D.00510 SS+6d, CEP.HVA.M.10310, CEP.HVA.M.10210, CEP.HVA.E.00570, CEP.HVA.E.00520, CEP.INS.M.00010 SS, CEP.HVA.S.40260, CEP.HVA.S.40280, CEP.HVA.M.10480, CEP.HVA.S.40360, CEP.HVA.S.40370 | -40d | 0d |  | 0 | DEM | P5 |  |  | HVA | INST | MOD | CX1520 |  |  |
| CEP.HVA.D.00530 |  | Coibentazione mandate q.ta 0.00 |  | 7d | CEP.HVA.D.12030, CEP.HVA.D.00520, CEP.HVA.D.04080, CEP.INS.M.00010 SS | 179d | 215d |  | 0 | DEM | P5 |  |  | HVA | INST | MOD | CX1520 |  |  |
|  | 3 | **Montaggi HVAC q.ta +4.20m - +6.00m** |  |  |  |  |  |  |  |  |  |  |  |  |  |  |  |  |  |
|  | 1 | **Componenti** |  |  |  |  |  |  |  |  |  |  |  |  |  |  |  |  |  |
| CEP.HVA.E.04010 |  | Ventilatore mandata locale UPS-A 94B-CD136A/B (loc 19C) |  | 5d | CEP.HVA.M.10020, CEP.HVA.E.00570, CEP.CIV.S.12040, CEP.CIV.S.18040 | 90d | 0d |  | 19 | DEM | P5 | 94B |  | HVA | INST | MOD | CX1520 | 118 |  |
| CEP.HVA.E.04020 |  | Ventilatore mandata locale UPS-B 94B-CD137A/B (loc 19D) |  | 5d | CEP.HVA.E.04010, CEP.HVA.M.10020 | 90d | 0d |  | 19 | DEM | P5 | 94B |  | HVA | INST | MOD | CX1520 | 119 |  |
| CEP.HVA.E.04030 |  | 3 Case filtri 94B-DJ012/14/18 (loc 05-27-22) |  | 5d | CEP.HVA.E.04020, CEP.HVA.M.10410 | 90d | 1d |  | 0 | DEM | P5 | 94B |  | HVA | INST | MOD | CX1520 | 222 |  |
|  | 2 | **Canali** |  |  |  |  |  |  |  |  |  |  |  |  |  |  |  |  |  |
| CEP.HVA.D.04060 |  | Supporti canali q.ta 4.20 |  | 20d | CEP.HVA.D.00510, CEP.HVA.O.00440, CEP.HVA.M.10500 | -70d | 0d |  | 0 | COS | P1 |  | VINCOLO TEMPORANEO (POST FORNITURA BULK HVAC) | HVA | INST | AGG | CX1520 |  | SUPPORTI |
| CEP.HVA.D.04070 |  | Canali di ventilazione e serrande q.ta 4.20 |  | 30d | CEP.HVA.D.04060 SS+6d, CEP.HVA.D.00520, CEP.HVA.M.10310, CEP.HVA.M.10210, CEP.HVA.M.10460, CEP.HVA.M.10480 | -46d | 0d |  | 0 | DEM | P5 |  |  | HVA | INST | MOD | CX1520 |  |  |
| CEP.HVA.D.04080 |  | Coibentazione mandate q.ta 4.20 |  | 7d | CEP.HVA.D.04070, CEP.HVA.D.06030 | 179d | 0d |  | 0 | DEM | P5 |  |  | HVA | INST | MOD | CX1520 |  |  |

| ID | WBS | Activity | Duration | Predecessors | Total float | Free float | CEMEX N° COMPONENTE | CEMEX 2025 - Activity code Sogin | CEMEX LOCALE | CEMEX DISCIPLINE | CEMEX ACTIVITY TYPE | CEMEX RESPONSABILITY | CEMEX PARTITE | CEMEX SISTEMI | CEMEX REVISIONE | Note | CEMEX TAG COMPONENTE |
| --- | --- | --- | --- | --- | --- | --- | --- | --- | --- | --- | --- | --- | --- | --- | --- | --- | --- |
|  | 4 | **Montaggi HVAC q.ta 6.00m - +12.00m** |  |  |  |  |  |  |  |  |  |  |  |  |  |  |  |
|  | 1 | **Componenti** |  |  |  |  |  |  |  |  |  |  |  |  |  |  |  |
| CEP.HVA.C.06010 |  | Installazione 2 ventilatori mandata locale quadri elettrici 94B-CD139A/B | 4d | CEP.HVA.M.10020, CEP.HVA.E.04030, CEP.CIV.C.00030 | 89d | 0d | 122 | CX1560 | 43 | HVA | INST | DEM | P5 | 94B | MOD |  |  |
| CEP.HVA.C.06020 |  | Aerotermo di riscaldamento ad acqua 94B-BJ107X | 5d | CEP.HVA.C.06010 | 89d | 0d | 117 | CX1560 | 26 | HVA | INST | DEM | P5 | 94B | MOD |  |  |
| CEP.HVA.C.06030 |  | 7 Case filtri 94B-DJ003/4/5/7/8/9/14 (loc 23-27-27-27-57-30-30) | 7d | CEP.HVA.C.06020, CEP.HVA.M.10410 | 89d | 0d | 214 | CX1560 | 0 | HVA | INST | DEM | P5 | 94B | MOD |  |  |
| CEP.HVA.C.06100 |  | Unità esterna condizionatore 94C-DB146X | 5d | CEP.HVA.C.06030 | 89d | 0d | 124 | CX1560 | TZ01 | HVA | INST | DEM | P5 | 94C | MOD |  |  |
| CEP.HVA.C.06110 |  | Riscaldatori elettrici (loc 35, 38, 39A, 39B, 36A/B) | 5d | CEP.HVA.C.06100 | 89d | 159d |  | CX1560 | 0 | HVA | INST | DEM | P5 |  | MOD |  |  |
|  | 2 | **Canali** |  |  |  |  |  |  |  |  |  |  |  |  |  |  |  |
| CEP.HVA.D.06010 |  | Supporti canali q.ta 6.00 | 66d | CEP.HVA.D.04060, CEP.HVA.O.00440, CEP.HVA.C.06110 | -70d | 0d |  | CX1560 | 0 | HVA | INST | COS | P1 |  | AGG | VINCOLO TEMPORANEO (POST FORNITURA BULK HVAC) | SUPPORTI |
| CEP.HVA.D.06020 |  | Canali di ventilazione e serrande q.ta 6.00 | 66d | CEP.HVA.D.06010 SS, CEP.HVA.D.04070 FS-10d, CEP.HVA.M.10310, CEP.HVA.M.10210 | -46d | 0d |  | CX1560 | 0 | HVA | INST | DEM | P5 |  | MOD |  |  |
| CEP.HVA.D.06030 |  | Coibentazione mandate q.ta 6.00 | 15d | CEP.HVA.D.06020, CEP.HVA.D.12020 | 179d | 0d |  | CX1560 | 0 | HVA | INST | DEM | P5 |  | MOD |  |  |
|  | 5 | **Montaggi HVAC q.ta 12.00m+** |  |  |  |  |  |  |  |  |  |  |  |  |  |  |  |
|  | 1 | **Componenti** |  |  |  |  |  |  |  |  |  |  |  |  |  |  |  |
| CEP.HVA.C.12010 |  | Banco filtrante estrazione SAG 94B-DJ002A/B | 6d | CEP.CIV.F.12040 SS+18d, CEP.HVA.M.10410 | 112d | 0d | 46 | CX1590 | 44 | HVA | INST | DEM | P5 | 94B | MOD |  |  |
| CEP.HVA.C.12020 |  | Ventilatore estrazione SAG 94B-CD146A/B | 6d | CEP.HVA.C.12010, CEP.HVA.M.10020 | 112d | 0d | 54 | CX1590 | 44 | HVA | INST | DEM | P5 | 94B | MOD |  |  |
| CEP.HVA.C.12030 |  | Banco filtrante aria sfiati 94B-DJ006A/B | 6d | CEP.HVA.C.12020, CEP.HVA.M.10410 | 112d | 0d | 55 | CX1590 | 44 | HVA | INST | DEM | P5 | 94B | MOD | "Aumentato di 3d;" |  |
| CEP.HVA.C.12040 |  | Ventilatore estrazione aria sfiati 94B-CD133A/B | 5d | CEP.HVA.C.12030, CEP.HVA.M.10020 | 112d | 0d | 47 | CX1590 | 44 | HVA | INST | DEM | P5 | 94B | MOD |  |  |
| CEP.HVA.C.12050 |  | Banco filtrante 94B-DJ001A/B/C/D | 12d | CEP.HVA.C.12040, CEP.HVA.M.10410 | 112d | 0d | 66 | CX1590 | 48 | HVA | INST | DEM | P5 | 94B | MOD |  |  |
| CEP.HVA.C.12060 |  | Ventilatore estrazione aria zona controllata 94B-CD132A/B | 5d | CEP.HVA.C.12050, CEP.HVA.M.10020 | 112d | 0d | 67 | CX1590 | 48 | HVA | INST | DEM | P5 | 94B | MOD |  |  |
| CEP.HVA.C.12070 |  | Ventilatore mandata sala controllo 94B-CD135A/B | 5d | CEP.HVA.C.12060, CEP.HVA.M.10020 | 112d | 0d | 96 | CX1590 | 96 | HVA | INST | DEM | P5 | 94B | MOD |  |  |
| CEP.HVA.C.12080 |  | Case filtro 94B-ED006A/B (94B-DJ011A/B) | 2d | CEP.HVA.C.12070, CEP.HVA.M.10410 | 112d | 0d | 220 | CX1590 | 96 | HVA | INST | DEM | P5 | 94B | MOD |  |  |
| CEP.HVA.C.12090 |  | Ventilatore mandata loc. quadri elettrici 94B-CD140A/B | 5d | CEP.HVA.C.12080, CEP.HVA.M.10020 | 112d | 26d | 230 | CX1590 | 52 | HVA | INST | DEM | P5 | 94B | MOD |  |  |
| CEP.HVA.C.12100 |  | Aerotermo di riscaldamento ad acqua 94B-BJ123X | 2d | CEP.HVA.C.12090, CEP.HVA.M.10020, CEP.INS.46.00030 | 86d | 0d | 111 | CX1590 | 46 | HVA | INST | DEM | P5 | 94B | MOD |  |  |
| CEP.HVA.C.12110 |  | Aerotermo di riscaldamento ad acqua 94B-BJ124X | 2d | CEP.HVA.M.10020, CEP.INS.46.00150 | 339d | 0d | 111 | CX1590 | 46 | HVA | INST | DEM | P5 | 94B | MOD |  |  |
| CEP.HVA.C.12120 |  | Ventilatore mandata loc. vapore ausiliari 94B-CD142X | 5d | CEP.HVA.M.10020, CEP.HVA.C.12110 | 339d | 160d | 115 | CX1590 | 46 | HVA | INST | DEM | P5 | 94B | MOD |  |  |
| CEP.HVA.C.12130 |  | Umidificatore UTA DO004X | 2d | CEP.HVA.M.10110, CEP.HVA.C.12080 | 333d | 0d | 147 | CX1590 | 40 | HVA | INST | DEM | P5 |  | MOD |  |  |
| CEP.HVA.C.12140 |  | Umidificatore UTA DO005X | 2d | CEP.HVA.C.12130 | 333d | 0d | 147 | CX1590 | 40 | HVA | INST | DEM | P5 |  | MOD |  |  |
| CEP.HVA.C.12150 |  | Unità di trattamento aria DO003X | 5d | CEP.HVA.M.10110, CEP.HVA.C.12140, CEP.HVA.M.10450 | 333d | 0d | 92 | CX1590 | 40 | HVA | INST | DEM | P5 |  | MOD |  |  |
| CEP.HVA.C.12160 |  | Unità di trattamento aria DO004X | 5d | CEP.HVA.C.12150 | 333d | 0d | 92 | CX1590 | 40 | HVA | INST | DEM | P5 |  | MOD |  |  |
| CEP.HVA.C.12170 |  | Unità di trattamento aria DO005X | 5d | CEP.HVA.C.12160 | 333d | 0d | 92 | CX1590 | 40 | HVA | INST | DEM | P5 |  | MOD |  |  |
| CEP.HVA.C.12260 |  | Installazione 2 Ventilatori estrazione aria zona non controllata 94B-CD134A/B | 5d | CEP.HVA.M.10020, CEP.HVA.C.12150, CEP.HVA.C.12170 | 333d | 154d | 95 | CX1590 | 40 | HVA | INST | DEM | P5 | 94B | MOD |  |  |

| ID | WBS | Activity | Duration | Predecessors | Total float | Free float | Note | CEMEX TAG COMPONENTE | CEMEX 2025 - Activity code Sogin | CEMEX LOCALE | CEMEX DISCIPLINE | CEMEX ACTIVITY TYPE | CEMEX RESPONSABILITY | CEMEX PARTITE | CEMEX REVISIONE | CEMEX SISTEMI |
| --- | --- | --- | --- | --- | --- | --- | --- | --- | --- | --- | --- | --- | --- | --- | --- | --- |
|  | 2 | **Canali** |  |  |  |  |  |  |  |  |  |  |  |  |  |  |
| CEP.HVA.D.12010 |  | Supporti canali q.ta 12.00 | 65d | CEP.HVA.D.06010, CEP.HVA.O.00440, CEP.HVA.C.12050, CEP.HVA.C.12040, CEP.HVA.C.12060 | -15d | 0d | verifica predecessore Ventilatore | SUPPORTI | CX1590 | 0 | HVA | INST | COS | P1 | AGG |  |
| CEP.HVA.D.12020 |  | Canali di ventilazione e serrande q.ta 12.00 | 90d | CEP.HVA.D.12010 SS+7d, CEP.HVA.D.06020, CEP.HVA.M.10310, CEP.HVA.M.10210, CEP.HVA.C.12260, CEP.HVA.C.12120 FF+20d | 179d | 0d |  |  | CX1590 | 0 | HVA | INST | DEM | P5 | MOD |  |
| CEP.HVA.D.12030 |  | Coibentazione mandate q.ta 12.00 | 22d | CEP.HVA.D.12020 | 179d | 0d |  |  | CX1590 | 0 | HVA | INST | DEM | P5 | MOD |  |
|  | 6 | **Verifiche e controlli** |  |  |  |  |  |  |  |  |  |  |  |  |  |  |
| CEP.HVA.T.00010 |  | Verifica layout canali | 15d | CEP.HVA.D.12020 | 183d | 0d |  |  | CX1590 | 0 | HVA | INST | DEM | P5 | MOD |  |
| CEP.HVA.T.00020 |  | Prova tenuta canali riprese | 10d | CEP.HVA.T.00010 | 183d | 219d |  |  | CX1590 | 0 | HVA | INST | DEM | P5 | MOD |  |
|  | 6 | **Montaggi rulliere, SAS, macchine speciali di cementazione, carrello 53A-DW014 e Montacarichi** |  |  |  |  |  |  |  |  |  |  |  |  |  |  |
|  | 1 | **Montaggi rulliere e SAS** |  |  |  |  |  |  |  |  |  |  |  |  |  |  |
| CEP.RUL.I.00010 |  | Montaggio Rulliere e SAS Room 8 | 20d | CEP.CRA.I.04120, CEP.I&C.Q.00060, CEP.RUL.M.10010, CEP.SAS.M.10010, CEP.INS.04.00110, CEP.INS.M.00010 SS | 159d | 0d |  |  | CX1700 | 8 | ROL | INST | ANN | P2 |  | 53A |
| CEP.RUL.I.00020 |  | Montaggio Rulliere e SAS Room 8A | 6d | CEP.RUL.I.00010, CEP.RUL.M.10010, CEP.SAS.M.10010, CEP.INS.04.00110 | 159d | 0d |  |  | CX1700 | 8 | ROL | INST | ANN | P2 |  | 53A |
| CEP.RUL.I.00030 |  | Montaggio Rulliere Room 7 | 4d | CEP.RUL.I.00020, CEP.RUL.M.10010, CEP.INS.04.00110 | 159d | 0d |  |  | CX1700 | 7 | ROL | INST | ANN | P2 |  | 53A |
| CEP.RUL.I.00040 |  | Montaggio Rulliere e SAS Room 9 | 8d | CEP.RUL.I.00030, CEP.RUL.M.10010, CEP.SAS.M.10010, CEP.INS.04.00110 | 159d | 0d |  |  | CX1700 | 9 | ROL | INST | ANN | P2 |  | 53A |
| CEP.RUL.I.00050 |  | Montaggio Rulliere e SAS Room 10 | 16d | CEP.RUL.I.00040, CEP.RUL.M.10010, CEP.SAS.M.10010, CEP.INS.10.00080, CEP.INS.04.00110 | 159d | 0d |  |  | CX1700 | 10 | ROL | INST | ANN | P2 |  | 53A |
| CEP.RUL.I.00060 |  | Montaggio Rulliere e SAS Room 11 - Fase 1 | 15d | CEP.RUL.I.00050, CEP.RUL.M.10010, CEP.SAS.M.10010, CEP.INS.04.00110 | 159d | 0d |  |  | CX1700 | 11 | ROL | INST | ANN | P2 |  | 53A |
| CEP.RUL.I.00070 |  | Montaggio Rulliere Room 11 - Fase 2 | 15d | CEP.RUL.I.00060, CEP.RUL.M.10010, CEP.INS.04.00110 | 159d | 0d |  |  | CX1700 | 11 | ROL | INST | ANN | P2 |  | 53A |
| CEP.RUL.I.00080 |  | Montaggio Rulliere e SAS Room 14 - Fase 1 | 6d | CEP.RUL.I.00070, CEP.RUL.M.10010, CEP.SAS.M.10010, CEP.INS.04.00110 | 162d | 0d |  |  | CX1700 | 14 | ROL | INST | ANN | P2 |  | 53A |
| CEP.RUL.I.00090 |  | Montaggio Rulliere Room 13 | 15d | CEP.RUL.I.00080, CEP.RUL.M.10010, CEP.INS.04.00110 | 162d | 0d |  |  | CX1700 | 13 | ROL | INST | ANN | P2 |  | 53A |
| CEP.RUL.I.00100 |  | Montaggio Rulliere e SAS Room 14 - Fase 2 | 6d | CEP.RUL.I.00090, CEP.RUL.M.10010, CEP.SAS.M.10010, CEP.INS.04.00110 | 162d | 0d |  |  | CX1700 | 14 | ROL | INST | ANN | P2 |  | 53A |
|  | 2 | **Montaggi macchine speciali del tunnel di cementazione, carrello 53A-DW014 e montacarichi** |  |  |  |  |  |  |  |  |  |  |  |  |  |  |
|  | 1 | **Macchine speciali** |  |  |  |  |  |  |  |  |  |  |  |  |  |  |
| CEP.SPC.I.00010 |  | Montaggio testa di cementazione - Room 9 | 24d | CEP.SCP.M.00010, CEP.SAS.M.10010, CEP.RUL.M.10010, CEP.RUL.I.00040 | 112d | 0d |  |  | CX1700 | 9 | ROL | INST | DEM | P4 |  |  |
| CEP.SPC.I.00020 |  | Montaggio testa di capping - Room 10 | 24d | CEP.SPC.I.00010, CEP.SCP.M.00010, CEP.RUL.I.00050 | 112d | 0d |  |  | CX1700 | 10 | ROL | INST | DEM | P4 |  |  |
| CEP.SPC.I.00030 |  | Montaggio apparecchio di chiusura/fissaggio coperchio - Room 11 - Fase 1 | 24d | CEP.SPC.I.00020, CEP.SCP.M.00010, CEP.RUL.I.00070 | 112d | 0d |  |  | CX1700 | 11 | ROL | INST | ANN | P2 |  | 53A |
| CEP.SPC.I.00040 |  | Montaggio apparecchio di chiusura/fissaggio coperchio - Room 11 - Fase 2 | 24d | CEP.SPC.I.00030, CEP.SCP.M.00010 | 112d | 0d |  |  | CX1700 | 11 | ROL | INST | ANN | P2 |  | 53A |
| CEP.SPC.I.00050 |  | Montaggio smear test e lavaggio manufatti - Room 13 | 12d | CEP.SCP.M.00010, CEP.SPC.I.00040, CEP.SAS.M.10010, CEP.RUL.M.10010, CEP.RUL.I.00090 | 112d | 0d |  |  | CX1700 | 13 | ROL | INST | ANN | P2 |  | 53A |

| ID | WBS | Activity | Type | Duration | Predecessors | Total float | Free float | CEMEX 2025 - Activity code Sogin | CEMEX LOCALE | CEMEX DISCIPLINE | CEMEX ACTIVITY TYPE | CEMEX RESPONSABILITY | CEMEX PARTITE | CEMEX SISTEMI | Note | CEMEX REVISIONE | CEMEX TAG COMPONENTE |
| --- | --- | --- | --- | --- | --- | --- | --- | --- | --- | --- | --- | --- | --- | --- | --- | --- | --- |
|  | 2 | **Carrello 53A-DW014 q.ta 0.00m** |  |  |  |  |  |  |  |  |  |  |  |  |  |  |  |
| CEP.CRA.I.00010 |  | Installazione Carrello 53A-DW014 |  | 2d | CEP.CRA.M.14030 FF, CEP.CRA.I.04120, CED.CRA.I.03015, CED.CRA.I.03025, CED.CRA.I.02120, CED.CRA.I.01120, CEP.SPC.I.00050, CEP.INS.M.00010 | 112d | 0d | CX1700 | 0 | CRA | INST | DEM | P2 | 53A |  |  |  |
|  | 3 | **Montacarichi** |  |  |  |  |  |  |  |  |  |  |  |  |  |  |  |
| CEP.ELV.I.00010 |  | Montaggio in opera 53A-DY001 |  | 30d | CEP.CRA.I.00010 FF, CEP.ELV.S.00040, CEP.CRA.I.00010, CEP.INS.M.00010 SS | 112d | 0d | CX1700 | 0 | MON | SUP | DEM | P2 | 53A | avvicinato al collaudo del sistema di movimentazione | AGG |  |
|  | 4 | **Cella di Cementazione** |  |  |  |  |  |  |  |  |  |  |  |  |  |  |  |
| CEP.ELV.I.10 |  | Montaggio in opera 51AC-DW005 |  | 15d | CEP.ELV.I.00010 | 1561d | 0d | CX1700 | 0 | MON | SUP | DEM | P2 | 51A | avvicinato al collaudo del sistema di movimentazione | AGG |  |
|  | 5 | **Testa di Capping** |  |  |  |  |  |  |  |  |  |  |  |  |  |  |  |
| CEP.ELV.I.20 |  | Montaggio in opera 51AC-DW006 |  | 15d | CEP.ELV.I.10 | 1561d |  | CX1700 | 0 | MON | SUP | DEM | P2 | 51A | avvicinato al collaudo del sistema di movimentazione | AGG |  |
|  | 7 | **Montaggi Sistemi di Monitoraggio, Sistemi speciali, Antincendio** |  |  |  |  |  |  |  |  |  |  |  |  |  |  |  |
|  | 3 | **Comunicazioni (telefonico, interfonico)** |  |  |  |  |  |  |  |  |  |  |  |  |  |  |  |
| CEP.COM.I.00010 |  | Sistema telefonico e interfonico e TD a quota 0 m |  | 20d | CEP.CIV.F.00050, CEP.ELE.I.00140 FS+60d, CEP.ELE.M.40010, CEP.INS.04.00110 | 123d | 0d | CX1710 | 0 | COM | INST | CAR | P10 |  |  |  |  |
| CEP.COM.I.00020 |  | Sistema telefonico e interfonico e TD a quota 6 m |  | 20d | CEP.CIV.F.04050, CEP.ELE.I.06140, CEP.COM.I.00010 SS+10d, CEP.COM.I.00010, CEP.COM.I.00110, CEP.INS.04.00110 | 86d | 0d | CX1570 | 0 | COM | INST | CAR | P10 |  |  |  |  |
| CEP.COM.I.00030 |  | Sistema telefonico e interfonico e TD a quota 12 m |  | 20d | CEP.CIV.F.12050, CEP.ELE.I.12140, CEP.COM.I.00020 SS+10d, CEP.COM.I.00020, CEP.COM.I.00120, CEP.INS.04.00110 | 86d | 0d |  | 0 | COM | INST | CAR | P10 |  |  |  |  |
|  | 4 | **TVCC** |  |  |  |  |  |  |  |  |  |  |  |  |  |  |  |
| CEP.COM.I.00110 |  | Sistema TVCC a quota 0 m |  | 0d | CEP.COM.I.00010, CEP.CIV.F.00050, CEP.ELE.M.40010, CEP.INS.04.00110 | 123d | 37d | CX1710 | 0 | COM | INST | CAR | P10 |  |  |  |  |
| CEP.COM.I.00120 |  | Sistema TVCC a quota 6 m |  | 25d | CEP.COM.I.00020, CEP.CIV.F.04050, CEP.COM.I.00110, CEP.INS.04.00110 | 86d | 0d | CX1570 | 0 | COM | INST | CAR | P10 |  |  |  |  |
| CEP.COM.I.00130 |  | Sistema TVCC a quota 12 m |  | 25d | CEP.COM.I.00030, CEP.CIV.F.12050, CEP.COM.I.00120, CEP.INS.04.00110 | 86d | 0d | CX1610 | 0 | COM | INST | CAR | P10 |  |  |  |  |
|  | 2 | **Rilevazione incendi** |  |  |  |  |  |  |  |  |  |  |  |  |  |  |  |
| CEP.FIR.I.00000 |  | Rilevazione incendi SUMMARY | WBS summary | 140d |  | 153d | 1649d |  | 0 | FIR | INST | CAR | P8 |  |  |  |  |
| CEP.FIR.I.00010 |  | Quadri elettrici Rilevazione Incendi |  | 4d | CEP.CIV.F.04050, CEP.CIV.F.00050, CEP.ELE.I.00140, CEP.RAD.M.20020 | 153d | 0d | CX1620 | 0 | FIR | INST | CAR | P8 |  |  |  |  |
| CEP.FIR.I.00020 |  | Apparecchiature e dispositivi |  | 60d | CEP.FIR.I.00010 | 153d | 0d |  | 0 | FIR | INST | CAR | P8 |  |  |  |  |
| CEP.FIR.I.00030 |  | Supporti per Vie cavi per rilevazione incendi |  | 45d | CEP.HVA.D.12010, CEP.FIR.I.00020 | 153d | 0d |  | 0 | FIR | INST | CAR | P8 |  |  |  | SUPPORTI |
| CEP.FIR.I.00040 |  | Vie cavi per rilevazione incendi |  | 45d | CEP.FIR.I.00030 SS+6d, CEP.FIR.I.00020 SS+10d | 153d | 0d |  | 0 | FIR | INST | CAR | P8 |  |  |  |  |
| CEP.FIR.I.00050 |  | Cavi per rilevazione incendi |  | 25d | CEP.FIR.I.00040, CEP.FIR.I.00030 SS+10d | 153d | 67d |  | 0 | FIR | INST | CAR | P8 |  |  |  |  |

Notes:
- CEP.ELV.I.10: Purpose: " / inserire predecessore CEP.SCP.M.00010 / inserire CEMEX SISTEMI 53A / partita 4 / "

| ID | WBS | Activity | Duration | Predecessors | Total float | Free float | CEMEX 2025 - Activity code Sogin | CEMEX LOCALE | CEMEX DISCIPLINE | CEMEX ACTIVITY TYPE | CEMEX RESPONSABILITY | CEMEX PARTITE | CEMEX SISTEMI | Note | CEMEX TAG COMPONENTE |
| --- | --- | --- | --- | --- | --- | --- | --- | --- | --- | --- | --- | --- | --- | --- | --- |
|  | 1 | **Monitoraggio radiologico** |  |  |  |  |  |  |  |  |  |  |  |  |  |
| CEP.COM.I.00210 |  | Sistema Monitoraggio radiologico a quota 0 m | 20d | CEP.RAD.M.20010, CEP.CIV.F.04050, CEP.ELE.I.00140, CEP.INS.04.00110 | 233d | 97d | CX1710 | 0 | COM | INST | ANN | P9 | 86C |  |  |
| CEP.COM.I.00220 |  | Sistema Monitoraggio radiologico e TD a quota 6 m | 20d | CEP.RAD.M.20010, CEP.COM.I.00210, CEP.ELE.I.06140, CEP.COM.I.00210 FF, CEP.INS.04.00110 | 136d | 0d | CX1570 | 0 | COM | INST | ANN | P9 | 86C |  |  |
| CEP.COM.I.00230 |  | Sistema Monitoraggio radiologico e TD a quota 12 m | 20d | CEP.RAD.M.20010, CEP.COM.I.00220, CEP.ELE.I.12140, CEP.COM.I.00220 FF, CEP.INS.04.00110 | 136d | 50d | CX1610 | 0 | COM | INST | ANN | P9 | 86C |  |  |
|  | 1 | **Sonde** |  |  |  |  |  |  |  |  |  |  |  |  |  |
|  | 2 | **Quadri** |  |  |  |  |  |  |  |  |  |  |  |  |  |
|  | 3 | **Cablaggi** |  |  |  |  |  |  |  |  |  |  |  |  |  |
|  | 5 | **Verifiche e Controlli di fine montaggio sistemi speciali** |  |  |  |  |  |  |  |  |  |  |  |  |  |
| CEP.SS.I.00010 |  | Verifiche e controlli di fine montaggi sistemi speciali | 20d | CEP.FIR.I.00050, CEP.COM.I.00230, CEP.COM.I.00120, CEP.COM.I.00110, CEP.COM.I.00130, CEP.COM.I.00010, CEP.COM.I.00020, CEP.COM.I.00030 | 86d | 105d | CX1610 | 0 | SS |  | ANN | P9 | 0 |  |  |
|  | 9 | **Montaggi sistema elettrico** |  |  |  |  |  |  |  |  |  |  |  |  |  |
|  | 1 | **Montaggi sistema elettrico QUOTA 0.00** |  |  |  |  |  |  |  |  |  |  |  |  |  |
| CEP.ELE.I.00210 |  | Cablaggi impiantistici unità/sistemi quota 0,00 | 95d | CEP.ELE.I.00080 FF+10d, CEP.ELE.F.30060 FS+20d, CEP.ELE.I.00150 FF+5d | 32d | 102d | CX1640 | 0 | ELE | INST | CAR | P7 |  |  |  |
|  | 1 | **Distribuzione Primaria e secondaria** |  |  |  |  |  |  |  |  |  |  |  |  |  |
| CEP.ELE.I.00010 |  | Sistema 71A - QE Sezione Normale | 5d | CEP.CIV.F.00100, CEP.ELE.D.00300, CEP.ELE.M.00010, CEP.HVA.D.00520 SS+50d, CEP.INS.M.00005 SS+90d | 32d | 0d | CX1620 | 0 | ELE | INST | CAR | P7 |  | Da spostare dopo componenti ASME VIII |  |
| CEP.ELE.I.00020 |  | Sistema 72A - QE Sezione Emergenza | 10d | CEP.ELE.I.00010, CEP.ELE.D.00300, CEP.ELE.M.00010 | 32d | 0d | CX1620 | 0 | ELE | INST | CAR | P7 |  |  |  |
| CEP.ELE.I.00030 |  | Sistema 73A - QE ed UPS Sezione Ininterrompibile | 20d | CEP.ELE.I.00020, CEP.ELE.D.00300, CEP.ELE.D.101300, CEP.ELE.M.00010, CEP.ELE.M.00020 | 32d | 0d | CX1620 | 0 | ELE | INST | CAR | P7 |  |  |  |
| CEP.ELE.I.00050 |  | Supporti distribuzione primaria e secondaria passerelle e conduit q.ta 0.00 | 60d | CEP.ELE.I.00020 | 46d | 14d | CX1640 | 0 | ELE | INST | CAR | P7 |  | Aumentato di 30d | SUPPORTI |
| CEP.ELE.I.00060 |  | Passerelle distribuzione primaria e secondaria q.ta 0.00 | 20d | CEP.ELE.I.00030, CEP.ELE.F.30010 FS+20d | 72d | 40d | CX1640 | 0 | ELE | INST | CAR | P7 |  | Aumentato di 10d |  |
| CEP.ELE.I.00070 |  | Conduit distribuzione primaria e secondaria q.ta 0.00 | 60d | CEP.ELE.I.00050 SS+6d, CEP.ELE.I.00030, CEP.ELE.F.30010 FS+20d | 32d | 0d | CX1640 | 0 | ELE | INST | CAR | P7 |  | Aumentato di 30d |  |
| CEP.ELE.I.00080 |  | Cavi - posa e collegamento q.ta 0.00 | 90d | CEP.ELE.I.00060, CEP.ELE.I.00070, CEP.ELE.F.30020 FS+20d, CEP.INS.53.00110 FF | 32d | 0d | CX1640 | 0 | ELE | INST | CAR | P7 |  | Aumentato di 30d |  |
|  | 2 | **Distribuzione Luce e Forza Motrice** |  |  |  |  |  |  |  |  |  |  |  |  |  |
| CEP.ELE.I.00110 |  | Sistema 70A - QE DISTRIBUZIONE | 4d | CEP.ELE.I.00030, CEP.ELE.D.00300, CEP.ELE.M.00010 | 112d | 0d | CX1620 | 0 | ELE | INST | CAR | P7 |  |  |  |
| CEP.ELE.I.00120 |  | Apparecchi luce / FM q.ta 0.00 | 30d | CEP.ELE.I.00110, CEP.ELE.F.30050 FS+20d, CEP.ELE.I.00140 SS+5d | 137d | 105d | CX1640 | 0 | ELE | INST | CAR | P7 |  |  |  |
| CEP.ELE.I.00130 |  | Supporti Conduit luce e prese q.ta 0.00 | 60d | CEP.HVA.D.00510, CEP.ELE.I.00110 | 112d | 0d | CX1640 | 0 | ELE | INST | CAR | P7 |  | Aumentato di 30d | SUPPORTI |
| CEP.ELE.I.00140 |  | Conduit luce e prese q.ta 0.00 | 60d | CEP.ELE.I.00130 SS+6d, CEP.ELE.F.30010 FS+20d, CEP.ELE.F.30030 FS+20d | 112d | 0d | CX1640 | 0 | ELE | INST | CAR | P7 |  | Aumentato di 30d |  |
| CEP.ELE.I.00150 |  | Cavi impianto luce / FM q.ta 0.00 | 90d | CEP.ELE.I.00140, CEP.ELE.I.00080, CEP.ELE.F.30020 FS+20d, CEP.ELE.I.00120 | 32d | 0d | CX1640 | 0 | ELE | INST | CAR | P7 |  | Aumentato di 30d |  |

| ID | WBS | Activity | Duration | Predecessors | Total float | Free float | CEMEX 2025 - Activity code Sogin | CEMEX LOCALE | CEMEX DISCIPLINE | CEMEX ACTIVITY TYPE | CEMEX RESPONSABILITY | CEMEX PARTITE | Note | CEMEX TAG COMPONENTE |
| --- | --- | --- | --- | --- | --- | --- | --- | --- | --- | --- | --- | --- | --- | --- |
|  | 2 | **Montaggi sistema elettrico QUOTA 6.00** |  |  |  |  |  |  |  |  |  |  |  |  |
| CEP.ELE.I.06210 |  | Cablaggi impiantistici unità/sistemi quota 6,00 | 85d | CEP.ELE.I.06080 FF+10d, CEP.ELE.F.30060 FS+20d, CEP.ELE.I.06150 FF+5d | -45d | 25d | CX1660 | 0 | ELE | INST | CAR | P7 |  |  |
|  | 1 | **Distribuzione Primaria e secondaria** |  |  |  |  |  |  |  |  |  |  |  |  |
| CEP.ELE.I.06010 |  | Sistema 71A - QE Sezione Normale | 10d | CEP.CIV.F.04040, CEP.ELE.D.00300, CEP.ELE.M.00010, CEP.HVA.D.06020 SS+20d | -46d | 0d | CX1620 | 0 | ELE | INST | CAR | P7 |  |  |
| CEP.ELE.I.06020 |  | Sistema 72A - QE Sezione Emergenza | 2d | CEP.ELE.I.06010, CEP.ELE.D.00300, CEP.ELE.M.00010 | -46d | 0d | CX1620 | 0 | ELE | INST | CAR | P7 |  |  |
| CEP.ELE.I.06030 |  | Sistema 73A - QE ed UPS Sezione Ininterrompibile | 10d | CEP.ELE.I.06020, CEP.ELE.D.00300, CEP.ELE.D.101300, CEP.ELE.M.00010, CEP.ELE.M.00020 | -46d | 0d | CX1620 | 0 | ELE | INST | CAR | P7 |  |  |
| CEP.ELE.I.06050 |  | Supporti distribuzione primaria e secondaria passerelle e conduit q.ta 6.00 | 60d | CEP.ELE.I.06020, CEP.HVA.D.06010 | -70d | 0d | CX1660 | 0 | ELE | INST | CAR | P7 | Aumentato di 35d | SUPPORTI |
| CEP.ELE.I.06070 |  | Passerelle e Conduit distribuzione primaria e secondaria q.ta 6.00 | 60d | CEP.ELE.I.06050 SS+6d, CEP.ELE.I.06030, CEP.ELE.F.30010 FS+20d | -70d | 0d | CX1660 | 0 | ELE | INST | CAR | P7 | Aumentato di 35d |  |
| CEP.ELE.I.06080 |  | Cavi - posa e collegamento q.ta 6.00 | 120d | CEP.ELE.I.06070, CEP.ELE.F.30020 FS+20d | -70d | 0d | CX1660 | 0 | ELE | INST | CAR | P7 | Aumentato di 65d |  |
|  | 2 | **Distribuzione Luce e Forza Motrice** |  |  |  |  |  |  |  |  |  |  |  |  |
| CEP.ELE.I.06110 |  | Sistema 70A - QE DISTRIBUZIONE | 3d | CEP.ELE.I.06030, CEP.ELE.D.00300, CEP.ELE.M.00010 | 34d | 0d | CX1620 | 0 | ELE | INST | CAR | P7 |  |  |
| CEP.ELE.I.06120 |  | Apparecchi luce / FM q.ta 6.00 | 30d | CEP.ELE.I.06110, CEP.ELE.F.30050 FS+20d, CEP.ELE.I.06140 SS+5d | 15d | 85d | CX1660 | 0 | ELE | INST | CAR | P7 |  |  |
| CEP.ELE.I.06130 |  | Supporti Conduit luce e prese q.ta 6.00 | 60d | CEP.HVA.D.06010, CEP.ELE.I.06110 | 50d | 60d | CX1660 | 0 | ELE | INST | CAR | P7 | Aumentato di 30d | SUPPORTI |
| CEP.ELE.I.06140 |  | Conduit luce e prese q.ta 6.00 | 60d | CEP.ELE.I.06130 SS+6d, CEP.ELE.I.06070, CEP.ELE.F.30010 FS+20d, CEP.ELE.F.30030 FS+20d | -10d | 0d | CX1660 | 0 | ELE | INST | CAR | P7 | Aumentato di 30d |  |
| CEP.ELE.I.06150 |  | Cavi impianto luce / FM q.ta 6.00 | 100d | CEP.ELE.I.06140, CEP.ELE.I.06080, CEP.ELE.F.30020 FS+20d, CEP.ELE.I.06120 | -70d | 0d | CX1660 | 0 | ELE | INST | CAR | P7 | Aumentato di 40d |  |
|  | 4 | **Montaggi sistema elettrico QUOTA 12.00** |  |  |  |  |  |  |  |  |  |  |  |  |
| CEP.ELE.I.12210 |  | Cablaggi impiantistici unità/sistemi quota 12.00 | 50d | CEP.ELE.I.12080 FF+10d, CEP.ELE.F.30060 FS+20d, CEP.ELE.I.12150 FF+5d | -15d | 55d | CX1670 | 0 | ELE | INST | CAR | P7 | Diminuito di 10d |  |
|  | 1 | **Distribuzione Primaria e secondaria** |  |  |  |  |  |  |  |  |  |  |  |  |
| CEP.ELE.I.12010 |  | Sistema 71A - QE Sezione Normale | 15d | CEP.CIV.F.12050, CEP.ELE.I.06030, CEP.ELE.D.00300, CEP.ELE.M.00010 | 44d | 0d | CX1620 | 0 | ELE | INST | CAR | P7 |  |  |
| CEP.ELE.I.12020 |  | Sistema 72A - QE Sezione Emergenza | 5d | CEP.ELE.I.12010, CEP.ELE.D.00300, CEP.ELE.M.00010 | 44d | 0d | CX1620 | 0 | ELE | INST | CAR | P7 |  |  |
| CEP.ELE.I.12030 |  | Sistema 73A - QE ed UPS Sezione Ininterrompibile | 10d | CEP.ELE.I.12020, CEP.ELE.D.00300, CEP.ELE.D.101300, CEP.ELE.M.00010, CEP.ELE.M.00020 | 44d | 0d | CX1620 | 0 | ELE | INST | CAR | P7 |  |  |
| CEP.ELE.I.12050 |  | Supporti distribuzione primaria e secondaria conduit q.ta 12.00 | 45d | CEP.ELE.I.12020, CEP.HVA.D.12010 | -15d | 0d | CX1670 | 0 | ELE | INST | CAR | P7 | aumentato di 25d | SUPPORTI |
| CEP.ELE.I.12070 |  | Conduit distribuzione primaria e secondaria q.ta 12.00 | 45d | CEP.ELE.I.12050 SS+6d, CEP.ELE.I.12030, CEP.ELE.F.30010 FS+20d | -15d | 0d | CX1670 | 0 | ELE | INST | CAR | P7 | aumentato di 25d |  |
| CEP.ELE.I.12080 |  | Cavi - posa e collegamento q.ta 12.00 | 70d | CEP.ELE.I.12070, CEP.ELE.F.30020 FS+20d | -15d | 0d | CX1670 | 0 | ELE | INST | CAR | P7 | aumentato di 30d |  |

| ID | WBS | Activity | Duration | Predecessors | Total float | Free float | CEMEX 2025 - Activity code Sogin | CEMEX LOCALE | CEMEX DISCIPLINE | CEMEX ACTIVITY TYPE | CEMEX RESPONSABILITY | CEMEX PARTITE | Note | CEMEX TAG COMPONENTE | CEMEX SISTEMI | CEMEX REVISIONE |
| --- | --- | --- | --- | --- | --- | --- | --- | --- | --- | --- | --- | --- | --- | --- | --- | --- |
|  | 2 | **Distribuzione Luce e Forza Motrice** |  |  |  |  |  |  |  |  |  |  |  |  |  |  |
| CEP.ELE.I.12110 |  | Sistema 70A - QE DISTRIBUZIONE | 4d | CEP.ELE.I.12030, CEP.ELE.D.00300, CEP.ELE.M.00010 | 104d | 0d | CX1620 | 0 | ELE | INST | CAR | P7 |  |  |  |  |
| CEP.ELE.I.12120 |  | Apparecchi luce / FM q.ta 12.00 | 45d | CEP.ELE.I.12110, CEP.ELE.F.30050 FS+20d, CEP.ELE.I.12140 SS | 35d | 50d | CX1670 | 0 | ELE | INST | CAR | P7 | aumentato di 25d |  |  |  |
| CEP.ELE.I.12130 |  | Supporti Conduit luce e prese q.ta 12.00 | 20d | CEP.HVA.D.12010, CEP.ELE.I.12110 | 55d | 20d | CX1670 | 0 | ELE | INST | CAR | P7 |  | SUPPORTI |  |  |
| CEP.ELE.I.12140 |  | Conduit luce e prese q.ta 12.00 | 45d | CEP.ELE.I.12130 SS+6d, CEP.ELE.I.12070 SS+20d, CEP.ELE.F.30010 FS+20d, CEP.ELE.F.30030 FS+20d | 35d | 0d | CX1670 | 0 | ELE | INST | CAR | P7 | aumentato di 25d |  |  |  |
| CEP.ELE.I.12150 |  | Cavi impianto luce / FM q.ta 12.00 | 70d | CEP.ELE.I.12140, CEP.ELE.I.12080, CEP.ELE.F.30020 FS+20d, CEP.ELE.I.12120 | -15d | 0d | CX1670 | 0 | ELE | INST | CAR | P7 | aumentato di 30d |  |  |  |
|  | 3 | **Scariche Atmosferiche** |  |  |  |  |  |  |  |  |  |  |  |  |  |  |
| CEP.ELE.I.12160 |  | Scariche atmosferiche edificio processo | 20d | CEP.ELE.I.12150 SS | 10d | 80d | CX1670 | 0 | ELE |  | COS | P7 |  |  |  |  |
|  | 15 | **Prove di fine montaggio - Sistema elettrico** |  |  |  |  |  |  |  |  |  |  |  |  |  |  |
| CEP.ELE.T.12010 |  | Prove in bianco (cavi ed apparecchiature) | 40d | CEP.ELE.I.12130, CEP.ELE.I.00210, CEP.ELE.I.06210 FF+10d, CEP.ELE.I.12210 FF+10d, CEP.ELE.I.00150, CEP.ELE.I.06150, CEP.ELE.I.12150 FF+10d, CEP.ELE.I.12160 | -70d | 0d | CX1670 | 0 | ELE | INST | CAR | P7 | aumentato di 10d |  |  |  |
| CEP.ELE.T.12020 |  | Taratura e prova elementi di protezione | 15d | CEP.ELE.T.12010 | -70d | 0d | CX1670 | 0 | ELE | INST | CAR | P7 | aumentato di 5d |  |  |  |
|  | 8 | **Automazione e controllo + allestimento sala controllo** |  |  |  |  |  |  |  |  |  |  |  |  |  |  |
|  | 1 | **Quadri quota 0.00m** |  |  |  |  |  |  |  |  |  |  |  |  |  |  |
| CED.I&C.Q.8030 |  | Quadri automazione e controllo HVAC I/O 83A-SK003C | 5d | CED.I&C.Q.8080 | 568d | 0d | CX1840 | 87 | I&C |  | DEM | P6 |  |  | 83A | MOD |
| CED.I&C.Q.8040 |  | Quadri automazione e controllo HVAC I/O 83A-SK002B | 5d | CED.I&C.Q.8030 | 568d | 0d | CX1840 | 87 | I&C |  | DEM | P6 |  |  | 83A | MOD |
| CED.I&C.Q.8050 |  | Quadri automazione e controllo HVAC CPU 83A-SK001A | 5d | CED.I&C.Q.8040 FF | 568d | 484d | CX1840 | 87 | I&C |  | DEM | P6 |  |  | 83A | MOD |
|  | 5 | **INSTALLAZIONI A QUOTA 0.00** |  |  |  |  |  |  |  |  |  |  |  |  |  |  |
|  | 2 | **Sistema di Automazione centrale** |  |  |  |  |  |  |  |  |  |  |  |  |  |  |
| CEP.I&C.A.00020 |  | Supporti vie cavi strumentali per la distribuzione q.ta 0.00 | 70d | CEP.HVA.D.00510, CEP.I&C.Q.000080 | 93d | 0d | CX1620 | 0 | I&C | INST | CAR | P6 |  | SUPPORTI |  |  |
| CEP.I&C.A.00030 |  | Montaggio vie cavi strumentali per la distribuzione q.ta 0.00 | 100d | CEP.I&C.A.00020 SS+6d, CEP.I&C.F.00030, CEP.CIV.F.00100, CEP.I&C.Q.000080, CEP.I&C.Q.00050 FF+20d, CEP.I&C.Q.00070 FF+20d, CEP.I&C.Q.00060 FF+20d | 93d | 9d | CX1620 | 0 | I&C | INST | CAR | P6 | aumentato di 30d |  |  |  |
| CEP.I&C.A.00050 |  | Montaggio strumentazione di processo q.ta 0.00 | 50d | CEP.I&C.Q.000080, CEP.ELE.M.40030, CEP.ELE.M.40020, CEP.ELE.M.20010, CEP.INS.03.00020, CEP.INS.04.00110, CED.I&C.Q.8050 | 84d | 0d | CX1620 | 0 | I&C | INST | CAR | P6 |  |  |  |  |
| CEP.I&C.A.00060 |  | Posa Cavi strumentali e collegamento apparati q.ta 0.00 | 120d | CEP.I&C.A.00050, CEP.I&C.A.00030 | 84d | 23d | CX1620 | 0 | I&C | INST | CAR | P6 | aumentato di 30d |  |  |  |
|  | 3 | **Armadi** |  |  |  |  |  |  |  |  |  |  |  |  |  |  |
| CEP.I&C.Q.000080 |  | Pannelli comando Rulliere | 3d | CEP.CIV.F.00100, CEP.I&C.M.10010, CEP.ELE.I.00020 | 93d | 0d | CX1620 | 0 | I&C | INST | ANN | P2 |  |  | 53A |  |
| CEP.I&C.Q.00010 |  | Quadro di controllo interfacciamento sistemi terzi 84A-SD003X | 1d | CEP.I&C.M.10010, CEP.ELE.I.00020, CEP.CIV.F.00100, CEP.I&C.Q.00020 | 318d | 0d | CX1620 | 17 | I&C | INST | CAR | P6 |  |  |  |  |
| CEP.I&C.Q.00020 |  | Quadro di controllo EWS e server archivio dati 84A-SD002X | 1d | CEP.I&C.M.10010, CEP.ELE.I.00020, CEP.CIV.F.00100 | 318d | 0d | CX1620 | 17 | I&C | INST | CAR | P6 |  |  |  |  |
| CEP.I&C.Q.00030 |  | Quadro di controllo server 1 84A-SD001A | 1d | CEP.I&C.M.10010, CEP.ELE.I.00020, CEP.CIV.F.00100, CEP.I&C.Q.00010 | 318d | 0d | CX1620 | 17 | I&C | INST | CAR | P6 |  |  |  |  |
| CEP.I&C.Q.00040 |  | Quadro di controllo server 2 84A-SD001B | 1d | CEP.I&C.M.10010, CEP.ELE.I.00020, CEP.CIV.F.00100, CEP.I&C.Q.00030 | 318d | 317d | CX1620 | 17 | I&C | INST | CAR | P6 |  |  |  |  |
| CEP.I&C.Q.00050 |  | Quadro attestazione linee carroponte 53A-DW002 | 1d | CEP.I&C.M.10010, CEP.ELE.I.00020, CEP.CIV.F.00100, CEP.CRA.I.02120 | 181d | 88d | CX1620 | 0 | I&C | INST | ANN | P2 |  |  | 53A |  |
| CEP.I&C.Q.00060 |  | Quadro attestazione linee carroponte 53A-DW004 | 1d | CEP.I&C.M.10010, CEP.ELE.I.00020, CEP.CIV.F.00100, CEP.CRA.I.04120 | 181d | 57d | CX1620 | 0 | I&C | INST | ANN | P2 |  |  | 53A |  |
| CEP.I&C.Q.00070 |  | Quadro attestazione linee carroponte 53A-DW003 | 1d | CEP.I&C.M.10010, CEP.ELE.I.00020, CEP.CIV.F.00100, CEP.CRA.I.03120 | 181d | 88d | CX1620 | 0 | I&C | INST | ANN | P2 |  |  | 53A |  |

| ID | WBS | Activity | Type | Duration | Predecessors | Total float | Free float | CEMEX TAG COMPONENTE | CEMEX 2025 - Activity code Sogin | CEMEX LOCALE | CEMEX DISCIPLINE | CEMEX ACTIVITY TYPE | CEMEX RESPONSABILITY | CEMEX PARTITE | Note |
| --- | --- | --- | --- | --- | --- | --- | --- | --- | --- | --- | --- | --- | --- | --- | --- |
|  | 2 | **INSTALLAZIONI A QUOTA 6.00** |  |  |  |  |  |  |  |  |  |  |  |  |  |
|  | 2 | **Sistema di Automazione centrale** |  |  |  |  |  |  |  |  |  |  |  |  |  |
| CEP.I&C.A.06010 |  | Supporti vie cavi strumentali per la distribuzione q.ta 6.00 |  | 70d | CEP.HVA.D.06010, CEP.LAB.M.00010 | 21d | 0d | SUPPORTI | CX1620 | 0 | I&C | INST | CAR | P6 |  |
| CEP.I&C.A.06020 |  | Montaggio vie cavi strumentali per la distribuzione q.ta 6.00 |  | 100d | CEP.I&C.A.06010 SS+6d, CEP.I&C.F.00030, CEP.CIV.F.04040, CEP.INS.31.00050 FF+30d, CEP.INS.25.00030, CEP.I&C.Q.06020 | 21d | 20d |  | CX1620 | 0 | I&C | INST | CAR | P6 | aumentato di 30d |
| CEP.I&C.A.06030 |  | Montaggio strumentazione di processo q.ta 6.00 |  | 34d | CEP.I&C.A.06020 SS, CEP.INS.77.00050, CEP.INS.24.00030 FF+10d, CEP.ELE.M.40020, CEP.ELE.M.20010, CEP.ELE.M.40030, CEP.LAB.M.00010 | 1d | 0d |  | CX1620 | 0 | I&C | INST | CAR | P6 | "Aumentato di 1d;" |
| CEP.I&C.A.06040 |  | Posa Cavi strumentali e collegamento apparati q.ta 6.00 |  | 120d | CEP.I&C.A.06010 FF, CEP.I&C.A.06030, CEP.I&C.A.00060 FF | 61d | 60d |  | CX1620 | 0 | I&C | INST | CAR | P6 | aumentato di 30d |
|  | 3 | **Armadi** |  |  |  |  |  |  |  |  |  |  |  |  |  |
| CEP.I&C.Q.06010 |  | Quadri automazione e controllo SAS |  | 4d | CEP.I&C.M.10010, CEP.ELE.I.06110, CEP.CIV.M.00000, CEP.I&C.Q.000080 | 34d | 0d |  | CX1620 | 43 | I&C | INST | CAR | P6 |  |
| CEP.I&C.Q.06020 |  | Quadri automazione e controllo HVAC |  | 4d | CEP.I&C.Q.06010 | 34d | 13d |  | CX1620 | 43 | I&C | INST | CAR | P6 |  |
|  | 3 | **INSTALLAZIONI A QUOTA 12.00** |  |  |  |  |  |  |  |  |  |  |  |  |  |
|  | 2 | **Sistema di Automazione centrale** |  |  |  |  |  |  |  |  |  |  |  |  |  |
| CEP.I&C.A.12010 |  | Supporti vie cavi strumentali per la distribuzione q.ta 12.00 |  | 56d | CEP.HVA.D.12010 | 104d | 0d | SUPPORTI | CX1620 | 0 | I&C | INST | CAR | P6 | "Aumentato di 34d;" |
| CEP.I&C.A.12020 |  | Montaggio vie cavi strumentali per la distribuzione q.ta 12.00 |  | 56d | CEP.I&C.A.12010 SS+6d, CEP.I&C.F.00030, CEP.CIV.F.12040, CEP.I&C.Q.12020 | 104d | 103d |  | CX1620 | 0 | I&C | INST | CAR | P6 | "Aumentato di 34d;" |
| CEP.I&C.A.12030 |  | Montaggio strumentazione di processo q.ta 12.00 |  | 80d | CEP.INS.46.00180, CEP.INS.45.00110, CEP.INS.50.00280 FF+6d, CEP.INS.55.00060 FF+6d, CEP.I&C.A.06030 | 1d | 0d |  | CX1620 | 0 | I&C | INST | CAR | P6 |  |
| CEP.I&C.A.12040 |  | Posa Cavi strumentali e collegamento apparati q.ta 12.00 |  | 100d | CEP.I&C.A.12010 FF, CEP.I&C.A.12030, CEP.I&C.A.12020 FF+10d, CEP.I&C.A.06040 FF | 1d | 0d |  | CX1620 | 0 | I&C | INST | CAR | P6 | "Aumentato di 20d;" |
|  | 3 | **Armadi** |  |  |  |  |  |  |  |  |  |  |  |  |  |
| CEP.I&C.Q.12010 |  | Quadri automazione e controllo rulliere |  | 5d | CEP.I&C.M.10010, CEP.ELE.I.12110, CEP.CIV.F.00100, CEP.I&C.Q.06020 | 149d | 0d |  | CX1620 | 52 | I&C | INST | CAR | P6 |  |
| CEP.I&C.Q.12020 |  | Quadri automazione e controllo PAS |  | 5d | CEP.I&C.Q.12010 | 149d | 45d |  | CX1620 | 52 | I&C | INST | CAR | P6 |  |
|  | 4 | **Test e controlli esecutivi** |  |  |  |  |  |  |  |  |  |  |  |  |  |
| CEP.I&C.T.12020 |  | Test e controlli in bianco strumentazione e controllo |  | 40d | CEP.I&C.A.12040, CEP.I&C.A.06040, CEP.I&C.A.00060, CEP.I&C.Q.00050, CEP.I&C.Q.00060, CEP.I&C.Q.00070, CEP.I&C.Q.00040, CEP.I&C.Q.06020, CEP.I&C.Q.12020 | 1d | 0d |  | CX1620 | 0 | I&C |  | CAR | P6 | "Aumentato di 20d;" |
| CEP.I&C.T.12030 |  | Certificato di accettazione strumentazione e controllo | milestone | 0d | CEP.I&C.T.12020 | 1d | 61d |  | CX1620 | 0 | I&C |  | CAR | P6 |  |
|  | 11 | **Installazione delle opere di mitigazione e finiture esterne (Processo)** |  |  |  |  |  |  |  |  |  |  |  |  |  |
| CEP.CIV.M.00010 |  | Approvvigionamento e preparazione materiale in officina |  | 60d | CEP.CIV.F.00015 SS | 866d | 507d |  | CX3180 | 0 | CIV |  | COS | P1 |  |
| CEP.CIV.M.00020 |  | Realizzazione coibetnazione e finitura pareti esterne |  | 30d | CEP.CIV.M.00010, CED.CIV.M.00120 | 359d | 0d |  | CX3180 | 0 | CIV |  | COS | P1 |  |
| CEP.CIV.M.00030 |  | Posizionamento e fissaggio baraccature di sostegno |  | 42d | CEP.CIV.M.00020 | 359d | 0d |  | CX3180 | 0 | CIV |  | COS | P1 |  |
| CEP.CIV.M.00040 |  | Montaggio pannelli modulari in lamiera stirata |  | 36d | CEP.CIV.M.00030 | 359d | 429d |  | CX3180 | 0 | CIV |  | COS | P1 |  |

| ID | WBS | Activity | Duration | Predecessors | Total float | Free float | CEMEX 2025 - Activity code Sogin | CEMEX LOCALE | CEMEX DISCIPLINE | CEMEX RESPONSABILITY | CEMEX PARTITE | Note |
| --- | --- | --- | --- | --- | --- | --- | --- | --- | --- | --- | --- | --- |
|  | 4 | **Chiusura dei varchi di costruibilità dell'edificio (Processo)** |  |  |  |  |  |  |  |  |  |  |
|  | 1 | **Chiusura dei varchi di costruibilità q.ta 0.00** |  |  |  |  |  |  |  |  |  |  |
| CEP.CHI.02.00010 |  | Chiusura del varco di costruibilità L02-01 | 10d | CEP.INS.M.35 SS, CEP.INS.02.00070, CEP.INS.02.00020, CEP.INS.02.00015 | 93d | 0d | CX1480 | 2 | CIV | COS | P1 |  |
| CEP.CHI.02.00020 |  | Chiusura parziale del varco di commissioning L02-02 | 10d | CEP.INS.M.35 SS, CEP.CHI.02.00010, CEP.INS.02.00030, CEP.INS.02.00040, CEP.INS.02.00050 | 93d | 0d | CX1480 | 2 | CIV | COS | P1 |  |
| CEP.CHI.02.00030 |  | Chiusura del varco di costruibilità L02-03 | 10d | CEP.INS.M.35 SS, CEP.INS.02.00070, CEP.INS.02.00060, CEP.CHI.02.00020 | 93d | 0d | CX1480 | 2 | CIV | COS | P1 |  |
| CEP.CHI.04.00010 |  | Chiusura del varco di costruibilità L04-01 | 10d | CEP.INS.M.35 SS, CEP.INS.04.00100 | 1437d | 183d | CX1480 | 4 | CIV | COS | P1 |  |
| CEP.CHI.05.00010 |  | Chiusura del varco di costruibilità L05-02 | 10d | CEP.INS.M.35 SS, CEP.INS.05.00050 | 1437d | 183d | CX1480 | 5 | CIV | COS | P1 |  |
| CEP.CHI.09.00010 |  | Chiusura del varco di costruibilità L09-01 | 10d | CEP.INS.M.35 SS, CEP.INS.02.00070, CEP.CHI.02.00010, CEP.CHI.02.00030, CEP.RUL.I.00040, CEP.RUL.I.00050 | 93d | 35d | CX1480 | 9 | CIV | COS | P1 |  |
| CEP.CHI.09.00020 |  | Chiusura del varco di costruibilità L09-02 | 10d | CEP.INS.M.35 SS, CEP.CHI.09.00010, CEP.INS.02.00070, CEP.CHI.02.00010, CEP.CHI.02.00030, CEP.INS.02.00020, CEP.INS.02.00015, CEM.MLS.P.00130 | 1254d |  | CX1480 | 9 | CIV | COS | P1 | Verifica succ |
| CEP.CHI.10.00010 |  | Chiusura del varco di costruibilità L10-02 | 10d | CEP.INS.M.35 SS, CEP.INS.02.00070, CEP.CHI.09.00010, CEP.INS.02.00030, CEP.INS.02.00040, CEP.INS.02.00050, CEM.MLS.P.00130 | -60d | 0d | CX1480 | 10 | CIV | COS | P1 |  |
| CEP.CHI.10.00020 |  | Chiusura del varco di costruibilità L10-01 | 10d | CEP.INS.M.35 SS, CEP.INS.02.00070, CEP.CHI.10.00010, CEP.SPC.I.00010, CEP.RUL.I.00040, CEP.RUL.I.00070, CEP.RUL.I.00070 FF, CEM.MLS.P.00130 | -60d | 10d | CX1480 | 10 | CIV | COS | P1 | Verifica succ |
| CEP.CHI.11.00010 |  | Chiusura del varco di costruibilità L11-01 | 10d | CEP.INS.M.35 SS, CEP.CHI.04.00010, CEP.CHI.05.00010, CEP.RUL.I.00060, CEP.SPC.I.00030, CEP.RUL.I.00050, CEM.MLS.P.00130 | 1254d |  | CX1480 | 11 | CIV | COS | P1 | Verifica succ |
| CEP.CHI.11.00020 |  | Chiusura del varco di costruibilità L11-02 | 10d | CEP.INS.M.35 SS, CEP.RUL.I.00060, CEP.SPC.I.00030, CEP.RUL.I.00070, CEP.SPC.I.00040, CEM.MLS.P.00130 | 1254d |  | CX1480 | 11 | CIV | COS | P1 | Verifica succ |
| CEP.CHI.14.00010 |  | Chiusura del varco di costruibilità L14-01 | 10d | CEP.INS.M.35 SS, CEP.RUL.I.00070, CEP.SPC.I.00040, CEM.MLS.P.00130 | 1254d |  | CX1480 | 14 | CIV | COS | P1 | Verifica succ |
| CEP.CHI.14.00020 |  | Chiusura del varco di costruibilità L14-02 | 10d | CEP.INS.M.35 SS, CEP.SPC.I.00050, CEP.CRA.I.00010 | 123d | 63d | CX1480 | 14 | CIV | COS | P1 |  |
| CEP.CHI.21.00010 |  | Chiusura del varco di costruibilità L21-01 e L21-02 | 15d | CEP.INS.M.35 SS, CEP.INS.21.00050 | 113d | 0d | CX1480 | 21 | CIV | COS | P1 |  |
|  | 2 | **Chiusura dei varchi di costruibilità q.ta 6.00** |  |  |  |  |  |  |  |  |  |  |
| CEP.CHI.24.00010 |  | Chiusura del varco di costruibilità L24-01 e L24-02 | 15d | CEP.CHI.21.00010, CEP.INS.M.35 SS, CEP.INS.24.00020 | 113d | 45d | CX1480 | 24 | CIV | COS | P1 |  |
| CEP.CHI.28.00010 |  | Chiusura del varco di costruibilità L28-01 | 10d | CEP.INS.M.35 SS, CEP.INS.28.00060 | 133d | 183d | CX1480 | 28 | CIV | COS | P1 |  |
| CEP.CHI.28.00020 |  | Chiusura del varco di costruibilità L28-02 | 10d | CEP.INS.M.35 SS, CEP.CHI.24.00010, CEP.CHI.28.00010, CEM.MLS.P.00130 | -50d | 20d | CX1480 | 28 | CIV | COS | P1 | Verifica succ |
| CEP.CHI.30.00010 |  | Chiusura del varco di costruibilità L30-01 | 10d | CEP.INS.M.35 SS, CEP.INS.28.00060, CEP.INS.31.00040, CEP.INS.31.00045 | 118d | 0d | CX1480 | 30 | CIV | COS | P1 |  |
| CEP.CHI.31.00010 |  | Chiusura del varco di costruibilità L31-01 | 10d | CEP.INS.M.35 SS, CEP.INS.31.00040, CEP.INS.31.00045 | 133d | 183d | CX1480 | 31 | CIV | COS | P1 |  |
| CEP.CHI.31.00020 |  | Chiusura del varco di costruibilità L31-02 | 10d | CEP.INS.M.35 SS, CEP.INS.31.00040, CEP.INS.31.00045, CEP.CHI.31.00010, CEM.MLS.P.00130 | -50d | 20d | CX1480 | 31 | CIV | COS | P1 | Verifica succ |
| CEP.CHI.33.00010 |  | Chiusura del varco di costruibilità L33-01 | 10d | CEP.INS.M.35 SS, CEP.CHI.30.00010 | 118d | 173d | CX1480 | 33 | CIV | COS | P1 |  |
| CEP.CHI.80.00010 |  | Chiusura del varco di costruibilità L80-01 e L80E | 15d | CEP.INS.M.35 SS, CEP.CHI.33.00010, CEM.MLS.P.00130 | -55d | 15d | CX1480 | 80 | CIV | COS | P1 | Verifica succ |

| ID | WBS | Activity | Type | Duration | Predecessors | Total float | Free float | CEMEX 2025 - Activity code Sogin | CEMEX LOCALE | CEMEX DISCIPLINE | CEMEX RESPONSABILITY | CEMEX PARTITE | Note |
| --- | --- | --- | --- | --- | --- | --- | --- | --- | --- | --- | --- | --- | --- |
|  | 3 | **Chiusura dei varchi di costruibilità q.ta 12.00** |  |  |  |  |  |  |  |  |  |  |  |
| CEP.CHI.109.00010 |  | Chiusura del varco di costruibilità L108-01 |  | 40d | CEP.INS.M.35 SS, CEP.INS.03.00010, CEP.CHI.95.00010 SS+15d | 53d | 0d | CX1480 | 109 | CIV | COS | P1 |  |
| CEP.CHI.37.00010 |  | Chiusura del varco di costruibilità L37-01 |  | 10d | CEP.INS.M.35 SS, CEP.CRA.I.12090, CEP.HVA.C.12010, CEP.HVA.C.12040, CEP.HVA.C.12020, CEP.HVA.C.12030, CEM.MLS.P.00130 | -50d | 20d | CX1480 | 37 | CIV | COS | P1 | Verifica succ |
| CEP.CHI.40.00010 |  | Chiusura del varco di costruibilità L40-01 |  | 10d | CEP.INS.M.35 SS, CEP.INS.55.00050, CEM.MLS.P.00130 | -50d | 20d | CX1480 | 40 | CIV | COS | P1 | Verifica succ |
| CEP.CHI.40.00020 |  | Chiusura del varco di costruibilità L40-02 |  | 10d | CEP.INS.M.35 SS, CEP.INS.45.00100, CEM.MLS.P.00130 | -50d | 20d | CX1480 | 40 | CIV | COS | P1 | Verifica succ |
| CEP.CHI.44.00010 |  | Chiusura dei varchi di costruibilità L44B-01 e L44A-01 |  | 40d | CEP.INS.M.35 SS, CEP.CRA.I.12090 | 102d | 0d | CX1480 | 44 | CIV | COS | P1 |  |
| CEP.CHI.46.00010 |  | Chiusura del varco di costruibilità L46-01 |  | 10d | CEP.CHI.44.00010, CEP.INS.M.35 SS, CEP.HVA.C.12120 | 102d | 0d | CX1480 | 46 | CIV | COS | P1 |  |
| CEP.CHI.47.00010 |  | Chiusura del varco di costruibilità L47-01 |  | 10d | CEP.INS.M.35 SS, CEP.INS.50.00270, CEP.HVA.C.12120, CEP.CHI.46.00010, CEP.CHI.50.00010 | 102d | 15d | CX1480 | 47 | CIV | COS | P1 | Verifica succ |
| CEP.CHI.50.00010 |  | Chiusura del varco di costruibilità L50-01 |  | 10d | CEP.INS.M.35 SS, CEP.INS.50.00270 | 142d | 40d | CX1480 | 50 | CIV | COS | P1 |  |
| CEP.CHI.95.00010 |  | Chiusura del varco di costruibilità L95-01 e L57-01 |  | 40d | CEP.INS.M.35 SS, CEP.INS.03.00010 | 53d | 0d | CX1480 | 95 | CIV | COS | P1 | Minimo 25 giorni - L57-01 da considerare in più? |
|  | 4 | **Chiusura dei varchi di costruibilità q.ta 17.85** |  |  |  |  |  |  |  |  |  |  |  |
| CEP.CHI.LC.00010 |  | Chiusura del varco di costruibilità LC-02 |  | 10d | CEP.CHI.109.00010, CEP.INS.M.35 SS, CEP.INS.107.00020 | 53d | 0d | CX1480 | 0 | CIV | COS | P1 | Verifica succ - predalles |
| CEP.CHI.LC.00020 |  | Chiusura del varco di costruibilità LC-03 |  | 10d | CEP.INS.M.35 SS, CEP.INS.107.00020, CEP.CHI.LC.00010 | 53d | 0d | CX1480 | 0 | CIV | COS | P1 | Verifica succ - predalles |
| CEP.CHI.LC.00030 |  | Chiusura del varco di costruibilità LC-04 |  | 25d | CEP.INS.M.35 SS, CEP.INS.107.00020, CEP.CHI.LC.00020, CEM.MLS.P.00130 | -65d | 5d | CX1480 | 0 | CIV | COS | P1 | Verifica succ - predalles |
| CEP.CHI.LC.00040 |  | Chiusura del varco di costruibilità per montacarichi |  | 30d | CEP.INS.M.35 SS, CEP.ELV.I.00010 | 1427d |  | CX1480 | 0 | CIV | COS | P1 | Verifica succ - predalles |
|  | 9 | **Chiusura dei varchi di commissioning processo** |  |  |  |  |  |  |  |  |  |  |  |
| CEP.CHI.02.00040 |  | Chiusura totale del varco di commissioning q.ta 0.00m L02-02 |  | 10d | CEP.INS.M.35 SS, CEP.CHI.02.00020, CEM.MLS.P.00130 | -50d | 20d | CX1480 | 2 | CIV | COS | P1 | Verifica succ |
| CEP.CHI.23.00010 |  | Chiusura del varco di commissioning q.ta 6.00m L23-02 |  | 10d | CEP.INS.M.35 SS, CEP.INS.53.00030, CEP.INS.56.00010, CEP.INS.53.00080, CEP.INS.25.00010, CEP.INS.26.00060, CEP.INS.77.00030, CEM.MLS.P.00130 | -50d | 20d | CX1480 | 23 | CIV | COS | P1 | Verifica succ |
|  | 10 | **Prove e collaudi** |  |  |  |  |  |  |  |  |  |  |  |
| CEP.GEN.T.40140 |  | Termine chiusura varchi ed. Processo - prima fase | milestone | 0d | CEP.CHI.LC.00020 FF, CEP.CHI.47.00010 FF, CEP.CHI.24.00010 FF, CEP.CHI.09.00010 FF | 87d | 157d | CX1480 | 0 | ELE | COS | P1 |  |
|  | 13 | **Prove e collaudi - Sistema elettrico** |  |  |  |  |  |  |  |  |  |  |  |
| CEP.ELE.T.12030 |  | Energizzazione sistema distribuzione principale Processo |  | 5d | CEP.ELE.T.12020, CEM.MLS.P.00050 | -70d | 0d | CX1260, CX1620, CX1640 | 0 | ELE | CAR | P7 |  |
| CEP.ELE.T.12040 |  | Energizzazione sistema distribuzione emerg e UPS Processo |  | 5d | CEP.ELE.T.12030, CEM.MLS.P.00050 | -70d | 0d | CX1260, CX1620, CX1640 | 0 | ELE | CAR | P7 |  |
| CEP.ELE.T.12050 |  | Prove funzionali sistemi ed apparecchiature elettriche Processo |  | 35d | CEP.ELE.T.12040 SS+10d, CEM.MLS.P.00050 | -47d | 0d | CX1260, CX1620, CX1640 | 0 | ELE | CAR | P7 | Diminuito di 5d |

| ID | WBS | Activity | Duration | Predecessors | Total float | Free float | CEMEX 2025 - Activity code Sogin | CEMEX LOCALE | CEMEX DISCIPLINE | CEMEX RESPONSABILITY | CEMEX PARTITE | CEMEX SISTEMI | Note |
| --- | --- | --- | --- | --- | --- | --- | --- | --- | --- | --- | --- | --- | --- |
|  | 1 | **Prove e collaudi - Sistema strumentazione e controllo** |  |  |  |  |  |  |  |  |  |  |  |
| CEP.I&C.T.12110 |  | Prima energizzazione e messa in funzione del sistema | 5d | CEP.I&C.T.12030, CEP.ELE.T.12030, CEP.ELE.T.12040, CEM.MLS.P.00050 | -70d | 0d | CX1270, CX1620 | 0 | I&C | A/CAR | P6 | 0 |  |
| CEP.I&C.T.12120 |  | Prove funzionali Sistema strumentazione e controllo | 35d | CEP.ELE.T.12050 SS, CEP.I&C.T.12110, CEM.MLS.P.00050 | -47d | 19d | CX1270, CX1620 | 0 | I&C | A/CAR | P6 | 0 | Diminuito di 5d |
|  | 2 | **Prove e collaudi - Sistemi di processo e sistemi ausiliari di impianto** |  |  |  |  |  |  |  |  |  |  |  |
| CEP.INS.T.12210 |  | "SISTEMI DI SERVIZIO / (allaccio 91H/91F/95A) Avvio 91A - 96A""" | 24d | CEP.INS.01.00170, CEP.INS.06.00120, CEP.INS.21.00070, CEP.INS.02.00090, CEP.INS.03.00030, CEP.INS.05.00080, CEP.INS.04.00120, CEP.INS.25.00040, CEP.INS.26.00090, CEP.INS.28.00080, CEP.INS.29.00100, CEP.INS.31.00060, CEP.INS.56.00030, CEP.INS.77.00060, CEP.INS.24.00040, CEP.INS.45.00120, CEP.INS.46.00190, CEP.INS.50.00290, CEP.INS.55.00070, CEP.INS.107.00020, CEP.ELE.T.12040, CEP.I&C.T.12110, CEP.INS.53.00080, CEM.MLS.P.00100, CEM.MLS.P.00110, CEM.MLS.P.00050, CEM.MLS.P.00085 SS | -70d | 0d | CX1540, CX1530, CX1170 | 0 | PRO | DEM | P4 | 91A |  |
| CEP.INS.T.12220 |  | PREOP. SISTEMI NUCLEARI E CEMENTAZIONE (51A/57A/52A/52B/51C/ 94B sottosistema /51D) | 28d | CEP.INS.T.12210 SS+5d, CEM.MLS.P.00050, CEM.MLS.P.00085 SS | -70d | 0d | CX1650, CX1630 | 0 | PRO | A/D | P4 | 0 | suddiviso in sistemi nucleri e HVAC essenziale. |
| CEP.INS.T.12230 |  | PREOP. AUSILIARI (54A/54B/56A/67A/92A) | 15d | CEP.INS.T.12220 SS+6d, CEM.MLS.P.00050, CEM.MLS.P.00085 SS | -70d | 0d | CX1540, CX1530, CX1170 | 0 | PRO | A/D | P4 | 0 |  |
| CEP.INS.T.12240 |  | FUNZIONALI SISTEMI NUCLEARI E CEMENTAZIONE | 36d | CEP.INS.T.12230 SS+7d, CEM.MLS.P.00050, CEM.MLS.P.00085 SS, CEP.I&C.T.12120 FF | -66d | 4d | CX1650, CX1630 | 0 | PRO | A/D | P4 | 0 | suddiviso in sistemi nucleari e HVAC essenziale. |
| CEP.INS.T.12250 |  | FUNZIONALI AUSILIARI | 22d | CEP.INS.T.12230, CEM.MLS.P.00050, CEM.MLS.P.00085 SS | -60d | 10d | CX1540, CX1530, CX1170 | 0 | PRO | A/D | P4 | 0 |  |
| CEP.INS.T.12265 |  | PREOP. HVAC ESSENZIALE E SFIATI | 3d | CEP.INS.T.12220 SS | -70d | 0d | CX1590, CX1560, CX1520, CX1250 | 0 | PRO | A/D | P5 | 0 | aggiunto. |
| CEP.INS.T.12270 |  | FUNZIONALI HVAC ESSENZIALE E SFIATI | 50d | CEP.INS.T.12265, CEP.I&C.T.12120 FF | -70d | 0d | CX1590, CX1560, CX1520, CX1250 | 0 | PRO | A/D | P5 | 0 | aggiunto. |
|  | 3 | **Prove e collaudi - Sistemi di movimentazione** |  |  |  |  |  |  |  |  |  |  |  |
| CEP.CRA.T.12310 |  | PREOP. MOVIMENTAZIONE (53A) | 17d | CEP.CRA.I.12086, CEM.MLS.P.00090, CEP.RUL.I.00100, CEP.INS.T.12230 SS+5d, CEP.I&C.T.12110, CEP.CRA.I.01120, CEP.CRA.I.02120, CEP.CRA.I.03120, CEP.CRA.I.04120, CEP.CRA.I.12090, CEP.SPC.I.00050, CEP.SAS.M.10010, CEP.ELV.I.00010 FF, CEM.MLS.P.00050, CEP.RUL.M.10010 | -70d | 0d |  | 0 | CRA | ANN | P2 | 53A |  |
| CEP.INS.T.12260 |  | FUNZIONALI MOVIMENTAZIONE | 25d | CEP.CRA.T.12310, CEM.MLS.P.00050, CEM.MLS.P.00085 SS, CEP.I&C.T.12120 FF | -70d | 0d |  | 0 | CRA | ANN | P2 | 53A |  |
|  | 4 | **Prove e collaudi - Sistema HVAC** |  |  |  |  |  |  |  |  |  |  |  |
| CEP.HVA.T.12410 |  | "PREOP. HVAC EDIFICIO PROCESSO E DEPOSITO / (94B, 94A, 94D, 94C)""" | 15d | CEP.HVA.D.00530, CEP.HVA.D.12030, CEP.HVA.D.06030, CEP.HVA.D.04080, CEP.HVA.T.00020, CEP.ELE.T.12040 FS+11d, CEP.I&C.T.12110, CEP.I&C.Q.06020, CEM.MLS.P.00050, CEM.MLS.P.00085 SS, CEP.CRA.T.12310 SS | -67d | 0d |  | 0 | HVA | DEM | P5 | 92A |  |
| CEP.HVA.T.12420 |  | FUNZIONALI HVAC EDIFICIO PROCESSO E DEPOSITO | 24d | CEP.HVA.T.12410, CEM.MLS.P.00050, CEM.MLS.P.00085 SS, CEP.I&C.T.12120 FF | -67d | 3d |  | 0 | HVA | DEM | P5 |  |  |
| CEP.HVA.T.12430 |  | FUNZIONALI HVAC IMPIANTO | 9d | CED.CHI.69.00060, CED.CHI.68.00010, CED.CHI.62.00010, CED.CHI.60.00020, CEP.CHI.23.00010, CEP.CHI.02.00040, CEP.CHI.LC.00030, CEP.CHI.37.00010, CEP.CHI.40.00010, CEP.CHI.40.00020, CEP.CHI.28.00020, CEP.CHI.31.00020, CEP.CHI.80.00010, CEP.CHI.10.00020, CEP.HVA.T.12420, CEM.MLS.P.00050, CEP.INS.T.12240, CEP.INS.T.12210, CEP.INS.T.12250, CEP.INS.T.12260, CEP.ELE.T.12050, CEP.I&C.T.12120 FF | -70d | 0d |  | 0 | HVA | DEM | P5 |  | Vanno testati dopo la chiusura varchi (Ciliberti) |
|  | 5 | **Prove e collaudi - Sistema monitoraggio** |  |  |  |  |  |  |  |  |  |  |  |
| CEP.RAD.T.12510 |  | Prove e collaudi - Sistema monitoraggio | 10d | CEP.COM.I.00210, CEP.COM.I.00220, CEP.COM.I.00230, CEP.SS.I.00010, CEM.MLS.P.00050, CEM.MLS.P.00085 SS, CEP.COM.T.12610 | -65d | 5d |  | 0 | RAD | ANN | P9 | 86C |  |
|  | 6 | **Prove e collaudi - Sistema integrato telecomunicazioni** |  |  |  |  |  |  |  |  |  |  |  |
| CEP.COM.T.12610 |  | Prove e collaudi - Sistema integrato telecomunicazioni | 12d | CEP.COM.I.00110, CEP.COM.I.00120, CEP.COM.I.00130, CEP.SS.I.00010, CEM.MLS.P.00050, CEP.ANT.T.12710 SS | -65d | 0d |  | 0 | COM | CAR | P10 |  |  |
|  | 7 | **Prove e collaudi - Sistema antincendio** |  |  |  |  |  |  |  |  |  |  |  |
| CEP.ANT.T.12710 |  | Prove e collaudi - Sistema antincendio | 10d | CEP.FIR.I.00050, CEP.HVA.T.12410, CEP.SS.I.00010, CEM.MLS.P.00050, CEP.I&C.T.12120 SS | -65d | 0d |  | 0 | FIR | CAR | P8 |  |  |

| ID | WBS | Activity | Type | Duration | Predecessors | Total float | Free float | CEMEX 2025 - Activity code Sogin | CEMEX LOCALE | CEMEX DISCIPLINE | CEMEX ACTIVITY TYPE | CEMEX RESPONSABILITY | CEMEX PARTITE | CEMEX REVISIONE | CEMEX SISTEMI |
| --- | --- | --- | --- | --- | --- | --- | --- | --- | --- | --- | --- | --- | --- | --- | --- |
|  | 6 | **Realizzazione edificio deposito** |  |  |  |  |  |  |  |  |  |  |  |  |  |
|  | 4 | **Completamento opere strutturali civili** |  |  |  |  |  |  |  |  |  |  |  |  |  |
|  | 4 | **Realizzazione Infissi Schermanti da +0,00 a +8,00** |  |  |  |  |  |  |  |  |  |  |  |  |  |
| CEP.CIV.F.12070 |  | Montaggio infissi Schermati da q.ta 0.00m a +8,00 |  | 120d | CEP.HVA.D.12010 | 289d | 229d | CX1490 | 0 | CIV | INST | COS | P1 | AGG |  |
|  | 5 | **Realizzazione finiture di q.ta 0.00m, 6.00 e 12.00** |  |  |  |  |  |  |  |  |  |  |  |  |  |
| AB |  | Avvio cantiere edificio deposito | milestone | 0d | CEM.MLS.C.00020 | 303d | 23d |  | 0 | CIV |  | COS | P1 |  |  |
| CED.CIV.F.00000 |  | Realizzazione finiture di q.ta 0.00m - 6.00m - 12.00m SUMMARY | WBS summary | 575d |  | 840d | 2060d |  | 0 | CIV |  | COS | P1 |  |  |
| CED.CIV.F.00010 |  | Approvvigionamento e preparazione materiale in officina per deposito |  | 66d | CEM.MLS.C.00010 FS+75d | 268d | 0d |  | 0 | CIV |  | COS | P1 |  |  |
| CED.CIV.F.00020 |  | Realizzazione finiture pareti interne e soffitti deposito |  | 138d | CED.CIV.F.00010 SS+24d, AB SS | 280d | 12d |  | 0 | CIV |  | COS | P1 |  |  |
| CED.CIV.F.00030 |  | Realizzazione pavimentazioni interne deposito |  | 150d | CED.CIV.F.00010, CED.CIV.F.00020 SS+30d, AB SS | 268d | 89d |  | 0 | CIV |  | COS | P1 |  |  |
| CED.CIV.F.00040 |  | Montaggio infissi deposito |  | 24d | CED.CIV.F.00030 FS+246d, CEP.CIV.F.00050, CEP.CIV.F.00070 | 840d | 910d |  | 0 | CIV |  | COS | P1 |  |  |
|  | 1 | **Installazione sistemi di impianto** |  |  |  |  |  |  |  |  |  |  |  |  |  |
|  | 6 | **Installazione sistemi di movimentazione (2 carriponte, 1 carrello di trasferimento)** |  |  |  |  |  |  |  |  |  |  |  |  |  |
| CED.CRA.M.00010 |  | Completamento installazione sistemi di movimentazione deposito | milestone | 0d | CED.CRA.I.01120 FF, CED.I&C.Q.08010 FF, CED.CRA.I.02120 FF, CED.I&C.Q.00060 FF, CED.CRA.I.03010 FF | 142d | 121d | CX1830 | 0 | CRA |  | ANN | P2 |  | 53B |
|  | 1 | **Installazione carroponte 53B-DW001 (L.61-67)** |  |  |  |  |  |  |  |  |  |  |  |  |  |
| CED.CRA.I.01000 |  | Installazione CARROPONTE 53B-DW001 SUMMARY | WBS summary | 31d |  | 277d | 1979d | CX1830 | 61 | CRA |  | ANN | P2 |  | 53B |
| CED.CRA.I.01010 |  | Inserimento vie di corsa attraverso varco L62-01 e trasporto fino ai locali L60A e L60B 53B-DW001 |  | 1d | CED.CRA.S.01010, CED.CIV.F.00030, CED.HVA.C.00520, CED.HVA.C.00510, CEP.INS.M.00005 SS+90d | 277d | 0d | CX1830 | 60 | CRA |  | ANN | P2 |  | 53B |
| CED.CRA.I.01020 |  | Installazione vie di corsa nel locale L61 e L67 (escluso tratto locale L68) con paranchi su monorotaia 53B-DW001 |  | 10d | CED.CRA.I.01010 | 277d | 0d | CX1830 | 61 | CRA |  | ANN | P2 |  | 53B |
| CED.CRA.I.01030 |  | Inserimento prima trave ponte attraverso varco L62-01 e trasporto fino ai locali L60A e L60B 53B-DW001 |  | 1d | CED.CRA.I.01020 | 277d | 0d | CX1830 | 60 | CRA |  | ANN | P2 |  | 53B |
| CED.CRA.I.01040 |  | Sollevamento e installazione prima trave ponte su vie di corsa con paranco su monorotaia 53B-DW001 |  | 3d | CED.CRA.I.01030 | 277d | 0d | CX1830 | 61 | CRA |  | ANN | P2 |  | 53B |
| CED.CRA.I.01050 |  | Inserimento seconda trave ponte attraverso varco L62-01 e trasporto fino ai locali L60A e L60B 53B-DW001 |  | 1d | CED.CRA.I.01040 | 277d | 0d | CX1830 | 60 | CRA |  | ANN | P2 |  | 53B |
| CED.CRA.I.01060 |  | Sollevamento e installazione seconda trave ponte su vie di corsa con paranco manuale 53B-DW001 |  | 3d | CED.CRA.I.01050 | 277d | 0d | CX1830 | 61 | CRA |  | ANN | P2 |  | 53B |
| CED.CRA.I.01070 |  | Completamento delle mensole e delle vie di corsa in corrispondenza del locale L68 53B-DW001 |  | 3d | CED.CRA.I.01060 | 277d | 0d | CX1830 | 68 | CRA |  | ANN | P2 |  | 53B |
| CED.CRA.I.01080 |  | Inserimento carrello attraverso varco L62-01 e trasporto fino ai locali L60A e L60B 53B-DW001 |  | 2d | CED.CRA.I.01070 | 277d | 0d | CX1830 | 60 | CRA |  | ANN | P2 |  | 53B |
| CED.CRA.I.01090 |  | Sospensione carrello con gru esterna 53B-DW001 |  | 1d | CED.CRA.I.01080 | 277d | 0d | CX1830 | 60 | CRA |  | ANN | P2 |  | 53B |
| CED.CRA.I.01100 |  | Inserimento testate attraverso varco L62-01 e trasporto fino ai locali L60A e L60B 53B-DW001 |  | 1d | CED.CRA.I.01090 | 277d | 0d | CX1830 | 60 | CRA |  | ANN | P2 |  | 53B |
| CED.CRA.I.01110 |  | Sollevamento e installazione testate su vie di corsa con paranchi su monorotaia 53B-DW001 |  | 3d | CED.CRA.I.01100 | 277d | 0d | CX1830 | 61 | CRA |  | ANN | P2 |  | 53B |
| CED.CRA.I.01120 |  | Posizionamento e fissaggio carrello 53B-DW001 |  | 2d | CED.CRA.I.01110 | 277d | 0d | CX1830 | 61 | CRA |  | ANN | P2 |  | 53B |

| ID | WBS | Activity | Type | Duration | Predecessors | Total float | Free float | CEMEX 2025 - Activity code Sogin | CEMEX LOCALE | CEMEX DISCIPLINE | CEMEX RESPONSABILITY | CEMEX PARTITE | CEMEX SISTEMI | CEMEX REVISIONE | Note |
| --- | --- | --- | --- | --- | --- | --- | --- | --- | --- | --- | --- | --- | --- | --- | --- |
|  | 2 | **Installazione carroponte 53B-DW002 (L.62)** |  |  |  |  |  |  |  |  |  |  |  |  |  |
| CED.CRA.I.02000 |  | Installazione CARROPONTE 53B-DW002 SUMMARY | WBS summary | 22d |  | 255d | 1935d | CX1830 | 62 | CRA | ANN | P2 | 53B |  |  |
| CED.CRA.I.02010 |  | Inserimento vie di corsa tramite varco di costrubilità L62-01 53B-DW002 |  | 1d | CED.CRA.I.01120, CED.CRA.S.02010 | 255d | 0d | CX1830 | 62 | CRA | ANN | P2 | 53B |  |  |
| CED.CRA.I.02020 |  | Installazione vie di corsa nel locale L62 con gru semovente da 6t 53B-DW002 |  | 4d | CED.CRA.I.02010 | 255d | 0d | CX1830 | 62 | CRA | ANN | P2 | 53B |  |  |
| CED.CRA.I.02030 |  | Inserimento prima trave ponte tramite varco di costrubilità L62-01 53B-DW002 |  | 1d | CED.CRA.I.02020 | 255d | 0d | CX1830 | 62 | CRA | ANN | P2 | 53B |  |  |
| CED.CRA.I.02040 |  | Sospensione prima trave ponte con gru a portale da 3t 53B-DW002 |  | 2d | CED.CRA.I.02030 | 255d | 0d | CX1830 | 62 | CRA | ANN | P2 | 53B |  |  |
| CED.CRA.I.02050 |  | Inserimento testate tramite varco di costrubilità L62-01 53B-DW002 |  | 1d | CED.CRA.I.02040 | 255d | 0d | CX1830 | 62 | CRA | ANN | P2 | 53B |  |  |
| CED.CRA.I.02060 |  | Installazione testate con gru semovente da 6t 53B-DW002 |  | 2d | CED.CRA.I.02050 | 255d | 0d | CX1830 | 62 | CRA | ANN | P2 | 53B |  |  |
| CED.CRA.I.02070 |  | Posizionamento e fissaggio prima trave ponte sulle testate 53B-DW002 |  | 2d | CED.CRA.I.02060 | 255d | 0d | CX1830 | 62 | CRA | ANN | P2 | 53B |  |  |
| CED.CRA.I.02080 |  | Inserimento carrello tramite varco di costrubilità L62-01 53B-DW002 |  | 1d | CED.CRA.I.02070 | 255d | 0d | CX1830 | 62 | CRA | ANN | P2 | 53B |  |  |
| CED.CRA.I.02090 |  | Sospensione carrello con gru a portale da 3t 53B-DW002 |  | 2d | CED.CRA.I.02080 | 255d | 0d | CX1830 | 62 | CRA | ANN | P2 | 53B |  |  |
| CED.CRA.I.02100 |  | Inserimento seconda trave ponte tramite varco di costrubilità L62-01 53B-DW002 |  | 1d | CED.CRA.I.02090 | 255d | 0d | CX1830 | 62 | CRA | ANN | P2 | 53B |  |  |
| CED.CRA.I.02110 |  | Installazione seconda trave ponte con gru semovente da 6t 53B-DW002 |  | 2d | CED.CRA.I.02100 | 255d | 0d | CX1830 | 62 | CRA | ANN | P2 | 53B |  |  |
| CED.CRA.I.02120 |  | Posizionamento e fissaggio carrello 53B-DW002 |  | 3d | CED.CRA.I.02110 | 255d | 0d | CX1830 | 62 | CRA | ANN | P2 | 53B |  |  |
|  | 3 | **Carrello 53B-DW003 q.ta 0.00m (L.60)** |  |  |  |  |  |  |  |  |  |  |  |  |  |
| CED.CRA.I.03000 |  | Installazione Carrello 53B-DW003 SUMMARY | WBS summary | 97d |  | 142d | 1606d | CX1830 | 62 | CRA | DEM | P3 | 53B | MOD |  |
| CED.CRA.I.03010 |  | Installazione Carrello 53B-DW003 (Inserimento carrello assemblato tramite accesso E9 del locale L62) |  | 15d | CED.CRA.I.02120, CED.CRA.S.03010, CEP.CRA.I.00010, CED.CRA.I.03015 | 142d | 0d | CX1830 | 62 | CRA | DEM | P3 | 53B | MOD |  |
| CED.CRA.I.03015 |  | Installazione rotaie a pavimento per carrello 53B-DW003 |  | 30d | CEP.CIV.F.00100, CEP.CRA.I.04120, CEP.RUL.I.00100 | 162d | 50d | CX1830 | 60 | CRA | DEM | P3 | 53B | MOD |  |
| CED.CRA.I.03025 |  | Installazione rotaie a pavimento per carrello 53A-DW014 edificio processo |  | 30d | CEP.RUL.I.00100 | 162d | 50d | CX1830 | 60 | CRA | DEM | P3 | 53B | MOD |  |
|  | 4 | **Piastra di supporto Cestelli in AISI 304 1st** |  |  |  |  |  |  |  |  |  |  |  |  |  |
| CED.CRA.I.3035 |  | Installazione Piastra di supporoi Cestelli |  | 30d | CED.CRA.I.03010 | 1546d | 0d | CX1830 | 62 | CRA | ANN | P2 |  | AGG |  |
|  | 5 | **Piastra di supporto Cestelli in AISI 304 2nd** |  |  |  |  |  |  |  |  |  |  |  |  |  |
| CED.CRA.I.3075 |  | Installazione Piastra di supporto Cestelli |  | 30d | CED.CRA.I.3035 | 1546d |  | CX1830 | 62 | CRA | DEM | P2 |  | AGG |  |
|  | 7 | **Montaggi HVAC** |  |  |  |  |  |  |  |  |  |  |  |  |  |
| CED.HVA.M.00000 |  | Montaggi HVAC SUMMARY | WBS summary | 482d |  | 178d | 1657d | CX1890 | 0 | HVA | DEM | P5 |  | MOD | distribuzione ore 15% |
| CED.HVA.M.00010 |  | Completamento HVAC edificio deposito | milestone | 0d | CED.HVA.D.13630 FF, CED.HVA.D.40650 FF, CED.HVA.D.00530 FF, CED.HVA.D.00130 FF | 191d | 13d | CX1890 | 0 | HVA | DEM | P5 |  | MOD |  |
| CED.HVA.M.00020 |  | Completamento Verifiche e controlli HVAC edificio deposito | milestone | 0d | CED.HVA.M.00010 FF, CED.HVA.T.00020 | 178d | 172d | CX1890 | 0 | HVA | DEM | P5 |  | MOD |  |

| ID | WBS | Activity | Duration | Predecessors | Total float | Free float | CEMEX TAG COMPONENTE | CEMEX 2025 - Activity code Sogin | CEMEX LOCALE | CEMEX DISCIPLINE | CEMEX RESPONSABILITY | CEMEX PARTITE | CEMEX REVISIONE | Note | CEMEX N° COMPONENTE | CEMEX SISTEMI |
| --- | --- | --- | --- | --- | --- | --- | --- | --- | --- | --- | --- | --- | --- | --- | --- | --- |
|  | 4 | **Montaggi HVAC q.ta -3.45m - 0.00m** |  |  |  |  |  |  |  |  |  |  |  |  |  |  |
|  | 2 | **Canali** |  |  |  |  |  |  |  |  |  |  |  |  |  |  |
| CED.HVA.D.00110 |  | Supporti canali q.ta -3.45 | 25d | CED.CIV.F.00030, CEP.HVA.M.10210, CEP.HVA.M.10310 | 22d | 0d | SUPPORTI | CX1890 | 0 | HVA | COS | P1 | AGG |  |  |  |
| CED.HVA.D.00120 |  | Canali di ventilazione e serrande q.ta -3.45 | 60d | CED.HVA.D.00110 SS+12d, CED.HVA.D.40640, CEP.HVA.M.10310, CEP.HVA.M.10210 | 6d | 0d |  | CX1890 | 0 | HVA | DEM | P5 | MOD |  |  |  |
| CED.HVA.D.00130 |  | Coibentazione mandate q.ta -3.45 | 15d | CED.HVA.D.40640, CED.HVA.D.00120 | 6d | 0d |  | CX1890 | 0 | HVA | DEM | P5 | MOD | DA ELIMINARE? |  |  |
|  | 1 | **Montaggi HVAC q.ta 0.00m - 4.40m** |  |  |  |  |  |  |  |  |  |  |  |  |  |  |
|  | 1 | **Componenti** |  |  |  |  |  |  |  |  |  |  |  |  |  |  |
| CED.HVA.C.00510 |  | Ventilatore mandata loc. quadri e UPS 94C-CD102A/B | 5d | CED.CIV.F.00030 FS+60d, CEP.HVA.M.10420, CEP.INS.M.00005 SS+90d, CEP.HVA.M.10440, CEP.HVA.M.10490 | 48d | 0d |  | CX1890 | 97 | HVA | DEM | P5 | MOD | Ipotesi di installare questi prima dei carriponte | 143 | 94C |
| CED.HVA.C.00520 |  | Ventilatore mandata loc. quadri carriponte 94C-CD103A/B | 5d | CED.HVA.C.00510, CEP.HVA.M.10420, CEP.HVA.M.10440 | 48d | 26d |  | CX1890 | 87 | HVA | DEM | P5 | MOD | Ipotesi di installare questi prima dei carriponte | 144 | 94C |
|  | 2 | **Canali** |  |  |  |  |  |  |  |  |  |  |  |  |  |  |
| CED.HVA.D.00510 |  | Supporti canali q.ta 0.00 | 18d | CED.HVA.D.00110, CED.HVA.C.00520 | 22d | 0d | SUPPORTI | CX1890 | 0 | HVA | COS | P1 | AGG |  |  |  |
| CED.HVA.D.00520 |  | Canali di ventilazione e serrande q.ta 0.00 | 60d | CED.HVA.D.00510 SS+9d, CEP.HVA.M.10310, CEP.HVA.M.10210 FS+15d, CED.HVA.C.00520, CED.HVA.D.13620 | 6d | 0d |  | CX1890 | 0 | HVA | DEM | P5 | MOD |  |  |  |
| CED.HVA.D.00530 |  | Coibentazione mandate q.ta 0.00 | 15d | CED.HVA.D.00520, CED.HVA.D.00130 | 6d | 0d |  | CX1890 | 0 | HVA | DEM | P5 | MOD |  |  |  |
|  | 2 | **Montaggi HVAC q.ta 4.40m - 13.00m** |  |  |  |  |  |  |  |  |  |  |  |  |  |  |
|  | 1 | **Componenti** |  |  |  |  |  |  |  |  |  |  |  |  |  |  |
| CED.HVA.C.40610 |  | Ventilatore estrazione loc. spogliatoio freddo 94C-CD104X | 7d | CEP.HVA.M.10420, CEP.INS.M.00005 SS+90d, CEP.HVA.M.10440 | 6d | 0d |  | CX1890 | 89 | HVA | DEM | P5 | MOD |  | 145 | 94C |
| CED.HVA.C.40620 |  | Condizionatore 94C-DB114X | 10d | CED.HVA.C.40610 | 6d | 0d |  | CX1890 | 89 | HVA | DEM | P5 | MOD |  | 130 | 94C |
| CED.HVA.C.40630 |  | Condizionatore 94C-DB114X | 10d | CED.HVA.C.40620 | 6d | 0d |  | CX1890 | 66 | HVA | DEM | P5 | MOD |  | 128 | 94C |
| CED.HVA.C.40640 |  | Condizionatore 94C-DB113X | 10d | CED.HVA.C.40630 | 6d | 0d |  | CX1890 | 78 | HVA | DEM | P5 | MOD |  | 129 | 94C |
| CED.HVA.C.40650 |  | Condizionatore dual split 94C-DB111X-01/02 | 3d | CED.HVA.C.40640 | 6d | 0d |  | CX1890 | 65 | HVA | DEM | P5 | MOD |  | 131 | 94C |
|  | 2 | **Canali** |  |  |  |  |  |  |  |  |  |  |  |  |  |  |
| CED.HVA.D.40610 |  | Supporti canali q.ta 4.40 | 18d | CED.HVA.D.00510 | 22d | 0d | SUPPORTI | CX1890 | 0 | HVA | COS | P1 | AGG |  |  |  |
| CED.HVA.D.40620 |  | Canali di ventilazione e serrande q.ta 4.40 | 60d | CED.HVA.D.40610 SS+9d, CEP.HVA.M.10310, CEP.HVA.M.10210, CED.HVA.D.00520 | 6d | 0d |  | CX1890 | 0 | HVA | DEM | P5 | MOD |  |  |  |
| CED.HVA.D.40630 |  | Supporti canali q.ta 6.00 | 6d | CED.HVA.D.40610 | 22d | 16d | SUPPORTI | CX1890 | 0 | HVA | COS | P1 | AGG |  |  |  |
| CED.HVA.D.40640 |  | Canali di ventilazione e serrande q.ta 6.00 | 60d | CEP.HVA.M.10310, CEP.HVA.M.10210, CED.HVA.D.40620, CED.HVA.D.40630 | 6d | 0d |  | CX1890 | 0 | HVA | DEM | P5 | MOD |  |  |  |
| CED.HVA.D.40650 |  | Coibentazione mandate q.ta 6.00 e 4.40 | 15d | CED.HVA.D.40620, CED.HVA.D.00530 | 6d | 0d |  | CX1890 | 0 | HVA | DEM | P5 | MOD |  |  |  |

| ID | WBS | Activity | Type | Duration | Predecessors | Total float | Free float | CEMEX N° COMPONENTE | CEMEX 2025 - Activity code Sogin | CEMEX LOCALE | CEMEX DISCIPLINE | CEMEX RESPONSABILITY | CEMEX PARTITE | CEMEX SISTEMI | CEMEX REVISIONE | CEMEX TAG COMPONENTE |
| --- | --- | --- | --- | --- | --- | --- | --- | --- | --- | --- | --- | --- | --- | --- | --- | --- |
|  | 3 | **Montaggi HVAC q.ta 13.00m +** |  |  |  |  |  |  |  |  |  |  |  |  |  |  |
|  | 1 | **Componenti** |  |  |  |  |  |  |  |  |  |  |  |  |  |  |
| CED.HVA.C.13610 |  | Unità esterna condizionatore 94C-DB114X (94C-QI114X) |  | 10d | CED.HVA.C.40650 | 6d | 0d | 136 | CX1890 | TZ02 | HVA | DEM | P5 | 94C | MOD |  |
| CED.HVA.C.13620 |  | Unità esterna condizionatore 94C-DB112X (94C-QI112X) |  | 10d | CED.HVA.C.13610 | 6d | 0d | 134 | CX1890 | TZ02 | HVA | DEM | P5 | 94C | MOD |  |
| CED.HVA.C.13630 |  | Unità esterna condizionatore 94C-DB113X (94C-QI113X) |  | 10d | CED.HVA.C.13620 | 6d | 0d | 135 | CX1890 | TZ02 | HVA | DEM | P5 | 94C | MOD |  |
| CED.HVA.C.13640 |  | Unità esterna condizionatore 94C-DB111X-01/02 (94C-QI111X) |  | 10d | CED.HVA.C.13630 | 6d | 0d | 133 | CX1890 | TZ02 | HVA | DEM | P5 | 94C | MOD |  |
| CED.HVA.C.13650 |  | Ventilatore estrazione loc.ventilazione 94C-CD101A/B |  | 7d | CED.HVA.C.13640, CEP.HVA.M.10420 | 6d | 0d | 236 | CX1890 | 69 | HVA | DEM | P5 | 94C | MOD |  |
| CED.HVA.C.13660 |  | Banco filtrante 94C-DJ001A/B |  | 7d | CED.HVA.C.13650, CEP.HVA.M.10410 | 6d | 0d | 234 | CX1890 | 69 | HVA | DEM | P5 | 94C | MOD |  |
| CED.HVA.C.13665 |  | Aerotermo riscaldamento elettrico 94C-BJ110X |  | 7d | CEP.HVA.M.10420, CED.HVA.C.13660 | 524d | 0d | 818 | CX1890 | 69 | HVA | DEM | P5 | 94C | MOD |  |
| CED.HVA.C.13670 |  | Unità di trattamento aria 94C-DO002X |  | 4d | CEP.HVA.M.10110, CED.HVA.C.13665 | 524d | 0d | 233 | CX1890 | 69 | HVA | DEM | P5 | 94C | MOD |  |
| CED.HVA.C.13680 |  | Serbatoio polmone 94C-BL001X |  | 7d | CED.HVA.C.13670 | 524d | 0d | 817 | CX1890 | 69 | HVA | DEM | P5 | 94C | MOD |  |
| CED.HVA.C.13685 |  | Aerotermo riscaldamento elettrico 94C-BJ109X |  | 7d | CED.HVA.C.13680, CEP.HVA.M.10420 | 524d | 0d | 818 | CX1890 | 69 | HVA | DEM | P5 | 94C | MOD |  |
| CED.HVA.C.13690 |  | Filtro HEPA 94C-ED4000X |  | 2d | CEP.HVA.M.10410, CED.HVA.C.13685 | 524d | 0d | 818 | CX1890 | 69 | HVA | DEM | P5 | 94C | MOD |  |
| CED.HVA.C.13700 |  | Presa d'aria esterna 94C-BL002X |  | 2d | CED.HVA.C.13690 | 524d | 346d | 819 | CX1890 | TZ07 | HVA | DEM | P5 | 94C | MOD |  |
|  | 2 | **Canali** |  |  |  |  |  |  |  |  |  |  |  |  |  |  |
| CED.HVA.D.13610 |  | Supporti canali q.ta 13.00 |  | 30d | CED.HVA.D.40630, CED.HVA.C.13660 | 6d | 0d |  | CX1890 | 0 | HVA | COS | P1 |  | AGG | SUPPORTI |
| CED.HVA.D.13620 |  | Canali di ventilazione e serrande q.ta 13.00 |  | 60d | CED.HVA.D.13610 SS+15d, CEP.HVA.M.10310, CEP.HVA.M.10210 | 6d | 0d |  | CX1890 | 0 | HVA | DEM | P5 |  | MOD |  |
| CED.HVA.D.13630 |  | Coibentazione mandate q.ta 13.00 |  | 15d | CED.HVA.D.13620, CED.HVA.D.40650 | 178d | 0d |  | CX1890 | 0 | HVA | DEM | P5 |  | MOD |  |
|  | 5 | **Verifiche e controlli** |  |  |  |  |  |  |  |  |  |  |  |  |  |  |
| CED.HVA.T.00010 |  | Verifica layout canali |  | 9d | CED.HVA.D.13630, CED.HVA.C.13700 | 178d | 0d |  | CX1890 | 0 | HVA | DEM | P5 |  | MOD |  |
| CED.HVA.T.00020 |  | Prova tenuta canali riprese |  | 4d | CED.HVA.D.13630, CED.HVA.T.00010 | 178d | 0d |  | CX1890 | 0 | HVA | DEM | P5 |  | MOD |  |
|  | 8 | **Installazione Camino** |  |  |  |  |  |  |  |  |  |  |  |  |  |  |
| CED.CAM.I.00000 |  | Posa in opera camino SUMMARY | WBS summary | 90d |  | 359d | 1867d |  | CX1860 | 0 | CAM | DEM | P5 |  | MOD |  |
| CED.CAM.I.00010 |  | Montaggio tronchi mediante bullonatura |  | 30d | CED.CAM.P.00010 FS+30d, CEP.CIV.S.18040 FS+20d, CEP.CIV.C.00030, CEP.CIV.VT.00030 | 359d | 0d |  | CX1860 | 0 | CAM | DEM | P5 |  | MOD |  |
| CED.CAM.I.00020 |  | Saldatura in sito tubazioni |  | 60d | CED.CAM.I.00010 | 359d | 0d |  | CX1860 | 0 | CAM | DEM | P5 |  | MOD |  |

| ID | WBS | Activity | Type | Duration | Predecessors | Total float | Free float | CEMEX 2025 - Activity code Sogin | CEMEX LOCALE | CEMEX DISCIPLINE | CEMEX RESPONSABILITY | CEMEX PARTITE | CEMEX TAG COMPONENTE | Note | CEMEX SISTEMI | CEMEX N° COMPONENTE |
| --- | --- | --- | --- | --- | --- | --- | --- | --- | --- | --- | --- | --- | --- | --- | --- | --- |
|  | 91 | **Montaggi sistema elettrico deposito** |  |  |  |  |  |  |  |  |  |  |  |  |  |  |
| CED.ELE.M.12010 |  | Completamento sistema elettrico edificio deposito | milestone | 0d | CED.ELE.I.00120 FF, CED.ELE.I.00150, CED.ELE.I.00080 | 533d | 146d | CX1840 | 0 | ELE | CAR | P7 |  |  |  |  |
| CED.ELE.M.12020 |  | Completamento prove e collaudi sistema elettrico edificio deposito | milestone | 0d | CED.ELE.M.12010 FF, CED.ELE.T.12020 FF | 387d | 0d | CX1840 | 0 | ELE | CAR | P7 |  |  |  |  |
|  | 1 | **Distribuzione Primaria e secondaria** |  |  |  |  |  |  |  |  |  |  |  |  |  |  |
| CED.ELE.I.00010 |  | Quadri elettrici ed UPS deposito |  | 15d | CED.CIV.F.00030 FS+5d, CEP.ELE.D.101300, CEP.ELE.D.00300, CEP.ELE.M.00010, CEP.ELE.M.00020, CEP.INS.M.00005 SS+90d | 434d | 0d | CX1840 | 0 | ELE | CAR | P7 |  |  |  |  |
| CED.ELE.I.00040 |  | Supporti Vie cavi distribuzione primaria e secondaria deposito |  | 35d | CED.ELE.I.00010 SS+10d | 434d | 0d | CX1840 | 0 | ELE | CAR | P7 | SUPPORTI |  |  |  |
| CED.ELE.I.00060 |  | Vie cavi distribuzione primaria e secondaria deposito |  | 35d | CED.ELE.I.00040 SS+6d, CED.ELE.I.00010 SS+16d, CEP.ELE.F.30010 FS+20d | 583d | 0d | CX1840 | 0 | ELE | CAR | P7 |  |  |  |  |
| CED.ELE.I.00080 |  | Cavi - posa e collegamento deposito |  | 60d | CED.ELE.I.00060, CEP.ELE.F.30020 FS+20d, CEP.ELE.F.30060 FS+20d | 583d | 81d | CX1840 | 0 | ELE | CAR | P7 |  |  |  |  |
|  | 2 | **Distribuzione Luce e Forza Motrice** |  |  |  |  |  |  |  |  |  |  |  |  |  |  |
| CED.ELE.I.00110 |  | Quadri elettrici deposito |  | 12d | CED.ELE.I.00010, CEP.ELE.D.00300, CEP.ELE.M.00010 | 502d | 0d | CX1840 | 0 | ELE | CAR | P7 |  |  |  |  |
| CED.ELE.I.00120 |  | Apparecchi luce / FM deposito |  | 70d | CED.ELE.I.00110, CEP.ELE.F.30050 FS+20d, CED.ELE.I.00140 SS+5d | 587d | 85d | CX1840 | 0 | ELE | CAR | P7 |  | aumentato di 40d |  |  |
| CED.ELE.I.00130 |  | Supporti per Conduit luce e prese deposito |  | 30d | CED.ELE.I.00110 | 502d | 0d | CX1840 | 0 | ELE | CAR | P7 | SUPPORTI |  |  |  |
| CED.ELE.I.00140 |  | Conduit luce e prese deposito |  | 60d | CEP.ELE.F.30010 FS+20d, CEP.ELE.F.30030 FS+20d, CED.ELE.I.00130 SS+5d | 502d | 0d | CX1840 | 0 | ELE | CAR | P7 |  | aumentato di 30d |  |  |
| CED.ELE.I.00150 |  | Cavi impianto luce / FM deposito |  | 100d | CED.ELE.I.00140, CEP.ELE.F.30020 FS+20d | 502d | 0d | CX1840 | 0 | ELE | CAR | P7 |  | aumentato di 60d |  |  |
|  | 5 | **Scariche atmosferiche** |  |  |  |  |  |  |  |  |  |  |  |  |  |  |
| CED.ELE.I.00210 |  | Scariche atmosferiche deposito |  | 15d | CEP.ELE.F.30040 FS+20d, CED.CAM.I.00010 FF, CED.ELE.I.00150 FF | 387d | 0d | CX1840 | 0 | ELE | COS | P7 |  |  |  |  |
|  | 4 | **Prove e collaudi - Sistema elettrico** |  |  |  |  |  |  |  |  |  |  |  |  |  |  |
| CED.ELE.T.12010 |  | Prove in bianco (cavi ed apparecchiature) |  | 25d | CED.ELE.I.00120, CED.ELE.I.00080, CED.ELE.I.00150, CED.ELE.I.00210 | 387d | 0d | CX1840 | 0 | ELE | CAR | P7 |  |  |  |  |
| CED.ELE.T.12020 |  | Taratura e prova elementi di protezione |  | 6d | CED.ELE.T.12010 | 387d | 0d | CX1840 | 0 | ELE | CAR | P7 |  |  |  |  |
|  | 10 | **Automazione e controllo + allestimento sala controllo (CHECK SALA DI CONTROLLO)** |  |  |  |  |  |  |  |  |  |  |  |  |  |  |
| CED.I&C.M.12010 |  | Completamento Impianto strumentale di processo | milestone | 0d | CED.I&C.I.00550, CED.I&C.Q.04040 FF, CED.I&C.Q.00050 FF | 46d | 40d | CX1840 | 0 | I&C | CAR | P11 |  |  |  |  |
| CED.I&C.M.12020 |  | Completamento test e controlli Impianto strumentale di processo | milestone | 0d | CED.I&C.M.12010 FF, CED.I&C.T.12030 | 6d | 0d | CX1840 | 0 | I&C | A/CAR | P11 |  |  | 0 |  |
|  | 2 | **Quadri quota 0.00m** |  |  |  |  |  |  |  |  |  |  |  |  |  |  |
| CED.I&C.Q.00010 |  | Quadri automazione e controllo HVAC CPU 83B-SK005X |  | 5d | CED.CIV.F.00030, CED.ELE.I.00010, CEP.I&C.M.10010, CED.I&C.Q.00100 | 455d | 0d | CX1840 | 87 | I&C | DEM | P6 |  |  | 83B |  |
| CED.I&C.Q.00020 |  | Quadri automazione e controllo sistema impianti CPU 83B-SD001X |  | 1d | CED.CIV.F.00030, CED.I&C.Q.00010 | 455d | 0d | CX1840 | 87 | I&C | ANN | P6 |  |  | 83B |  |
| CED.I&C.Q.00030 |  | Quadri automazione e controllo HVAC I/O 83B-SI018X |  | 5d | CED.CIV.F.00030, CED.I&C.Q.00020 | 455d | 0d | CX1840 | 87 | I&C | DEM | P6 |  |  | 83B |  |
| CED.I&C.Q.00040 |  | Quadri automazione e controllo sistema impianti I/O 83B-SD002X |  | 1d | CED.CIV.F.00030, CED.I&C.Q.00030 | 455d | 0d | CX1840 | 87 | I&C | ANN | P6 |  |  | 83B |  |
| CED.I&C.Q.00050 |  | Quadri automazione e controllo HVAC I/O 83B-SI017X |  | 5d | CED.CIV.F.00030, CED.I&C.Q.00040 | 455d | 0d | CX1840 | 87 | I&C | DEM | P6 |  |  | 83B |  |
| CED.I&C.Q.00060 |  | Quadro attestazione linee carroponte 53B-DW002 (dopo il montaggio del carroponte 53B-DW002) |  | 1d | CEP.I&C.M.10010, CED.CRA.I.02120, CED.I&C.Q.00070 SS | 255d | 0d | CX1840 | 62 | I&C | ANN | P2 |  |  | 53B | 125 |
| CED.I&C.Q.00070 |  | Quadro attestazione linee carrello 53B-DW003 (dopo il montaggio del carroponte 53B-DW002) |  | 1d | CEP.I&C.M.10010, CED.I&C.Q.00050 | 455d | 155d | CX1840 | 62 | I&C | ANN | P2 |  |  | 53B | 126 |

| ID | WBS | Activity | Type | Duration | Predecessors | Total float | Free float | CEMEX 2025 - Activity code Sogin | CEMEX LOCALE | CEMEX DISCIPLINE | CEMEX RESPONSABILITY | CEMEX PARTITE | CEMEX TAG COMPONENTE | Note | CEMEX SISTEMI | CEMEX ACTIVITY TYPE |
| --- | --- | --- | --- | --- | --- | --- | --- | --- | --- | --- | --- | --- | --- | --- | --- | --- |
|  | 3 | **Quadri quota 4.40m** |  |  |  |  |  |  |  |  |  |  |  |  |  |  |
| CED.I&C.Q.04010 |  | Quadri di controllo server 2 84B-SD001B |  | 1d | CED.I&C.Q.00060 | 431d | 0d | CX1840 | 65 | I&C | CAR | P6 |  |  |  |  |
| CED.I&C.Q.04020 |  | Quadri di controllo server 1 84B-SD001A |  | 1d | CED.I&C.Q.04010 | 431d | 0d | CX1840 | 65 | I&C | CAR | P6 |  |  |  |  |
| CED.I&C.Q.04030 |  | Quadri di controllo EWS e server archivio dati 84B-SD002X |  | 1d | CED.I&C.Q.04020 | 431d | 0d | CX1840 | 65 | I&C | CAR | P6 |  |  |  |  |
| CED.I&C.Q.04040 |  | Quadri di controllo interfacciamento sistemi terzi 84B-SD003X |  | 1d | CED.I&C.Q.04030 | 431d | 385d | CX1840 | 65 | I&C | CAR | P6 |  |  |  |  |
|  | 6 | **Quadri quota 8.20m** |  |  |  |  |  |  |  |  |  |  |  |  |  |  |
| CED.I&C.Q.08010 |  | Quadro attestazione linee carroponte 53B-DW001 |  | 1d | CEP.I&C.M.10010, CED.CRA.I.01120, CED.I&C.Q.00070 | 439d | 110d | CX1840 | 67 | I&C | CAR | P6 |  |  |  |  |
|  | 5 | **Strumenti** |  |  |  |  |  |  |  |  |  |  |  |  |  |  |
| CED.I&C.I.00050 |  | Montaggio strumenti |  | 20d | CED.I&C.Q.00060, CED.HVA.D.00520, CED.HVA.D.00130, CED.HVA.D.00530, CED.HVA.D.40650 | 6d | 0d | CX1840 | 0 | I&C | CAR | P11 |  |  |  |  |
|  | 4 | **Vie cavi e collegamenti** |  |  |  |  |  |  |  |  |  |  |  |  |  |  |
| CED.I&C.I.00530 |  | Supporti vie cavi strumentali |  | 60d | CED.ELE.I.00040 | 434d | 0d | CX1840 | 0 | I&C | CAR | P11 | SUPPORTI |  |  |  |
| CED.I&C.I.00540 |  | Montaggio vie cavi strumentali |  | 90d | CED.I&C.I.00530 SS+6d | 434d | 428d | CX1840 | 0 | I&C | CAR | P11 |  | Aumentato di 30d |  |  |
| CED.I&C.I.00550 |  | Posa Cavi e collegamenti strumentali |  | 120d | CED.I&C.I.00530 FF, CED.I&C.I.00050, CED.I&C.I.00540 | 6d | 0d | CX1840 | 0 | I&C | CAR | P11 |  | Aumentato di 40d |  |  |
|  | 1 | **Test e controlli esecutivi** |  |  |  |  |  |  |  |  |  |  |  |  |  |  |
| CED.I&C.T.12020 |  | Test e controlli esecutivi impianto strumentale di processo |  | 40d | CED.I&C.Q.08010, CED.I&C.I.00550 | 6d | 0d | CX1840 | 0 | I&C | A/CAR | P11 |  |  | 0 |  |
| CED.I&C.T.12030 |  | Certificato di accettazione impianto di processo | milestone | 0d | CED.I&C.T.12020 | 6d | 0d | CX1840 | 0 | I&C | SOGIN |  |  |  |  |  |
|  | 1 | **Sistemi di monitoraggio, Sistemi speciali, Sistemi di comunicazione, Antincendio** |  |  |  |  |  |  |  |  |  |  |  |  |  |  |
|  | 1 | **Sistema di monitoraggio radiologico** |  |  |  |  |  |  |  |  |  |  |  |  |  |  |
| CED.RAD.I.00010 |  | Impianto di monitoraggio radiologico deposito |  | 24d | CED.CIV.F.00030, CEP.RAD.M.20010, CED.FIR.I.00050 | 582d | 0d | CX1840 | 0 | RAD | ANN | P9 |  |  | 86D |  |
|  | 3 | **Impianto TVCC** |  |  |  |  |  |  |  |  |  |  |  |  |  |  |
| CED.COM.I.00010 |  | Impianto TVCC deposito |  | 25d | CEP.ELE.M.40010, CED.CIV.F.00030, CED.RAD.I.00010 | 582d | 0d | CX1840 | 0 | COM | CAR | P10 |  |  |  |  |
|  | 4 | **Sistema telefonico e interfonico** |  |  |  |  |  |  |  |  |  |  |  |  |  |  |
| CED.TEL.I.00010 |  | Sistema telefonico ed interfonico deposito |  | 15d | CED.CIV.F.00030, CEP.ELE.M.40010, CED.COM.I.00010 | 582d | 0d | CX1840 | 0 | COM | CAR | P10 |  |  |  |  |
|  | 5 | **Predisposizione impianti Supplementari** |  |  |  |  |  |  |  |  |  |  |  |  |  |  |
|  | 2 | **Rilevazione incendi** |  |  |  |  |  |  |  |  |  |  |  |  |  |  |
| CED.FIR.I.00000 |  | Rilevazione incendi SUMMARY | WBS summary | 96d |  | 592d | 2138d | CX1840 | 0 | FIR | CAR | P8 |  |  |  | INST |
| CED.FIR.I.00010 |  | Quadri elettrici Rilevazione Incendi deposito |  | 2d | CEP.ELE.M.00010 | 615d | 0d | CX1840 | 0 | FIR | CAR | P8 |  |  |  |  |
| CED.FIR.I.00020 |  | Apparecchiature e dispositivi deposito |  | 20d | CED.FIR.I.00010 | 615d | 23d | CX1840 | 0 | FIR | CAR | P8 |  |  |  |  |
| CED.FIR.I.00030 |  | Supporti per Vie cavi per rilevazione incendi deposito |  | 20d | CED.ELE.I.00040, CED.FIR.I.00020 | 592d | 0d | CX1840 | 0 | FIR | CAR | P8 | SUPPORTI |  |  |  |
| CED.FIR.I.00040 |  | Vie cavi per rilevazione incendi deposito |  | 20d | CED.FIR.I.00030 SS+6d, CED.FIR.I.00020 SS+10d | 592d | 0d | CX1840 | 0 | FIR | CAR | P8 |  |  |  |  |
| CED.FIR.I.00050 |  | Cavi per rilevazione incendi deposito |  | 25d | CED.FIR.I.00040, CED.FIR.I.00030 FF | 592d | 10d | CX1840 | 0 | FIR | CAR | P8 |  |  |  |  |

| ID | WBS | Activity | Duration | Predecessors | Total float | Free float | CEMEX 2025 - Activity code Sogin | CEMEX LOCALE | CEMEX DISCIPLINE | CEMEX RESPONSABILITY | CEMEX PARTITE | CEMEX SISTEMI | Note |
| --- | --- | --- | --- | --- | --- | --- | --- | --- | --- | --- | --- | --- | --- |
|  | 6 | **Verifiche e Controlli di fine montaggio sistemi speciali** |  |  |  |  |  |  |  |  |  |  |  |
| CED.SS.I.00010 |  | Verifice e controlli di fine montaggi sistemi speciali | 15d | CED.TEL.I.00010, CED.COM.I.00010, CED.RAD.I.00010, CED.FIR.I.00050 | 582d | 564d | CX1840 | 0 | SS | A/CAR | P10 | 0 |  |
|  | 11 | **Installazione delle opere di mitigazione e finiture esterne (Deposito)** |  |  |  |  |  |  |  |  |  |  |  |
| CED.CIV.M.00110 |  | Approvvigionamento e preparazione materiale in officina per deposito | 48d | CED.CIV.F.00010, AB SS | 1175d | 816d |  | 0 | CIV | COS | P1 |  |  |
| CED.CIV.M.00120 |  | Realizzazione coibentazione e finitura pareti esterne deposito | 18d | CED.CIV.M.00110, CEE.CIV.P.00020 | 359d | 0d |  | 0 | CIV | COS | P1 |  |  |
| CED.CIV.M.00130 |  | Posizionamento e fissaggio baraccature di sostegno deposito | 18d | CED.CIV.M.00120 | 431d | 0d |  | 0 | CIV | COS | P1 |  |  |
| CED.CIV.M.00140 |  | Montaggio pannelli modulari in lamiera stirata deposito | 18d | CED.CIV.M.00130 | 431d | 501d |  | 0 | CIV | COS | P1 |  |  |
|  | 3 | **Chiusura dei varchi di costruibilità dell'edificio (Deposito)** |  |  |  |  |  |  |  |  |  |  |  |
|  | 1 | **Chiusura dei varchi di costruibilità q.ta 0.00m** |  |  |  |  |  |  |  |  |  |  |  |
| CED.CHI.60.00010 |  | Chiusura del varco di costruibilità L60B-02 | 10d | CEP.CHI.14.00020, CEM.MLS.P.00120 SS, CEP.CIV.F.12070 | 60d | 110d |  | 60 | CIV | COS | P1 |  |  |
| CED.CHI.60.00020 |  | Chiusura del varco di costruibilità L60B-01 | 10d | CED.CRA.I.03010, CED.CHI.60.00010, CEM.MLS.P.00130, CEM.MLS.P.00120 SS | -50d | 20d |  | 60 | CIV | COS | P1 |  | Verifica succ |
| CED.CHI.61.00010 |  | Chiusura del varco di costruibilità L61-04 | 10d | CED.RAD.I.00010, CED.FIR.I.00010, CED.FIR.I.00030, CED.FIR.I.00040, CED.FIR.I.00050, CEM.MLS.P.00120 SS | 1344d | 0d |  | 61 | CIV | COS | P1 |  |  |
| CED.CHI.61.00020 |  | Chiusura del varco di costruibilità L61-03 | 10d | CED.CHI.61.00010, CEM.MLS.P.00120 SS | 1344d | 0d |  | 61 | CIV | COS | P1 |  |  |
| CED.CHI.61.00030 |  | Chiusura del varco di costruibilità L61-02 | 10d | CED.CHI.61.00020, CEM.MLS.P.00120 SS | 1344d | 0d |  | 61 | CIV | COS | P1 |  |  |
| CED.CHI.61.00040 |  | Chiusura del varco di costruibilità L61-01 | 10d | CED.CHI.61.00030, CEM.MLS.P.00120 SS | 1344d |  |  | 61 | CIV | COS | P1 |  | Verifica succ |
| CED.CHI.62.00010 |  | Chiusura del varco di costruibilità L62-01 | 10d | CED.CRA.I.02120, CEM.MLS.P.00130, CEM.MLS.P.00120 SS | -50d | 20d |  | 62 | CIV | COS | P1 |  | Verifica succ |
|  | 3 | **Chiusura dei varchi di costruibilità q.ta 6.00m** |  |  |  |  |  |  |  |  |  |  |  |
| CED.CHI.65.00010 |  | Chiusura del varco di costruibilità L65-01 | 10d | CED.I&C.Q.04010, CED.I&C.Q.04020, CED.I&C.Q.04030, CED.I&C.Q.04040, CEM.MLS.P.00130, CEM.MLS.P.00120 SS | 1254d |  |  | 65 | CIV | COS | P1 |  | Verifica succ |
| CED.CHI.68.00010 |  | Chiusura del varco di costruibilità L68-01 e L68-02 | 30d | CED.CRA.I.01120, CEM.MLS.P.00130, CEM.MLS.P.00120 SS | -70d | 0d |  | 68 | CIV | COS | P1 |  | "Diminuito di 10d; Verifica succ" |
|  | 4 | **Chiusura dei varchi di costruibilità q.ta 12.00m +** |  |  |  |  |  |  |  |  |  |  |  |
| CED.CHI.69.00010 |  | Chiusura del varco di costruibilità L69-01 | 10d | CED.HVA.C.13700, CED.ELE.I.00010, CED.ELE.I.00110, CEM.MLS.P.00120 SS | 39d | 0d |  | 69 | CIV | COS | P1 |  |  |
| CED.CHI.69.00020 |  | Chiusura del varco di costruibilità L69-02 | 10d | CED.CHI.69.00030, CEM.MLS.P.00120 SS | 39d | 0d |  | 69 | CIV | COS | P1 |  |  |
| CED.CHI.69.00030 |  | Chiusura del varco di costruibilità L69-03 | 10d | CED.CHI.69.00010, CEM.MLS.P.00120 SS | 39d | 0d |  | 69 | CIV | COS | P1 |  |  |
| CED.CHI.69.00040 |  | Chiusura del varco di costruibilità L69-04 | 10d | CED.CHI.69.00020, CEM.MLS.P.00120 SS | 39d | 80d |  | 69 | CIV | COS | P1 |  |  |
| CED.CHI.69.00050 |  | Chiusura del varco di costruibilità L69-05 | 10d | CED.CHI.69.00040, CEM.MLS.P.00130, CEM.MLS.P.00120 SS | -41d | 29d |  | 69 | CIV | COS | P1 |  | Verifica succ |
| CED.CHI.69.00060 |  | Chiusura del varco di costruibilità L69-04 (solaio) | 25d | CED.HVA.D.00120, CED.HVA.D.00520, CED.HVA.D.40620, CED.HVA.D.40640, CED.HVA.D.13620, CEM.MLS.P.00130, CEM.MLS.P.00120 SS | -65d | 5d |  | TZ07 | CIV | COS | P1 |  | Verifica succ |

| ID | WBS | Activity | Duration | Predecessors | Total float | Free float | CEMEX LOCALE | CEMEX DISCIPLINE | CEMEX RESPONSABILITY | CEMEX PARTITE | CEMEX SISTEMI |
| --- | --- | --- | --- | --- | --- | --- | --- | --- | --- | --- | --- |
|  | 2 | **Chiusura dei varchi di commissioning deposito** |  |  |  |  |  |  |  |  |  |
|  | 2 | **Collaudi e prove** |  |  |  |  |  |  |  |  |  |
|  | 9 | **Prove e collaudi - Sistema strumentazione e controllo** |  |  |  |  |  |  |  |  |  |
| CED.I&C.T.10010 |  | Test Sistema strumentazione e controllo | 20d | CED.I&C.M.12020, CED.ELE.T.10010, CEM.MLS.P.00050 | 6d | 0d | 0 | I&C | A/D | P11 | 0 |
|  | 3 | **Prove e collaudi - Sistemi di movimentazione** |  |  |  |  |  |  |  |  |  |
| CED.MOV.T.10010 |  | Test e collaudi Sistema di movimentazione | 10d | CED.CRA.M.00010, CED.CRA.I.01120, CED.I&C.Q.08010, CED.CRA.I.02120, CED.I&C.Q.00060, CED.ELE.T.10010, CED.I&C.T.10010, CEM.MLS.P.00050 | 21d | 91d | 0 | CRA | ANN | P2 | 53B |
|  | 4 | **Prove e collaudi - Sistema HVAC** |  |  |  |  |  |  |  |  |  |
| CED.HVA.T.10010 |  | Test e collaudi Sistema HVAC | 15d | CED.HVA.M.00020, CED.HVA.T.00020, CED.I&C.T.10010, CED.ELE.T.10010, CED.CAM.I.00020, CEM.MLS.P.00050 | 6d | 0d | 0 | HVA | DEM | P5 |  |
|  | 5 | **Prove e collaudi - Sistema monitoraggio** |  |  |  |  |  |  |  |  |  |
| CED.RAD.T.10010 |  | Test e collaudi Sistema monitoraggio | 10d | CED.HVA.T.10010, CED.RAD.I.00010, CED.ELE.T.10010, CED.SS.I.00010, CEM.MLS.P.00050 | 6d | 76d | 0 | RAD | ANN | P9 | 86D |
|  | 6 | **Prove e collaudi - Sistema integrato telecomunicazioni** |  |  |  |  |  |  |  |  |  |
| CED.COM.T.10010 |  | Test e collaudi integrato telecomunicazioni | 5d | CED.COM.I.00010, CED.I&C.T.10010, CED.ELE.T.10010, CED.TEL.I.00010, CED.SS.I.00010, CEM.MLS.P.00050 | 18d | 0d | 0 | COM | A/CAR | P10 |  |
|  | 7 | **Prove e collaudi - Sistema antincendio** |  |  |  |  |  |  |  |  |  |
| CED.ANT.T.10010 |  | Test e collaudi Sistema antincendio | 8d | CED.COM.T.10010, CED.FIR.I.00050, CED.I&C.T.10010, CED.SS.I.00010, CEM.MLS.P.00050 | 18d | 88d | 0 | FIR | A/CAR | P8 |  |
|  | 1 | **Prove e collaudi - Sistema elettrico** |  |  |  |  |  |  |  |  |  |
| CED.ELE.T.10010 |  | Test e collaudi Sistema Elettrico | 10d | CED.ELE.M.12020, CEM.MLS.P.00050 | 387d | 381d | 0 | ELE | A/CAR | P7 |  |
|  | 7 | **Sistemazione aree esterne** |  |  |  |  |  |  |  |  |  |
|  | 1 | **Realizzazione scavi per costruzione muro di sostegno, installazione pozzetti acque meteoriche,** |  |  |  |  |  |  |  |  |  |
| CEE.CIV.S.00010 |  | Demolizioni varie aree esterne | 6d | CEM.MLS.P.00080, CED.CAM.I.00020 | 359d | 0d | 0 | CIV | COS | P15 |  |
| CEE.CIV.S.00020 |  | Attività di scavo aree esterne | 12d | CEE.CIV.S.00010 SS | 359d | 0d | 0 | CIV | COS | P15 |  |
|  | 2 | **Realizzazione muro di sostegno** |  |  |  |  |  |  |  |  |  |
| CEE.CIV.M.00010 |  | Posizionamento armatura e casseri aree esterne | 18d | CEE.CIV.S.00020 | 359d | 0d | 0 | CIV | COS | P15 |  |
| CEE.CIV.M.00020 |  | Fasi di getto calcestruzzo aree esterne | 12d | CEE.CIV.M.00010 | 359d | 0d | 0 | CIV | COS | P15 |  |
|  | 4 | **Realizzazione pozzetti acque meteoriche e collegamenti idraulici** |  |  |  |  |  |  |  |  |  |
| CEE.CIV.A.00010 |  | Approvvigionamento materiale aree esterne | 30d | CEE.CIV.S.00010 | 365d | 6d | 0 | CIV | COS | P15 |  |
| CEE.CIV.A.00020 |  | Posa in opera in sito aree esterne | 54d | CEE.CIV.A.00010, CEE.CIV.M.00020 | 359d | 0d | 0 | CIV | COS | P15 |  |

| ID | WBS | Activity | Duration | Predecessors | Total float | Free float | CEMEX LOCALE | CEMEX DISCIPLINE | CEMEX RESPONSABILITY | CEMEX PARTITE | Note |
| --- | --- | --- | --- | --- | --- | --- | --- | --- | --- | --- | --- |
|  | 5 | **Realizzazione pozzetti elettrici e cavidotti elettrici lato Ed. deposito** |  |  |  |  |  |  |  |  |  |
| CEE.CIV.E.00010 |  | Approvvigionamento materiale aree esterne | 30d | CEE.CIV.S.00010 | 419d | 60d | 0 | CIV | COS | P15 |  |
| CEE.CIV.E.00020 |  | Posa in opera in sito aree esterne | 42d | CEE.CIV.E.00010, CEE.CIV.A.00020 | 359d | 0d | 0 | CIV | COS | P15 |  |
|  | 3 | **Reinterri e realizzazione pavimentazione di area** |  |  |  |  |  |  |  |  |  |
| CEE.CIV.P.00010 |  | Attività di reinterro aree esterne | 6d | CEE.CIV.E.00020 | 359d | 0d | 0 | CIV | COS | P15 |  |
| CEE.CIV.P.00020 |  | Realizzazione pavimentazioni di area aree esterne | 18d | CEE.CIV.P.00010 | 359d | 0d | 0 | CIV | COS | P15 |  |
|  | 6 | **Sistema di trattamento e rilancio acque meteoriche - Installazione nuove vasche** |  |  |  |  |  |  |  |  |  |
| CEE.CIV.R.00010 |  | Approvvigionamento vasche, sistemi impiantistici, sistemi elettrici e automazione, tubazioni | 39d | CEM.MLS.C.00010 | 1058d | 0d | 0 |  | COS | P15 | aggiunto |
| CEE.CIV.R.00020 |  | Scavi per posizionamento vasche | 10d | CEE.CIV.R.00010 | 1058d | 0d | 0 |  | COS | P15 | aggiunto |
| CEE.CIV.R.00030 |  | Getti in cls (magrone vasche) | 5d | CEE.CIV.R.00020 | 1058d | 0d | 0 |  | COS | P15 | aggiunto |
| CEE.CIV.R.00040 |  | Installazione vasche e rinterri parziali | 5d | CEE.CIV.R.00030 | 1058d | 0d | 0 |  | COS | P15 | aggiunto |
| CEE.CIV.R.00050 |  | Scavo, installazione tubazione di rilancio e ripristini | 7d | CEE.CIV.R.00040 | 1058d | 0d | 0 |  | COS | P15 | aggiunto |
| CEE.CIV.R.00060 |  | Getti in cls (cavidotti e soletta per quadri ele/aut) e tettoia quadri | 4d | CEE.CIV.R.00050 SS | 1058d | 0d | 0 |  | COS | P15 | aggiunto |
| CEE.CIV.R.00070 |  | Installazione solette di copertura prefabbricati e rinterri | 2d | CEE.CIV.R.00060 SS | 1058d | 0d | 0 |  | COS | P15 | aggiunto |
| CEE.CIV.R.00080 |  | Scavo e getti per cavidotti | 2d | CEE.CIV.R.00050 SS | 1058d | 0d | 0 |  | COS | P15 | aggiunto |
| CEE.CIV.R.00090 |  | Installazione sistemi per vasca prima pioggia (pompe, sonde, valvole e tubazioni, quadri elettrici/aut e cablaggi) | 10d | CEE.CIV.R.00070, CEE.CIV.R.00080, CEE.CIV.R.00040 | 1058d | 0d | 0 |  | COS | P15 | aggiunto |
| CEE.CIV.R.00100 |  | Installazione sistemi per vasca rilancio (pompe, sonde, valvole, tubazioni e cablaggi), compresa parte interna linea 5 | 10d | CEE.CIV.R.00070, CEE.CIV.R.00090 SS, CEE.CIV.R.00040 | 1058d | 0d | 0 |  | COS | P15 | aggiunto |
| CEE.CIV.R.00110 |  | collaudi impianti sistema vasca prima pioggia e vasca rilancio | 3d | CEE.CIV.R.00070, CEE.CIV.R.00100, CEE.CIV.R.00090 | 1058d | 0d | 0 |  | COS | P15 | aggiunto |
| CEE.CIV.R.00120 |  | Ripristino scarpata lato interno e pavimentazione stradale in corrispondenza della tubazione di rilancio in polietilene | 5d | CEE.CIV.R.00110, CEE.CIV.R.00110 FF | 1058d | 0d | 0 |  | COS | P15 | aggiunto |
|  | 7 | **Sistema di trattamento e rilancio acque meteoriche - Installazione nuova pastorale** |  |  |  |  |  |  |  |  |  |
| CEE.CIV.N.00010 |  | Sbancamento terrapieno oltre la difesa idraulica, demolizione pozzetto esistente | 10d | CEE.CIV.R.00120 | 1058d | 0d | 0 |  | COS | P15 | aggiunto |
| CEE.CIV.N.00020 |  | Realizzazione soletta fossa pastorali | 7d | CEE.CIV.N.00010 | 1058d | 0d | 0 |  | COS | P15 | aggiunto |
| CEE.CIV.N.00030 |  | Carotaggi setti e diaframmi in cls | 4d | CEE.CIV.N.00020 | 1058d | 0d | 0 |  | COS | P15 | aggiunto |
| CEE.CIV.N.00040 |  | realizzazione basamento nuovo pozzetto valvole | 7d | CEE.CIV.N.00030 | 1058d | 0d | 0 |  | COS | P15 | aggiunto |
| CEE.CIV.N.00050 |  | Realizzazione linea 5 parte esterna | 5d | CEE.CIV.N.00080 | 1058d | 0d | 0 |  | COS | P15 | aggiunto |
| CEE.CIV.N.00060 |  | rimozione pastorale 4 (parte aerea) e realizzazione bypass | 4d | CEE.CIV.N.00110 | 1058d | 0d | 0 |  | COS | P15 | aggiunto |
| CEE.CIV.N.00070 |  | rimozione pastorale 4 (tratto interrato) | 1d | CEE.CIV.N.00060 SS | 1058d | 0d | 0 |  | COS | P15 | aggiunto |
| CEE.CIV.N.00080 |  | realizzazione nuova linea 4 e ripristino parte aerea | 3d | CEE.CIV.N.00040 | 1058d | 0d | 0 |  | COS | P15 | aggiunto |
| CEE.CIV.N.00090 |  | realizzazione bypass linea 2, rimozione parte interrata e realizzazione nuova linea 2 | 2d | CEE.CIV.N.00050 | 1058d | 0d | 0 |  | COS | P15 | aggiunto |
| CEE.CIV.N.00100 |  | realizzazione bypass linea 3, rimozione parte interrata e realizzazione nuova linea 3 | 3d | CEE.CIV.N.00090 | 1058d | 0d | 0 |  | COS | P15 | aggiunto |
| CEE.CIV.N.00110 |  | rimozione porzione tratto interrato linea 1 e montaggio valvola | 2d | CEE.CIV.N.00100 | 1058d | 0d | 0 |  | COS | P15 | aggiunto |
| CEE.CIV.N.00120 |  | collaudo impianti | 3d | CEE.CIV.N.00070 | 1058d | 0d | 0 |  | COS | P15 | aggiunto |
| CEE.CIV.N.00130 |  | completamento nuovo pozzetto valvole e montaggi attrezzature | 10d | CEE.CIV.N.00120 | 1058d | 0d | 0 |  | COS | P15 | aggiunto |
| CEE.CIV.N.00140 |  | Ripristino scogliera in massi cementati | 2d | CEE.CIV.N.00130 | 1058d | 0d | 0 |  | COS | P15 | aggiunto |
| CEE.CIV.N.00150 |  | Rinterri e ripristino scarpata lato Dora, e lastra in cls per contenimento scarpata | 3d | CEE.CIV.N.00140 | 1058d | 0d | 0 |  | COS | P15 | aggiunto |
| CEE.CIV.N.00160 |  | ripristino pista carrabile lato esterno | 1d | CEE.CIV.N.00150 | 1058d | 0d | 0 |  | COS | P15 | aggiunto |

| ID | WBS | Activity | Duration | Predecessors | Total float | Free float | Note | CEMEX LOCALE | CEMEX RESPONSABILITY | CEMEX PARTITE | CEMEX REVISIONE |
| --- | --- | --- | --- | --- | --- | --- | --- | --- | --- | --- | --- |
|  | 8 | **Realizzazione scarichi ai pond sistema 67A** |  |  |  |  |  |  |  |  |  |
| CEE.CIV.N.320 |  | Montaggio scarichi | 45d | CEP.PAC.O.10110 | 2363d | 0d | aggiunto | 0 | DEM | P15 | MOD |
| CEE.CIV.N.330 |  | Controlli e collaudi | 10d | CEE.CIV.N.320 | 2363d |  | aggiunto | 0 | DEM | P15 | MOD |
|  | 3 | **Sottoservizi Cemex** |  |  |  |  |  |  |  |  |  |
| CEE.CIV.S.000010 |  | Approvvigionamenti (tubazioni, pozzetti, pompe, strumentazione, componenti linea) | 5d | CEM.MLS.C.00010 | 1130d | 0d | aggiunto | 0 | COS | P15 |  |
|  | 1 | **Sistemazione raccolta acque meteoriche, installazione vie cavo lato Ed. Processo** |  |  |  |  |  |  |  |  |  |
| CEE.CIV.S.000020 |  | Realizzazione scavi | 7d | CEE.CIV.S.000010 | 1130d | 0d | aggiunto | 0 | COS | P15 |  |
| CEE.CIV.S.000030 |  | Realizzazione pozzetti acque meteoriche e collegamenti idraulici | 26d | CEE.CIV.S.000020 | 1130d | 0d | aggiunto | 0 | COS | P15 |  |
| CEE.CIV.S.000040 |  | Realizzazione pozzetti elettrici e cavidotti elettrici | 19d | CEE.CIV.S.000030 | 1130d | 0d | aggiunto | 0 | COS | P15 |  |
| CEE.CIV.S.000050 |  | Reinterri | 13d | CEE.CIV.S.000040 | 1130d | 72d | aggiunto | 0 | COS | P15 |  |
|  | 2 | **Servizi Ausiliari (A.C. servizi strumenti, acqua industriale e potabile** |  |  |  |  |  |  |  |  |  |
| CEE.CIV.S.000060 |  | montaggi | 5d | CEE.CIV.S.000010 | 1188d | 0d | aggiunto | 0 | COS | P15 |  |
| CEE.CIV.S.000070 |  | collaudi | 2d | CEE.CIV.S.000060 | 1188d | 130d | aggiunto | 0 | COS | P15 |  |
|  | 3 | **Scarichi acque nere** |  |  |  |  |  |  |  |  |  |
| CEE.CIV.S.000080 |  | scavi | 5d | CEE.CIV.S.000010 | 1179d | 0d | aggiunto | 0 | COS | P15 |  |
| CEE.CIV.S.000090 |  | installazioni | 5d | CEE.CIV.S.000080 | 1179d | 0d | aggiunto | 0 | COS | P15 |  |
| CEE.CIV.S.000100 |  | collaudi | 6d | CEE.CIV.S.000090 | 1179d | 121d | aggiunto | 0 | COS | P15 |  |
|  | 7 | **Scarico ai pond Edificio di Processo** |  |  |  |  |  |  |  |  |  |
| CEE.CIV.S.000110 |  | scavi | 5d | CEE.CIV.S.000010 | 1183d | 0d | aggiunto | 0 | COS | P15 |  |
| CEE.CIV.S.000120 |  | installazioni | 5d | CEE.CIV.S.000110 | 1183d | 0d | aggiunto | 0 | COS | P15 |  |
| CEE.CIV.S.000130 |  | collaudi | 2d | CEE.CIV.S.000120 | 1183d | 125d | aggiunto | 0 | COS | P15 |  |
|  | 6 | **Scarico drenaggio fondazioni (implementazione rete acque meteoriche)** |  |  |  |  |  |  |  |  |  |
| CEE.CIV.S.000140 |  | scavi | 1d | CEE.CIV.S.000010 | 1192d | 0d | aggiunto | 0 | COS | P15 |  |
| CEE.CIV.S.000150 |  | installazioni | 1d | CEE.CIV.S.000140 | 1192d | 0d | aggiunto | 0 | COS | P15 |  |
| CEE.CIV.S.000160 |  | collaudi | 1d | CEE.CIV.S.000150 | 1192d | 134d | aggiunto | 0 | COS | P15 |  |

| ID | WBS | Activity | Duration | Predecessors | Total float | Free float | Note | CEMEX LOCALE | CEMEX RESPONSABILITY | CEMEX PARTITE | CEMEX DISCIPLINE | CEMEX SISTEMI |
| --- | --- | --- | --- | --- | --- | --- | --- | --- | --- | --- | --- | --- |
|  | 5 | **Modifica anello antincendio** |  |  |  |  |  |  |  |  |  |  |
| CEE.CIV.S.000170 |  | scavi | 8d | CEE.CIV.S.000010 | 1154d | 0d | aggiunto | 0 | COS | P15 |  |  |
| CEE.CIV.S.000180 |  | installazioni | 7d | CEE.CIV.S.000170 | 1154d | 0d | aggiunto | 0 | COS | P15 |  |  |
| CEE.CIV.S.000190 |  | collaudi | 2d | CEE.CIV.S.000180 | 1154d | 0d | aggiunto | 0 | COS | P15 |  |  |
| CEE.CIV.S.000200 |  | rinterri e ripristino pavimentazione carrabile | 12d | CEE.CIV.S.000190 | 1154d | 0d | aggiunto | 0 | COS | P15 |  |  |
|  | 4 | **Pipe rack** |  |  |  |  |  |  |  |  |  |  |
| CEE.CIV.S.0000210 |  | realizzazione basamenti in c.a. | 9d | CEE.CIV.S.000200 | 1154d | 0d | aggiunto | 0 | COS | P15 |  |  |
| CEE.CIV.S.0000220 |  | Montaggio carpenterie metalliche | 3d | CEE.CIV.S.0000210 | 1154d | 96d | aggiunto | 0 | COS | P15 |  |  |
|  | 8 | **Formazione e addestramento** |  |  |  |  |  |  |  |  |  |  |
| CEC.CMS.F.00010 |  | Addestramento del personale all'esercizio impianto in modalità Mock-Up | 36d | CEC.MCK.T.00000 SS | 737d | 0d |  | 0 | ANN | P13 | COMS | 0 |
| CEC.CMS.F.00020 |  | Formazione del personale all'esercizio dell'impianto Cemex | 96d | CEC.CMS.F.00010 SS | 843d |  |  | 0 | ANN | P13 | COMS | 0 |
| CEC.CMS.F.00030 |  | Addestramento del personale all'esercizio operativo dell'impianto Cemex | 166d | CEC.CMS.F.00010 | 737d |  |  | 0 | ANN | P13 | COMS | 0 |
|  | 4 | **Prove in modalità Mock-up e Prove combinate complesso Cemex** |  |  |  |  |  |  |  |  |  |  |
|  | 1 | **Prove Mock-up** |  |  |  |  |  |  |  |  |  |  |
| CEC.MCK.T.00000 |  | Prove dell'Impianto in modalità Mock-up | 120d | CEP.COM.T.12610, CEP.RAD.T.12510, CEP.I&C.T.12110, CEP.ELE.T.12050, CEP.INS.T.12250, CEP.INS.T.12240, CEP.INS.T.12260, CEP.HVA.T.12420, CEP.I&C.T.12120, CEM.MLS.P.00120 SS | -70d | 0d | 150d da cronoprogramma Sogin | 0 | A/D | P12 | COMS | 0 |
|  | 2 | **Prove combinate** |  |  |  |  |  |  |  |  |  |  |
| CEC.COM.T.00000 |  | Prove combinate dell'Impianto | 75d | CEM.MLS.P.00135 SS | -70d | 0d | 90d da cronoprogramma Sogin | 0 | ANN | P12 | COMS | 0 |
|  | 11 | **Assistenza prove non nucleari dell'impianto Cemex (Processo e Deposito)** |  |  |  |  |  |  |  |  |  |  |
| CEC.ELE.T.12730 |  | PROVE DI IMPIANTO - FUNZIONAMENTO NORMALE | 12d | CEM.MLS.P.00140, CEC.ELE.T.12750 SS | 241d | 0d |  | 0 | ANN | P12 | ELE | 0 |
| CEC.ELE.T.12740 |  | PROVE DI RISPOSTA A CONDIZIONI INCIDENTALI/EMERGENZA | 8d | CEC.ELE.T.12730, CEM.MLS.P.00140 | 241d | 240d |  | 0 | ANN | P12 | ELE | 0 |
| CEC.ELE.T.12750 |  | Prove non nucleari | 120d | CEC.MCK.T.00000 SS+60d, CEM.MLS.P.00140 SS | 1d | 0d | 150d da cronoprogramma Sogin | 0 | SOGIN | P13 |  | 0 |
| CEC.ELE.T.12755 |  | Approvazione cliente programma prove non nucleari | 20d | CEC.ELE.T.12750 | 1d | 0d |  | 0 | SOGIN | P13 |  | 0 |
| CEC.ELE.T.12760 |  | Assistenza prove non nucleari | 120d | CEM.MLS.P.00140 SS, CEC.ELE.T.12755 | 1d | 0d | 150d da cronoprogramma Sogin | 0 | A/D | P13 |  | 0 |
|  | 9 | **Assistenza prove nucleari** |  |  |  |  |  |  |  |  |  |  |
| CEC.CMS.P.00010 |  | Autorizzazione ISIN prove nucleari | 150d | CEM.MLS.P.00160 | 1d | 0d | Su programma Sogin sono 180 gg consecutivi | 0 | SOGIN |  | COMS | 0 |
| CEC.CMS.P.00020 |  | Assistenza alle prove nucleari dell'impianto Cemex | 150d | CEM.MLS.P.00165 SS, CEP.FUS.M.00110, CEP.CES.M.00110, CEP.FUS.M.120, CEP.CES.M.120 | 1d | 0d | Su programma Sogin sono 180 gg consecutivi | 0 | ANN | P13 | COMS | 0 |

| ID | WBS | Activity | Duration | Predecessors | Total float | Calendar | Note | CEMEX LOCALE | CEMEX RESPONSABILITY | CEMEX SISTEMI | CEMEX DISCIPLINE | CEMEX PARTITE |
| --- | --- | --- | --- | --- | --- | --- | --- | --- | --- | --- | --- | --- |
|  | 10 | **Esercizio impianto** |  |  |  |  |  |  |  |  |  |  |
| CEC.CMS.E.00005 |  | Autorizzazione ISIN esercizio | 130d | CEM.MLS.P.00170 | 0d | Standard 5 Day Workweek with ITA Basic Holidays (2016-2031) | Su programma Sogin sono 180 gg consecutivi | 0 | SOGIN | 0 |  |  |
| CEC.CMS.E.00010 |  | Assistenza all'esercizio dell'impianto Cemex per il condizionamento dei rifiuti pregressi | 295d | CEC.CMS.F.00020, CEC.CMS.F.00030, CEM.MLS.P.00180, CEM.MLS.P.00190 | 0d |  | Su programma Sogin sono 550 gg consecutivi | 0 | ANN | 0 | COMS | P13 |
| CEC.CMS.E.00020 |  | Assistenza all'esercizio dell'impianto Cemex per il condizionamento dei rifiuti da decommissioning | 150d | CEM.MLS.P.00210 | 0d |  | Su programma Sogin sono 550 gg consecutivi | 0 | ANN | 0 | COMS | P13 |

## Activity codes

| Code | Value | Meaning |
| --- | --- | --- |
| CEMEX ACTIVITY TYPE | DES | DESIGN |
| CEMEX ACTIVITY TYPE | INST | INSTALLATION |
| CEMEX ACTIVITY TYPE | SUP | SUPPLY |
| CEMEX ACTIVITY TYPE | TEST | SISMIC TEST |
| CEMEX DISCIPLINE | CAM | CAMINO |
| CEMEX DISCIPLINE | CIV | CIVILE |
| CEMEX DISCIPLINE | CMC | CARRELLO MOVIMENTAZIONE CESTELLI |
| CEMEX DISCIPLINE | COM | COMUNICAZIONE |
| CEMEX DISCIPLINE | COMS | COMMISSIONING |
| CEMEX DISCIPLINE | CRA | CARROPONTE |
| CEMEX DISCIPLINE | ELE | ELECTRICO |
| CEMEX DISCIPLINE | ELV | MONTACARICHI |
| CEMEX DISCIPLINE | FIR | ANTINCENDIO |
| CEMEX DISCIPLINE | HVA | HVAC |
| CEMEX DISCIPLINE | I&C | AUTOMAZIONE E CONTROLLO |
| CEMEX DISCIPLINE | LAB | LABORATORIO RADIOCHIMICO |
| CEMEX DISCIPLINE | MON | MONTAGGI |
| CEMEX DISCIPLINE | PRO | PROCESSO |
| CEMEX DISCIPLINE | RAD | MONITORAGGIO RADIOLOGICO |
| CEMEX DISCIPLINE | ROL | RULLIERE |
| CEMEX DISCIPLINE | SS | SISTEMI SPECIALI |
| CEMEX LOCALE | 0 | General |
| CEMEX LOCALE | 1 | Locale drenaggi controllati |
| CEMEX LOCALE | 10 | Cella maturazione d'impasto |
| CEMEX LOCALE | 107 | Cavedio impiantistico |
| CEMEX LOCALE | 109 | Cavedio impiantistico |
| CEMEX LOCALE | 11 | Cella maturazione capping |
| CEMEX LOCALE | 12 | Deposito fusti emergenza |
| CEMEX LOCALE | 13 | Decontaminazione |
| CEMEX LOCALE | 14 | Area trasferimento manufatti |
| CEMEX LOCALE | 16 | Area operativa |
| CEMEX LOCALE | 17 | Sala di controllo |
| CEMEX LOCALE | 19 | Locali quadri elettrici e UPS processo |
| CEMEX LOCALE | 2 | Locale serbatoi bunker |
| CEMEX LOCALE | 21 | Locale officina/magazzino caldo |
| CEMEX LOCALE | 23 | Locale manutenzione reattore neutralizzazione |
| CEMEX LOCALE | 24 | Locale campionamento |
| CEMEX LOCALE | 25 | Locale pompe evaporatore |
| CEMEX LOCALE | 26 | Locale pompe dosatrici reagenti |
| CEMEX LOCALE | 28 | Locale area tramogge cemento impasto |
| CEMEX LOCALE | 29 | Locale area tramogge cemento capping |
| CEMEX LOCALE | 3 | Locale evaporatore |
| CEMEX LOCALE | 30 | Corridoio accesso aree operative |
| CEMEX LOCALE | 31 | Laboratorio radiochimico |
| CEMEX LOCALE | 33 | SAS uscita materiali |
| CEMEX LOCALE | 37 | Corridoio caldo q.ta +12.00 |
| CEMEX LOCALE | 4 | Locale distillatore |
| CEMEX LOCALE | 40 | Area ventilazione fredda |
| CEMEX LOCALE | 43 | Locale quadri elettrici e automazione |
| CEMEX LOCALE | 44 | Locale ventilazione raccolta sfiati |
| CEMEX LOCALE | 45 | Locale off-gas |
| CEMEX LOCALE | 46 | Locale vapore ausiliario |
| CEMEX LOCALE | 47 | Corridoio q.ta +12.00 |
| CEMEX LOCALE | 48 | Locale apparecchiature ventilazione calda |
| CEMEX LOCALE | 5 | Locale serbatoi finali |
| CEMEX LOCALE | 50 | Locale servizi ausiliari |
| CEMEX LOCALE | 52 | Locale quadri elettrici e automazione |
| CEMEX LOCALE | 53 | Locale reattore neutralizzazione |
| CEMEX LOCALE | 55 | Locale impianto demineralizzazione |
| CEMEX LOCALE | 56 | Locale valvole evaporatore |
| CEMEX LOCALE | 6 | Locale serbatoi reagenti |
| CEMEX LOCALE | 60 | Tunnel di movimentazione processo (D) |
| CEMEX LOCALE | 61 | Vault di stoccaggio (D) |
| CEMEX LOCALE | 62 | Baia di carico (D) |
| CEMEX LOCALE | 65 | Sala manovra (D) |
| CEMEX LOCALE | 66 | Area accesso zona controllata deposito (D) |
| CEMEX LOCALE | 67 | Area manutenzione carroponte (D) |
| CEMEX LOCALE | 68 | Area manutenzione schermi (D) |
| CEMEX LOCALE | 69 | Locale apparecchiature di ventilazione deposito (D) |
| CEMEX LOCALE | 7 | Deposito fusti vuoti |
| CEMEX LOCALE | 75 | Locale quadri elettrici q.ta +0.00 |
| CEMEX LOCALE | 77 | Locale pompe neutralizzazione |
| CEMEX LOCALE | 78 | Locale dosimetria deposito (D) |
| CEMEX LOCALE | 8 | Transito fusti vuoti |
| CEMEX LOCALE | 80 | SAS freddo |
| CEMEX LOCALE | 87 | Locale quadri elettrici carriponte deposito (D) |
| CEMEX LOCALE | 89 | Spogliatoio freddo deposito (D) |
| CEMEX LOCALE | 9 | Cella d'impasto |
| CEMEX LOCALE | 95 | Locale valvole ventilazione |
| CEMEX LOCALE | 96 | Locale ventilatori sala controllo |
| CEMEX LOCALE | 97 | Atrio locali quadri elettrici e UPS deposito (D) |
| CEMEX LOCALE | TZ01 | Terrazzo q.ta +6.00 (copertura Loc. 07) |
| CEMEX LOCALE | TZ02 | Terrazzo q.ta +8.35 (copertura baia di carico) (P/D) |
| CEMEX LOCALE | TZ07 | Terrazzo q.ta +16.60 (copertura Loc. 69) (P/D) |
| CEMEX PARTITE | P1 | Partita 1 |
| CEMEX PARTITE | P10 | Partita 10 |
| CEMEX PARTITE | P11 | Partita 11 |
| CEMEX PARTITE | P12 | Partita 12 |
| CEMEX PARTITE | P13 | Partita 13 |
| CEMEX PARTITE | P15 | Partita 15 |
| CEMEX PARTITE | P2 | Partita 2 |
| CEMEX PARTITE | P3 | Partita 3 |
| CEMEX PARTITE | P4 | Partita 4 |
| CEMEX PARTITE | P5 | Partita 5 |
| CEMEX PARTITE | P6 | Partita 6 |
| CEMEX PARTITE | P7 | Partita 7 |
| CEMEX PARTITE | P8 | Partita 8 |
| CEMEX PARTITE | P9 | Partita 9 |
| CEMEX RESPONSABILITY | A/CAR | ANN/CARAGLIO |
| CEMEX RESPONSABILITY | A/D | ANN/DEMONT |
| CEMEX RESPONSABILITY | CAR | CARAGLIO |
| CEMEX RESPONSABILITY | COS | COSEDIL |
| CEMEX RESPONSABILITY | DEM | DEMONT |
| CEMEX REVISIONE | AGG | Aggiunta |
| CEMEX REVISIONE | MOD | Modificata |
| CEMEX SISTEMI | 0 | Non applicabile |
| CEMEX SISTEMI | 51A | Sistema 51A |
| CEMEX SISTEMI | 51C | Sistema 51C |
| CEMEX SISTEMI | 51D | Sistema 51D |
| CEMEX SISTEMI | 52A | Sistema 52A |
| CEMEX SISTEMI | 52B | Sistema 52B |
| CEMEX SISTEMI | 53A | Sistema 53A |
| CEMEX SISTEMI | 53B | Sistema 53B |
| CEMEX SISTEMI | 54A | Sistema 54A |
| CEMEX SISTEMI | 54B | Sistema 54B |
| CEMEX SISTEMI | 55 | Sistema 55 |
| CEMEX SISTEMI | 56A | Sistema 56A |
| CEMEX SISTEMI | 57A | Sistema 57A |
| CEMEX SISTEMI | 67A | Sistema 67A |
| CEMEX SISTEMI | 83A | Sistema83A |
| CEMEX SISTEMI | 83B | Sistema83B |
| CEMEX SISTEMI | 86C | Sistema 86C |
| CEMEX SISTEMI | 86D | Sistema 86D |
| CEMEX SISTEMI | 91A | Sistema 91A |
| CEMEX SISTEMI | 91F | Sistema 91F |
| CEMEX SISTEMI | 92A | Sistema 92A |
| CEMEX SISTEMI | 94A | Sistema 94A |
| CEMEX SISTEMI | 94B | Sistema 94B |
| CEMEX SISTEMI | 94C | Sistema 94C |
| CEMEX SISTEMI | 94D | Sistema 94D |
| CEMEX SISTEMI | 95A | Sistema 95A |
| CEMEX SISTEMI | 96A | Sistema 96A |
