# PA27_A22_PLO Viadotto Morello III REV 03 250303

Schedule from Primavera P6, 2024-11-18 to 2027-05-12, data date 2024-11-18, costs in EUR.

## Calendars

- PA 27 Calendar: Mon-Fri 08:00-12:00, 13:00-17:00; Sat-Sun off. Exceptions (off unless hours are given): 2026-01-01, 2026-01-06, 2026-04-06, 2026-05-01, 2026-06-02, 2026-12-08, 2026-12-25, 2027-01-01, 2027-01-06, 2027-03-29.

## Resources

| Resource | Group | Unit | Rate |
| --- | --- | --- | --- |
| Scavo di sbancamento …..anche a campioni di qualsiasi lunghezza, a mano o con mez ... realizzazione della lavorazione a perfetta regola d'arte. | material | mc | 6 |
| comprese le pavimentazioni, con gli oneri e le prescrizio ... e del materiale e la sua miscelazione con altro materiale. | material |  | 8.37 |
| Con granulometria continua, compresa la fornitura del mat ... etta regola d'arte misurato in opera dopo il costipamento. | material |  | 27.5 |
| Fornitura e stesa (compresi ogni onere e spese) di geotes ... le due direzioni ortogonali e Jsec al 5% di deformazione. | material |  | 2.76 |
| MISCELE BITUMINOSE DIVERSE DA QUELLE DI CUI ALLA VOCE "17 03 01" Provenienti dalle attività di costruzione e demolizione. ... ione. Compreso il terreno proveniente da siti contaminati. | material |  | 10 |
| TERRA E ROCCE, DIVERSE DA QUELLE DI CUI ALLA VOCE 17 05 03 Provenienti dalle attività di costruzione e demolizione. ... ione. Compreso il terreno proveniente da siti contaminati. | material |  | 8 |
| Dal perimetro del lotto con autocarro, per ogni mc e km. ... metrico o misurato in banco per il solo viaggio di andata. | material | mc x km |  |
| Fornitura in cantiere di materiali per la formazione di r ... ale e tutti gli altri oneri indicati nelle norme tecniche. | material |  | 28.44 |
| Ovvero di frantumati di roccia o smarino di galleria, di ... ne ed onere per dare il rilevato a perfetta regola d'arte. | material | mc | 1 |
| Compreso l'onere della fornitura del legante da dosare, s ... (calce e/o cemento) con le terre da stabilizzare in sito. | material |  | 12.35 |
| Demolizione a sezione obbligata eseguita in qualsiasi dim ... demolizione vada ad interessare i vincoli delle strutture. | material | mc | 140 |
| Entro e fuori terra con i mezzi che l'impresa sceglierà i ... rata sulla struttura da demolire per l'effettiva cubatura. | material |  | 23.84 |
| anche a campioni di qualsiasi lunghezza, in materie di qu ... superiori a 0,5 mc, nonché le murature a calce o cemento. | material |  | 6 |
| Calcestruzzo Magrone 150 kg/mc Confezionato a prestazione garantita fornito a piè d'oper ... esclusi i ponteggi, le casseforme ed il ferro d'armatura. | material |  | 135 |
| CLS Strutturale in Fond. RCK 30 N/mmq A prestazione garantita secondo le UNI EN-206 e UNI 11104 ... o materiale in cantiere, getto, vibrazione e stagionatura. | material |  | 167 |
| CLS Strutturale in Elev. RCK 30 N/mmq A prestazione garantita secondo le UNI EN-206 e UNI 11104 ... o materiale in cantiere, getto, vibrazione e stagionatura. | material |  | 163 |
| Acciaio classe B450C controllato in stabilimento, di qual ... lo sfrido, ecc. Compresa la fornitura e la posa in opera. | material |  | 1.12 |
| CEMENTO Provenienti dalle attività di costruzione e demolizione. ... ione. Compreso il terreno proveniente da siti contaminati. | material | T | 20.5 |
| Fornitura e posa in opera di barriere stradali di sicurez ... istero per dare il lavoro finito a perfetta regola d'arte. | material |  | 216.72 |
| Per strutture in conglomerato cementizio semplice, armato ... , escluse le armature di sostegno oltre i 2 metri di luce. | material |  | 23.43 |
| Eseguiti con perforazione a percussione o rotopercussione ... alo misurato secondo le prescrizioni delle Norme Tecniche. | material |  | 219.99 |
| Sotto il piano di sbancamento e per ogni 2,00 m o frazioni di 2,00 m superanti la suddetta profondità. | material |  | 2 |
| Di cavi o a precarica di rilevati, senza compattamento me ... e, terreno ed elementi vegetali ecc.) ed ogni altro onere. | material |  | 0.83 |
| CLS Strutturale in Elev. RCK 40 N/mmq A prestazione garantita secondo le UNI EN-206 e UNI 11104 ... o materiale in cantiere, getto, vibrazione e stagionatura. | material |  | 220 |
| Sovrapprezzo alla voce di armature per casseforme di stru ... maggiorazione di essa per seguire le linee curve disposte. | material |  | 21.94 |
| Il ripristino localizzato di barriere incidentate, avvien ... ti, devono essere conservati per un successivo riutilizzo. | material | ml | 5.93 |
| MISCELE BITUMINOSE CONTENENTI CATRAME DI CARBONE Provenienti dalle attività di costruzione e demolizione. ... ione. Compreso il terreno proveniente da siti contaminati. | material |  | 32.72 |
| Semplice o armato, di superfici in acciaio ecc., eseguita ... , la stuccatura e simili non sono compresi in questa voce. | material |  | 24.47 |
| O c.a.p. per alloggiamento di bocchettoni o tubi per emun ... er ogni foro. Per fori di lunghezza non superiore a cm 50. | material |  | 50.04 |
| Complesso di bocchetta per la raccolta e lo scarico di ac ... one ed il loro avvio alla caditoia di scarico delle acque. | material |  | 97.77 |
| Realizzati con tubazioni PVC ad alta durabilità di diamet ... i costruzione dell'impalcato che a completamento avvenuto. | material |  | 14.65 |
| Fornitura e posa in opera di conglomerato bituminoso per ... tteristiche rispondenti al CSA. PER METRO CUBO COMPATTATO. | material |  | 216.25 |
| Fornitura e posa in opera di conglomerato bituminoso per ... tteristiche rispondenti al CSA. PER METRO CUBO COMPATTATO. | material |  | 228.47 |
| Fornitura e spruzzatura di mano di ancoraggio o di attacc ... onere per una corretta e omogenea spruzzatura del legante. | material |  | 1.14 |
| Avente le caratteristiche tecniche prescritte dal Capitol ... iunti o appoggi. Compresa la fornitura e la posa in opera. | material |  | 3.64 |
| Lavori d'inghisaggio appoggi mediante applicazioni di mal ... necessari per l'esecuzione e l'accesso al posto di lavoro. | material |  | 348.58 |
| Fornitura e posa in opera di isolatori elastomerici - mar ... atta salva la riduzione per il volume eccedente i 120 dmc. | material |  | 69.41 |
| Per impalcati di ponti e viadotti realizzato con elementi ... ta regola d'arte. PER ESCURSIONI TRASVERSALI FINO A 50 MM. | material |  | 1784.57 |
| Di cui alla voce precedente. PER ESCURSIONI TRASVERSALI OLTRE A 50 MM. | material |  |  |
| Fornitura e posa in opera di giunto adatto ad assorbire s ... a perfetta regola d'arte secondo le indicazioni della D.L. | material |  | 592.84 |
| Per disallineamento verticale adottato nei collegamenti t ... pera compresi tutti i magisteri e le forniture necessarie. | material |  | 1109.35 |
| Fornitura e posa in opera di barriere stradali di sicurez ... istero per dare il lavoro finito a perfetta regola d'arte. | material |  | 165 |
| Rispondente al D.M. 21.06.04 di lunghezza minima di 40 ml ... ico fissa. Per ogni metro effettivo di barriera amovibile. | material |  | 1200.33 |
| Fornitura e stesa di terreno vegetale per la formazione d ... sferimento dallo scavo al sito di collocazione definitiva. | material | mc | 22 |
| Con semi da prato compresi semi di trifoglio repens compr ... dare il lavoro finito e completo a perfetta regola d'arte. | material |  | 2.5 |
| Le piante devono essere complete di certificato di proven ... mazione, la garanzia di attecchimento ed ogni altro onere. | material |  | 5.46 |
| Le piante devono essere complete di certificato di proven ... affiamento, garanzia di attecchimento ed ogni altro onere. | material |  | 5.46 |
| Le piante devono essere complete di certificato di proven ... affiamento, garanzia di attecchimento ed ogni altro onere. | material |  | 5.46 |
| CLS Strutturale in Elev. RCK 45 N/mmq A prestazione garantita secondo le UNI EN-206 e UNI 11104 ... o materiale in cantiere, getto, vibrazione e stagionatura. | material |  | 220 |
| Avente le caratteristiche tecniche prescritte dal Capitol ... iunti o appoggi. Compresa la fornitura e la posa in opera. | material |  | 9.23 |
| Demolizione integrale di impalcati Di opere d'arte o parti intere di strutture in c.a. o c.a ... aggio del traffico e l'onere della segnaletica necessaria. | material | mc | 141.46 |
| Rimozione ed asporto di appoggi da sostituire, a sollevam ... necessari per l'esecuzione e l'accesso al posto di lavoro. | material | cad | 72.9 |
| STRUTTURE IN ACCIAIO Per l'esecuzione di strutture di ponti o viadotti, dato i ... per dare compiuta la lavorazione a perfetta regola d'arte. | material |  | 2.77 |
| Confezionata con conglomerato cementizio vibrato con Rck ... uto della soletta i volumi di calcestruzzo della coppella. | material |  | 62.15 |
| Metallica o in legname, costruita anche a sbalzo a sosteg ... di gallerie artificiali per altezze medie fino a 10 metri. | material |  | 13.52 |
| Compresa la fornitura e la posa in opera; - rivestiti con ... giunti. Esclusi eventuali ponteggi da computarsi a parte. | material |  | 48.5 |
| COS - SQUADRA 8 OPERAI | labor |  |  |
| CAVI, DIVERSI DA QUELLI DI CUI ALLA VOCE "17 04 10" Provenienti dalle attività di costruzione e demolizione. ... ione. Compreso il terreno proveniente da siti contaminati. | material | T | 10 |
| FERRO E ACCIAIO Provenienti dalle attività di costruzione e demolizione. ... ione. Compreso il terreno proveniente da siti contaminati. | material | T | 10 |
| PLASTICA Provenienti dalle attività di costruzione e demolizione. ... ione. Compreso il terreno proveniente da siti contaminati. | material | T | 350 |
| Di qualunque dimensione su solette esistenti, eseguita co ... di risulta compreso l'onere per l'indennità di discarica. | material | ml | 25 |
| Mediante l'asportazione con adeguati mezzi demolitori ad ... ccorra per dare il lavoro finito a perfetta regola d'arte. | material | ml | 71.46 |
| Fornitura in cantiere di materiali per la formazione di r ... ale e tutti gli altri oneri indicati nelle norme tecniche. | material |  | 22.5 |
| CLS non strutturale RCK 30 N/mmq A prestazione garantita secondo le UNI EN-206 e UNI 11104 ... o materiale in cantiere, getto, vibrazione e stagionatura. | material |  | 150 |
| in fili d'acciaio, rispondente alle caratteristiche di cu ... tture rivestite. Compresa la fornitura e la posa in opera. | material |  | 1.03 |
| I lavori di demolizione dovranno procedere in maniera da ... erfetta regola d’arte e secondo le disposizioni della D.L. | material |  | 0.97 |
| Misurato in opera dopo il compattamento. | material |  | 38.8 |
| Completi di organi di giunzione (bulloni, dadi, rivetti, ganci, ecc.). Compresa fornitura e posa in opera. | material |  | 3.09 |
| Compreso lo scavo e lo scotico per una profondità media d ... teriali stessi. Appartenenti ai gruppi A1, A2-4, A2-5, A3. | material | mc | 2.5 |
| Da eseguirsi nel rispetto della normativa vigente, dato i ... ggio. A mq, per tutto il tempo di utilizzo del ponteggio. | material |  | 9 |
| CNR-BU 146. | material |  | 56.9 |
| Idrodemolizione su intradossi di impalcati di opere d'art ... necessari per l'esecuzione e l'accesso al posto di lavoro. | material |  | 35.41 |
| Delle superfici in calcetruzzo di opere d'arte e/o manufa ... ccorrenti. Per ogni metro quadrato di superficie trattata. | material |  | 3.5 |
| Comprendente: - la raddrizzatura ed il riposizionamento d ... oi ai nuovi lavori. Per ogni metro quadrato di intervento. | material |  | 2.16 |
| Eseguita mediante applicazione di malta cementizia monoco ... nibitori di corrosione e dispersione di polimeri acrilici. | material |  | 2.16 |
| Composto da resina chimica e barra ad aderenza migliorata ... a 4 ÷6 mm del diametro della barra e comunque secondo ETA. | material |  | 0.25 |
| in fili d'acciaio, rispondente alle caratteristiche di cu ... tture rivestite. Compresa la fornitura e la posa in opera. | material |  | 1.03 |
| Per l'ancoraggio di nuovi getti, compreso l'esecuzione de ... e solo esclusa la fornitura di ganci e/o barre di acciaio. | material |  | 6.5 |
| Fornitura e posa in opera di malta ad espansione contrast ... sati nel prezzo per dare il lavoro finito a regola d’arte. | material |  | 23 |
| Fornitura e posa in opera di malta ad espansione contrast ... sati nel prezzo per dare il lavoro finito a regola d’arte. | material |  | 50.5 |
| L’applicazione della malta dovrà essere effettuata previa ... are in opera un paramento perfettamente rasato e lisciato. | material |  | 27.85 |
| Sovrapprezzo CLS per Ritiro Compensato Da applicare alle voci di Elenco Prezzi dei cls per quals ... relativi controlli aggiuntivi (tipo § 7.2 NTC sez 2 CSA). | material |  |  |
| Sovrapprezzo CLS per SCC Da applicare alle voci di Elenco Prezzi dei cls per qualsiasi classe di resistenza. | material |  |  |
| Compreso ogni onere per la demolizione eventuale taglio c ... per carico, trasporto e scarico dei pali ai depositi ANAS. | material |  | 115.29 |
| RIMOZIONE DI ARMATURA COMPRESI GLI ACCESSORI ELETTRICI | material |  | 35.4 |
| Conforme CEI EN 61386 Per cavidotto e per la protezione d ... rati. Con marchio IMQ. Compresa fornitura e posa in opera. | material |  | 11.22 |
| In terreno di qualsiasi natura e consistenza delle dimens ... compreso ogni onere per il rinterro e quant'altro occorra. | material |  | 4.29 |
| Conforme alla norma UNI EN 1917. Fornitura e posa in ope ... essari per dare il lavoro finito a perfetta regola d'arte. | material |  | 39.34 |
| Conforme alle norma UNI EN 1917. Fornitura e posa in oper ... usino/coperchio da pagarsi con le relative voci di elenco. | material |  | 60.33 |
| Fornitura e posa in opera di chiusino, posato su pozzetti ... a perfetta regola d'arte. Conforme alla norma UNI EN 1563. | material |  | 176.47 |
| Con diametro in sommità 60 mm, stampato e saldato in long ... di derivazione. Compresa la fornitura e la posa in opera. | material |  | 280.18 |
| Fornitura e posa in opera di plinto prefabbricato in cls ... dello scavo e il ripristino dei fianchi con terreno arido. | material |  | 440.11 |

## Schedule

| ID | WBS | Activity | Type | Duration | Start | Finish | Predecessors | Total float | Free float | Constraint | Resources | Cost | CPM WBS | COSTI DIRETTI | COSTI INDIRETTI |
| --- | --- | --- | --- | --- | --- | --- | --- | --- | --- | --- | --- | --- | --- | --- | --- |
| 2 |  | Verbale di consegna | milestone | 0d | 2024-11-18 | 2024-11-18 |  | 0d |  | start on or after 2024-11-18 |  |  |  |  |  |
| 3 |  | Chiusura carreggiata DIR. PA-CT -Apertura al traffico carreggiata DIR. CT-PA con una corsia per senso di marcia | milestone | 0d | 2024-11-18 | 2024-11-18 | 2 | 0d |  |  |  |  |  |  |  |
| 4 |  | Inzio attività | milestone | 0d | 2024-11-18 | 2024-11-18 |  | 0d |  |  |  |  |  |  |  |
| 5 |  | Autorizzazione al Subappalto per Scarificatura | milestone | 0d | 2024-11-18 | 2024-11-18 |  | 48d |  |  |  |  |  |  |  |
| 34 |  | Fine progetto da Contratto | milestone | 0d | 2027-05-12 | 2027-05-12 | 268, 262 FF, 63 FF, 96 FF, A1010 FF, A1030 FF, 32 FF, 10 FF, 1768 FF | 0d |  | finish on 2027-05-12 |  |  |  |  |  |
|  | 001 | **OPERE PROPEDEUTICHE AL LAVORO** |  |  | 2024-11-18 | 2026-09-28 |  |  |  |  |  |  |  |  |  |
| 7 |  | Allestimento Campo base e aree tecniche |  | 30d | 2024-11-18 | 2024-12-27 | 3, 4 | 0d |  |  |  |  |  |  |  |
| 8 |  | Segnaletica e delimitazioni di sicurezza |  | 20d | 2024-11-26 | 2024-12-23 | 7 SS+6d | 492d | 0d |  |  |  |  |  |  |
|  | 017 | **Guadi A** |  |  | 2026-05-11 | 2026-09-28 |  |  |  |  |  |  |  |  |  |
| 10 |  | Guadi A - a servizio pista pile 5 e 6 |  | 100d | 2026-05-11 | 2026-09-28 | 9 SS+20d, 278 | 157d |  |  | Scavo di sbancamento …..anche a campioni di qualsiasi lunghezza, a mano o con mez ... realizzazione della lavorazione a perfetta regola d'arte. [1807 mc]; Dal perimetro del lotto con autocarro, per ogni mc e km. ... metrico o misurato in banco per il solo viaggio di andata. [39168.8 mc x km]; Fornitura in cantiere di materiali per la formazione di r ... ale e tutti gli altri oneri indicati nelle norme tecniche. [1425.87]; Ovvero di frantumati di roccia o smarino di galleria, di ... ne ed onere per dare il rilevato a perfetta regola d'arte. [2552 mc]; Compreso l'onere della fornitura del legante da dosare, s ... (calce e/o cemento) con le terre da stabilizzare in sito. [190]; Demolizione a sezione obbligata eseguita in qualsiasi dim ... demolizione vada ad interessare i vincoli delle strutture. [68 mc]; Entro e fuori terra con i mezzi che l'impresa sceglierà i ... rata sulla struttura da demolire per l'effettiva cubatura. [84.94]; anche a campioni di qualsiasi lunghezza, in materie di qu ... superiori a 0,5 mc, nonché le murature a calce o cemento. [322.24]; Calcestruzzo Magrone 150 kg/mc Confezionato a prestazione garantita fornito a piè d'oper ... esclusi i ponteggi, le casseforme ed il ferro d'armatura. [61.06]; CLS Strutturale in Fond. RCK 30 N/mmq A prestazione garantita secondo le UNI EN-206 e UNI 11104 ... o materiale in cantiere, getto, vibrazione e stagionatura. [223.23]; CLS Strutturale in Elev. RCK 30 N/mmq A prestazione garantita secondo le UNI EN-206 e UNI 11104 ... o materiale in cantiere, getto, vibrazione e stagionatura. [216.19]; Acciaio classe B450C controllato in stabilimento, di qual ... lo sfrido, ecc. Compresa la fornitura e la posa in opera. [88250]; CEMENTO Provenienti dalle attività di costruzione e demolizione. ... ione. Compreso il terreno proveniente da siti contaminati. [381.16 T]; TERRA E ROCCE, DIVERSE DA QUELLE DI CUI ALLA VOCE 17 05 03 Provenienti dalle attività di costruzione e demolizione. ... ione. Compreso il terreno proveniente da siti contaminati. [3133.5]; Fornitura e posa in opera di barriere stradali di sicurez ... istero per dare il lavoro finito a perfetta regola d'arte. [80]; Per strutture in conglomerato cementizio semplice, armato ... , escluse le armature di sostegno oltre i 2 metri di luce. [628.98]; Per strutture in conglomerato cementizio semplice, armato ... , escluse le armature di sostegno oltre i 2 metri di luce. [130.78] | 382,697.76 | 001.017 | 331986.799948044 | 61207.2716645379 |
|  | 018 | **Guadi B** |  |  | 2025-12-16 | 2026-05-08 |  |  |  |  |  |  |  |  |  |
| 278 |  | Guadi B - a servizio pista pile 9 e 10 |  | 100d | 2025-12-16 | 2026-05-08 | 288 | 157d | 0d |  | Scavo di sbancamento …..anche a campioni di qualsiasi lunghezza, a mano o con mez ... realizzazione della lavorazione a perfetta regola d'arte. [1807 mc]; Dal perimetro del lotto con autocarro, per ogni mc e km. ... metrico o misurato in banco per il solo viaggio di andata. [41604 mc x km]; Fornitura in cantiere di materiali per la formazione di r ... ale e tutti gli altri oneri indicati nelle norme tecniche. [1523.28]; Ovvero di frantumati di roccia o smarino di galleria, di ... ne ed onere per dare il rilevato a perfetta regola d'arte. [2086 mc]; Compreso l'onere della fornitura del legante da dosare, s ... (calce e/o cemento) con le terre da stabilizzare in sito. [190]; Demolizione a sezione obbligata eseguita in qualsiasi dim ... demolizione vada ad interessare i vincoli delle strutture. [67.52 mc]; Entro e fuori terra con i mezzi che l'impresa sceglierà i ... rata sulla struttura da demolire per l'effettiva cubatura. [84.94]; anche a campioni di qualsiasi lunghezza, in materie di qu ... superiori a 0,5 mc, nonché le murature a calce o cemento. [322.24]; Calcestruzzo Magrone 150 kg/mc Confezionato a prestazione garantita fornito a piè d'oper ... esclusi i ponteggi, le casseforme ed il ferro d'armatura. [61.06]; CLS Strutturale in Fond. RCK 30 N/mmq A prestazione garantita secondo le UNI EN-206 e UNI 11104 ... o materiale in cantiere, getto, vibrazione e stagionatura. [223.23]; CLS Strutturale in Elev. RCK 30 N/mmq A prestazione garantita secondo le UNI EN-206 e UNI 11104 ... o materiale in cantiere, getto, vibrazione e stagionatura. [216.19]; Acciaio classe B450C controllato in stabilimento, di qual ... lo sfrido, ecc. Compresa la fornitura e la posa in opera. [88198]; TERRA E ROCCE, DIVERSE DA QUELLE DI CUI ALLA VOCE 17 05 03 Provenienti dalle attività di costruzione e demolizione. ... ione. Compreso il terreno proveniente da siti contaminati. [3328.32]; Fornitura e posa in opera di barriere stradali di sicurez ... istero per dare il lavoro finito a perfetta regola d'arte. [80]; Per strutture in conglomerato cementizio semplice, armato ... , escluse le armature di sostegno oltre i 2 metri di luce. [130.78]; Per strutture in conglomerato cementizio semplice, armato ... , escluse le armature di sostegno oltre i 2 metri di luce. [628.98] | 380,160.8 | 001.017 | 331986.799948044 | 61207.2716645379 |
|  | 019 | **Guadi C** |  |  | 2025-10-07 | 2025-12-15 |  |  |  |  |  |  |  |  |  |
| 288 |  | Guadi C - a servizio pista pile 26 e 27 |  | 50d | 2025-10-07 | 2025-12-15 | 308 | 157d | 0d |  | Scavo di sbancamento …..anche a campioni di qualsiasi lunghezza, a mano o con mez ... realizzazione della lavorazione a perfetta regola d'arte. [340.87 mc]; Dal perimetro del lotto con autocarro, per ogni mc e km. ... metrico o misurato in banco per il solo viaggio di andata. [5376.75 mc x km]; Fornitura in cantiere di materiali per la formazione di r ... ale e tutti gli altri oneri indicati nelle norme tecniche. [135.98]; Ovvero di frantumati di roccia o smarino di galleria, di ... ne ed onere per dare il rilevato a perfetta regola d'arte. [135.98 mc]; anche a campioni di qualsiasi lunghezza, in materie di qu ... superiori a 0,5 mc, nonché le murature a calce o cemento. [10.18]; Per strutture in conglomerato cementizio semplice, armato ... , escluse le armature di sostegno oltre i 2 metri di luce. [47.57]; Acciaio classe B450C controllato in stabilimento, di qual ... lo sfrido, ecc. Compresa la fornitura e la posa in opera. [305.28]; TERRA E ROCCE, DIVERSE DA QUELLE DI CUI ALLA VOCE 17 05 03 Provenienti dalle attività di costruzione e demolizione. ... ione. Compreso il terreno proveniente da siti contaminati. [430.14]; CLS non strutturale RCK 30 N/mmq A prestazione garantita secondo le UNI EN-206 e UNI 11104 ... o materiale in cantiere, getto, vibrazione e stagionatura. [48.5]; in fili d'acciaio, rispondente alle caratteristiche di cu ... tture rivestite. Compresa la fornitura e la posa in opera. [2149.5]; Misurato in opera dopo il compattamento. [69.1]; Completi di organi di giunzione (bulloni, dadi, rivetti, ganci, ecc.). Compresa fornitura e posa in opera. [4558.8] | 34,940.27 | 001.017 | 331986.799948044 | 61207.2716645379 |
|  | 020 | **Guadi D** |  |  | 2024-11-26 | 2025-05-19 |  |  |  |  |  |  |  |  |  |
| 298 |  | Guadi D - a servizio pista pile 53 e 54 |  | 125d | 2024-11-26 | 2025-05-19 | 318 SS+4d | 157d | 0d |  | Scavo di sbancamento …..anche a campioni di qualsiasi lunghezza, a mano o con mez ... realizzazione della lavorazione a perfetta regola d'arte. [8052.15 mc]; Dal perimetro del lotto con autocarro, per ogni mc e km. ... metrico o misurato in banco per il solo viaggio di andata. [145063 mc x km]; Ovvero di frantumati di roccia o smarino di galleria, di ... ne ed onere per dare il rilevato a perfetta regola d'arte. [6629.33 mc]; Entro e fuori terra con i mezzi che l'impresa sceglierà i ... rata sulla struttura da demolire per l'effettiva cubatura. [393.93]; anche a campioni di qualsiasi lunghezza, in materie di qu ... superiori a 0,5 mc, nonché le murature a calce o cemento. [75.36]; Per strutture in conglomerato cementizio semplice, armato ... , escluse le armature di sostegno oltre i 2 metri di luce. [290.59]; Acciaio classe B450C controllato in stabilimento, di qual ... lo sfrido, ecc. Compresa la fornitura e la posa in opera. [2260.8]; CEMENTO Provenienti dalle attività di costruzione e demolizione. ... ione. Compreso il terreno proveniente da siti contaminati. [984.83 T]; TERRA E ROCCE, DIVERSE DA QUELLE DI CUI ALLA VOCE 17 05 03 Provenienti dalle attività di costruzione e demolizione. ... ione. Compreso il terreno proveniente da siti contaminati. [11605]; CLS non strutturale RCK 30 N/mmq A prestazione garantita secondo le UNI EN-206 e UNI 11104 ... o materiale in cantiere, getto, vibrazione e stagionatura. [393.93]; in fili d'acciaio, rispondente alle caratteristiche di cu ... tture rivestite. Compresa la fornitura e la posa in opera. [8771.11]; I lavori di demolizione dovranno procedere in maniera da ... erfetta regola d’arte e secondo le disposizioni della D.L. [93513.6]; Misurato in opera dopo il compattamento. [874.8]; FERRO E ACCIAIO Provenienti dalle attività di costruzione e demolizione. ... ione. Compreso il terreno proveniente da siti contaminati. [93.51 T]; Completi di organi di giunzione (bulloni, dadi, rivetti, ganci, ecc.). Compresa fornitura e posa in opera. [93513.6]; Fornitura in cantiere di materiali per la formazione di r ... ale e tutti gli altri oneri indicati nelle norme tecniche. [4304.33] | 775,825.7 | 001.017 | 331986.799948044 | 61207.2716645379 |
|  | 021 | **Guado E** |  |  | 2025-05-20 | 2025-10-06 |  |  |  |  |  |  |  |  |  |
| 308 |  | Guado E - tra pile 70 e 71 |  | 100d | 2025-05-20 | 2025-10-06 | 298 | 157d | 0d |  | Scavo di sbancamento …..anche a campioni di qualsiasi lunghezza, a mano o con mez ... realizzazione della lavorazione a perfetta regola d'arte. [5280.66 mc]; Fornitura in cantiere di materiali per la formazione di r ... ale e tutti gli altri oneri indicati nelle norme tecniche. [2079.94]; Dal perimetro del lotto con autocarro, per ogni mc e km. ... metrico o misurato in banco per il solo viaggio di andata. [51016 mc x km]; Ovvero di frantumati di roccia o smarino di galleria, di ... ne ed onere per dare il rilevato a perfetta regola d'arte. [3542.44 mc]; Entro e fuori terra con i mezzi che l'impresa sceglierà i ... rata sulla struttura da demolire per l'effettiva cubatura. [133.44]; anche a campioni di qualsiasi lunghezza, in materie di qu ... superiori a 0,5 mc, nonché le murature a calce o cemento. [7.8]; CLS non strutturale RCK 30 N/mmq A prestazione garantita secondo le UNI EN-206 e UNI 11104 ... o materiale in cantiere, getto, vibrazione e stagionatura. [133.44]; Per strutture in conglomerato cementizio semplice, armato ... , escluse le armature di sostegno oltre i 2 metri di luce. [55.38]; Acciaio classe B450C controllato in stabilimento, di qual ... lo sfrido, ecc. Compresa la fornitura e la posa in opera. [234]; in fili d'acciaio, rispondente alle caratteristiche di cu ... tture rivestite. Compresa la fornitura e la posa in opera. [7433.18]; I lavori di demolizione dovranno procedere in maniera da ... erfetta regola d’arte e secondo le disposizioni della D.L. [16286]; Misurato in opera dopo il compattamento. [514.07]; CEMENTO Provenienti dalle attività di costruzione e demolizione. ... ione. Compreso il terreno proveniente da siti contaminati. [333.6 T]; FERRO E ACCIAIO Provenienti dalle attività di costruzione e demolizione. ... ione. Compreso il terreno proveniente da siti contaminati. [16.29 T]; TERRA E ROCCE, DIVERSE DA QUELLE DI CUI ALLA VOCE 17 05 03 Provenienti dalle attività di costruzione e demolizione. ... ione. Compreso il terreno proveniente da siti contaminati. [4081.28]; Completi di organi di giunzione (bulloni, dadi, rivetti, ganci, ecc.). Compresa fornitura e posa in opera. [16286] | 245,367.37 | 001.021 | 331986.799948044 | 61207.2716645379 |
|  | 022 | **Nuove rampe di collegamento** |  |  | 2024-11-20 | 2025-01-28 |  |  |  |  |  |  |  |  |  |
| 318 |  | Viabilità di cantiere |  | 50d | 2024-11-20 | 2025-01-28 | 4 SS+2d | 51d | 0d |  | Scavo di sbancamento …..anche a campioni di qualsiasi lunghezza, a mano o con mez ... realizzazione della lavorazione a perfetta regola d'arte. [1111.53 mc]; Dal perimetro del lotto con autocarro, per ogni mc e km. ... metrico o misurato in banco per il solo viaggio di andata. [27788.2 mc x km]; Fornitura in cantiere di materiali per la formazione di r ... ale e tutti gli altri oneri indicati nelle norme tecniche. [5774.13]; Fornitura e stesa di terreno vegetale per la formazione d ... sferimento dallo scavo al sito di collocazione definitiva. [379.05 mc]; Ovvero di frantumati di roccia o smarino di galleria, di ... ne ed onere per dare il rilevato a perfetta regola d'arte. [5774.13 mc]; Di cavi o a precarica di rilevati, senza compattamento me ... e, terreno ed elementi vegetali ecc.) ed ogni altro onere. [379.05]; Con granulometria continua, compresa la fornitura del mat ... etta regola d'arte misurato in opera dopo il costipamento. [2215.99]; TERRA E ROCCE, DIVERSE DA QUELLE DI CUI ALLA VOCE 17 05 03 Provenienti dalle attività di costruzione e demolizione. ... ione. Compreso il terreno proveniente da siti contaminati. [2223.06]; Compreso lo scavo e lo scotico per una profondità media d ... teriali stessi. Appartenenti ai gruppi A1, A2-4, A2-5, A3. [5073.04 mc] | 251,082.95 | 001.023 |  |  |
|  | 023 | **Viabilita di Cantiere** |  |  | 2024-12-24 | 2025-02-10 |  |  |  |  |  |  |  |  |  |
| 9 |  | Realizzazione piste di cantiere, viabilità e risoluzioni interferenze |  | 35d | 2024-12-24 | 2025-02-10 | 8 | 492d | 0d |  | Scavo di sbancamento …..anche a campioni di qualsiasi lunghezza, a mano o con mez ... realizzazione della lavorazione a perfetta regola d'arte. [12662 mc]; comprese le pavimentazioni, con gli oneri e le prescrizio ... e del materiale e la sua miscelazione con altro materiale. [12662]; Con granulometria continua, compresa la fornitura del mat ... etta regola d'arte misurato in opera dopo il costipamento. [12662]; Fornitura e stesa (compresi ogni onere e spese) di geotes ... le due direzioni ortogonali e Jsec al 5% di deformazione. [31655]; MISCELE BITUMINOSE DIVERSE DA QUELLE DI CUI ALLA VOCE "17 03 01" Provenienti dalle attività di costruzione e demolizione. ... ione. Compreso il terreno proveniente da siti contaminati. [16460.6]; TERRA E ROCCE, DIVERSE DA QUELLE DI CUI ALLA VOCE 17 05 03 Provenienti dalle attività di costruzione e demolizione. ... ione. Compreso il terreno proveniente da siti contaminati. [25324] | 984,723.74 | 001.022 |  |  |
|  | 01 | **BY-PASS - TRA PILA 58 E PILA 60 FASE 01** |  |  |  |  |  |  |  |  |  |  |  |  |  |
|  | 002 | **DECOSTRUZIONE E RICOSTRUZONE IMPALCATO A 3 TRAVI CARREGGIATA PA-CT** |  |  | 2024-12-30 | 2027-04-16 |  |  |  |  |  |  |  |  |  |
|  | 001 | **DEMOLIZIONI** |  |  | 2024-12-30 | 2025-11-07 |  |  |  |  |  |  |  |  |  |
| 26 |  | Demolizione travi-soletta- cordolo 59-60 |  | 20d | 2025-05-20 | 2025-06-16 | 69 SS+5d | 17d | 0d |  |  |  | 002.001 | 3615118.15913667 | 666506.924750503 |

Notes:
- 2: Expenses: Verbale di consegna - (cost) 0
- 3: Expenses: Chiusura carreggiata DIR. PA-CT -Apertura al traffico carreggiata DIR. CT-PA con una corsia per senso di marcia - (cost) 0
- 4: Expenses: Inzio attività - (cost) 0
- 5: Expenses: Autorizzazione al Subappalto per Scarificatura - (cost) 0

| ID | WBS | Activity | Duration | Start | Finish | Predecessors | Total float | Free float | Resources | Cost |
| --- | --- | --- | --- | --- | --- | --- | --- | --- | --- | --- |
|  | 1 | **DEMOLIZIONE VECCHIO PROGRAMMA** |  | 2024-12-30 | 2025-11-07 |  |  |  |  |  |
|  | 1 | **IMPALCATO A 3 TRAVI- Campata da 76 a 56** |  | 2024-12-30 | 2025-08-26 |  |  |  |  |  |
| 36 |  | Rimozione della barriere stradali 76 - 56 | 23d | 2024-12-30 | 2025-01-29 | 7 | 0d |  | Il ripristino localizzato di barriere incidentate, avvien ... ti, devono essere conservati per un successivo riutilizzo. [2031.07 ml] | 11,787.96 |
| 37 |  | Scarificazione della pavimentazione stradale esistente da Campata 76 a 56 | 10d | 2025-01-30 | 2025-02-12 | 5 FS+5d, 36, 318 SS | 0d |  | comprese le pavimentazioni, con gli oneri e le prescrizio ... e del materiale e la sua miscelazione con altro materiale. [1126.22]; MISCELE BITUMINOSE CONTENENTI CATRAME DI CARBONE Provenienti dalle attività di costruzione e demolizione. ... ione. Compreso il terreno proveniente da siti contaminati. [2477.69] | 88,570.91 |
| 38 |  | Rimozione giunti da Campata 76 a 56 | 40d | 2025-01-30 | 2025-03-26 | 37 SS | 0d |  | Di qualunque dimensione su solette esistenti, eseguita co ... di risulta compreso l'onere per l'indennità di discarica. [218.86 ml]; Mediante l'asportazione con adeguati mezzi demolitori ad ... ccorra per dare il lavoro finito a perfetta regola d'arte. [218.86 ml] | 20,662 |
|  | 4 | **Demolizione impalcato esistente e rimozione apparecchi di appoggio 76 - 56** |  | 2025-02-13 | 2025-08-26 |  |  |  |  |  |
| 40 |  | Demolizione impalcato esistente e rimozione apparecchi di appoggio Campata 76 | 3d | 2025-02-13 | 2025-02-17 | 38 SS+10d | 0d |  | Demolizione integrale di impalcati Di opere d'arte o parti intere di strutture in c.a. o c.a ... aggio del traffico e l'onere della segnaletica necessaria. [132.72 mc]; Rimozione ed asporto di appoggi da sostituire, a sollevam ... necessari per l'esecuzione e l'accesso al posto di lavoro. [3.07 cad]; COS - SQUADRA 8 OPERAI [320 h]; Demolizione a sezione obbligata eseguita in qualsiasi dim ... demolizione vada ad interessare i vincoli delle strutture. [0.05 mc] | 18,602 |
| 41 |  | Demolizione impalcato esistente e rimozione apparecchi di appoggio Campata 75 | 3d | 2025-02-18 | 2025-02-20 | 40 | 0d |  | Demolizione integrale di impalcati Di opere d'arte o parti intere di strutture in c.a. o c.a ... aggio del traffico e l'onere della segnaletica necessaria. [132.72 mc]; Rimozione ed asporto di appoggi da sostituire, a sollevam ... necessari per l'esecuzione e l'accesso al posto di lavoro. [3.07 cad]; Demolizione a sezione obbligata eseguita in qualsiasi dim ... demolizione vada ad interessare i vincoli delle strutture. [0.06 mc] | 19,005.87 |
| 42 |  | Demolizione impalcato esistente e rimozione apparecchi di appoggio Campata 74 | 3d | 2025-02-21 | 2025-02-25 | 41 | 0d |  | Demolizione integrale di impalcati Di opere d'arte o parti intere di strutture in c.a. o c.a ... aggio del traffico e l'onere della segnaletica necessaria. [132.72 mc]; Rimozione ed asporto di appoggi da sostituire, a sollevam ... necessari per l'esecuzione e l'accesso al posto di lavoro. [3.07 cad]; Demolizione a sezione obbligata eseguita in qualsiasi dim ... demolizione vada ad interessare i vincoli delle strutture. [0.06 mc] | 19,005.87 |
| 43 |  | Demolizione impalcato esistente e rimozione apparecchi di appoggio Campata 73 | 3d | 2025-02-26 | 2025-02-28 | 42 | 0d |  | Demolizione integrale di impalcati Di opere d'arte o parti intere di strutture in c.a. o c.a ... aggio del traffico e l'onere della segnaletica necessaria. [132.72 mc]; Rimozione ed asporto di appoggi da sostituire, a sollevam ... necessari per l'esecuzione e l'accesso al posto di lavoro. [3.07 cad]; Demolizione a sezione obbligata eseguita in qualsiasi dim ... demolizione vada ad interessare i vincoli delle strutture. [0.06 mc] | 19,005.87 |
| 61 |  | Deferrizzazione | 90d | 2025-02-26 | 2025-07-01 | 42 | 436d | 0d | Demolizione integrale di impalcati Di opere d'arte o parti intere di strutture in c.a. o c.a ... aggio del traffico e l'onere della segnaletica necessaria. [1672.32 mc]; Rimozione ed asporto di appoggi da sostituire, a sollevam ... necessari per l'esecuzione e l'accesso al posto di lavoro. [38.62 cad]; Demolizione a sezione obbligata eseguita in qualsiasi dim ... demolizione vada ad interessare i vincoli delle strutture. [0.74 mc] | 239,477.38 |
| 44 |  | Demolizione impalcato esistente e rimozione apparecchi di appoggio Campata 72 | 3d | 2025-03-03 | 2025-03-05 | 43 | 0d |  | Demolizione integrale di impalcati Di opere d'arte o parti intere di strutture in c.a. o c.a ... aggio del traffico e l'onere della segnaletica necessaria. [132.72 mc]; Rimozione ed asporto di appoggi da sostituire, a sollevam ... necessari per l'esecuzione e l'accesso al posto di lavoro. [3.07 cad]; Demolizione a sezione obbligata eseguita in qualsiasi dim ... demolizione vada ad interessare i vincoli delle strutture. [0.06 mc] | 19,005.87 |
| 45 |  | Demolizione impalcato esistente e rimozione apparecchi di appoggio Campata 71 | 3d | 2025-03-06 | 2025-03-10 | 44 | 0d |  | Demolizione integrale di impalcati Di opere d'arte o parti intere di strutture in c.a. o c.a ... aggio del traffico e l'onere della segnaletica necessaria. [132.72 mc]; Rimozione ed asporto di appoggi da sostituire, a sollevam ... necessari per l'esecuzione e l'accesso al posto di lavoro. [3.07 cad]; Demolizione a sezione obbligata eseguita in qualsiasi dim ... demolizione vada ad interessare i vincoli delle strutture. [0.06 mc] | 19,005.87 |
| 46 |  | Demolizione impalcato esistente e rimozione apparecchi di appoggio Campata 70 | 3d | 2025-03-11 | 2025-03-13 | 45 | 0d |  | Demolizione integrale di impalcati Di opere d'arte o parti intere di strutture in c.a. o c.a ... aggio del traffico e l'onere della segnaletica necessaria. [132.72 mc]; Rimozione ed asporto di appoggi da sostituire, a sollevam ... necessari per l'esecuzione e l'accesso al posto di lavoro. [3.07 cad]; Demolizione a sezione obbligata eseguita in qualsiasi dim ... demolizione vada ad interessare i vincoli delle strutture. [0.06 mc] | 19,005.87 |
| 47 |  | Demolizione impalcato esistente e rimozione apparecchi di appoggio Campata 69 | 3d | 2025-03-14 | 2025-03-18 | 46 | 0d |  | Demolizione integrale di impalcati Di opere d'arte o parti intere di strutture in c.a. o c.a ... aggio del traffico e l'onere della segnaletica necessaria. [132.72 mc]; Rimozione ed asporto di appoggi da sostituire, a sollevam ... necessari per l'esecuzione e l'accesso al posto di lavoro. [3.07 cad]; Demolizione a sezione obbligata eseguita in qualsiasi dim ... demolizione vada ad interessare i vincoli delle strutture. [0.06 mc] | 19,005.87 |
| 48 |  | Demolizione impalcato esistente e rimozione apparecchi di appoggio Campata 68 | 3d | 2025-03-19 | 2025-03-21 | 47 | 0d |  | Demolizione integrale di impalcati Di opere d'arte o parti intere di strutture in c.a. o c.a ... aggio del traffico e l'onere della segnaletica necessaria. [132.72 mc]; Rimozione ed asporto di appoggi da sostituire, a sollevam ... necessari per l'esecuzione e l'accesso al posto di lavoro. [3.07 cad]; Demolizione a sezione obbligata eseguita in qualsiasi dim ... demolizione vada ad interessare i vincoli delle strutture. [0.06 mc] | 19,005.87 |
| 49 |  | Demolizione impalcato esistente e rimozione apparecchi di appoggio Campata 67 | 3d | 2025-03-24 | 2025-03-26 | 48 | 0d |  | Demolizione integrale di impalcati Di opere d'arte o parti intere di strutture in c.a. o c.a ... aggio del traffico e l'onere della segnaletica necessaria. [132.72 mc]; Rimozione ed asporto di appoggi da sostituire, a sollevam ... necessari per l'esecuzione e l'accesso al posto di lavoro. [3.07 cad]; Demolizione a sezione obbligata eseguita in qualsiasi dim ... demolizione vada ad interessare i vincoli delle strutture. [0.06 mc] | 19,005.87 |
| 62 |  | Riduzione di volume | 90d | 2025-03-26 | 2025-07-29 | 61 SS+20d | 436d | 0d | Rimozione ed asporto di appoggi da sostituire, a sollevam ... necessari per l'esecuzione e l'accesso al posto di lavoro. [25.75 cad]; Demolizione integrale di impalcati Di opere d'arte o parti intere di strutture in c.a. o c.a ... aggio del traffico e l'onere della segnaletica necessaria. [1114.88 mc]; Demolizione a sezione obbligata eseguita in qualsiasi dim ... demolizione vada ad interessare i vincoli delle strutture. [0.49 mc] | 159,651.89 |
| 50 |  | Demolizione impalcato esistente e rimozione apparecchi di appoggio Campata 66 | 3d | 2025-03-27 | 2025-03-31 | 49 | 0d |  | Demolizione integrale di impalcati Di opere d'arte o parti intere di strutture in c.a. o c.a ... aggio del traffico e l'onere della segnaletica necessaria. [132.72 mc]; Rimozione ed asporto di appoggi da sostituire, a sollevam ... necessari per l'esecuzione e l'accesso al posto di lavoro. [3.07 cad]; Demolizione a sezione obbligata eseguita in qualsiasi dim ... demolizione vada ad interessare i vincoli delle strutture. [0.06 mc] | 19,005.87 |
| 51 |  | Demolizione impalcato esistente e rimozione apparecchi di appoggio Campata 65 | 3d | 2025-04-01 | 2025-04-03 | 50 | 0d |  | Demolizione integrale di impalcati Di opere d'arte o parti intere di strutture in c.a. o c.a ... aggio del traffico e l'onere della segnaletica necessaria. [132.72 mc]; Rimozione ed asporto di appoggi da sostituire, a sollevam ... necessari per l'esecuzione e l'accesso al posto di lavoro. [3.07 cad]; Demolizione a sezione obbligata eseguita in qualsiasi dim ... demolizione vada ad interessare i vincoli delle strutture. [0.06 mc] | 19,005.87 |
| 52 |  | Demolizione impalcato esistente e rimozione apparecchi di appoggio Campata 64 | 3d | 2025-04-04 | 2025-04-08 | 51 | 0d |  | Demolizione integrale di impalcati Di opere d'arte o parti intere di strutture in c.a. o c.a ... aggio del traffico e l'onere della segnaletica necessaria. [132.72 mc]; Rimozione ed asporto di appoggi da sostituire, a sollevam ... necessari per l'esecuzione e l'accesso al posto di lavoro. [3.07 cad]; Demolizione a sezione obbligata eseguita in qualsiasi dim ... demolizione vada ad interessare i vincoli delle strutture. [0.06 mc] | 19,005.87 |
| 53 |  | Demolizione impalcato esistente e rimozione apparecchi di appoggio Campata 63 | 3d | 2025-04-09 | 2025-04-11 | 52 | 0d |  | Demolizione integrale di impalcati Di opere d'arte o parti intere di strutture in c.a. o c.a ... aggio del traffico e l'onere della segnaletica necessaria. [132.72 mc]; Rimozione ed asporto di appoggi da sostituire, a sollevam ... necessari per l'esecuzione e l'accesso al posto di lavoro. [3.07 cad]; Demolizione a sezione obbligata eseguita in qualsiasi dim ... demolizione vada ad interessare i vincoli delle strutture. [0.06 mc] | 19,005.87 |
| 54 |  | Demolizione impalcato esistente e rimozione apparecchi di appoggio Campata 62 | 3d | 2025-04-14 | 2025-04-16 | 53 | 0d |  | Demolizione integrale di impalcati Di opere d'arte o parti intere di strutture in c.a. o c.a ... aggio del traffico e l'onere della segnaletica necessaria. [132.72 mc]; Rimozione ed asporto di appoggi da sostituire, a sollevam ... necessari per l'esecuzione e l'accesso al posto di lavoro. [3.07 cad]; Demolizione a sezione obbligata eseguita in qualsiasi dim ... demolizione vada ad interessare i vincoli delle strutture. [0.06 mc] | 19,005.87 |
| 55 |  | Demolizione impalcato esistente e rimozione apparecchi di appoggio Campata 61 | 3d | 2025-04-17 | 2025-04-21 | 54 | 0d |  | Demolizione integrale di impalcati Di opere d'arte o parti intere di strutture in c.a. o c.a ... aggio del traffico e l'onere della segnaletica necessaria. [132.72 mc]; Rimozione ed asporto di appoggi da sostituire, a sollevam ... necessari per l'esecuzione e l'accesso al posto di lavoro. [3.07 cad]; Demolizione a sezione obbligata eseguita in qualsiasi dim ... demolizione vada ad interessare i vincoli delle strutture. [0.06 mc] | 19,005.87 |
| 56 |  | Demolizione impalcato esistente e rimozione apparecchi di appoggio Campata 60 | 3d | 2025-04-22 | 2025-04-24 | 55 | 0d |  | Demolizione integrale di impalcati Di opere d'arte o parti intere di strutture in c.a. o c.a ... aggio del traffico e l'onere della segnaletica necessaria. [132.72 mc]; Rimozione ed asporto di appoggi da sostituire, a sollevam ... necessari per l'esecuzione e l'accesso al posto di lavoro. [3.07 cad]; Demolizione a sezione obbligata eseguita in qualsiasi dim ... demolizione vada ad interessare i vincoli delle strutture. [0.06 mc] | 19,005.87 |
| 63 |  | Conferimento a discarica | 90d | 2025-04-23 | 2025-08-26 | 62 SS+20d | 436d |  | CAVI, DIVERSI DA QUELLI DI CUI ALLA VOCE "17 04 10" Provenienti dalle attività di costruzione e demolizione. ... ione. Compreso il terreno proveniente da siti contaminati. [177.48 T]; FERRO E ACCIAIO Provenienti dalle attività di costruzione e demolizione. ... ione. Compreso il terreno proveniente da siti contaminati. [1033.74 T]; CEMENTO Provenienti dalle attività di costruzione e demolizione. ... ione. Compreso il terreno proveniente da siti contaminati. [13384.5 T]; PLASTICA Provenienti dalle attività di costruzione e demolizione. ... ione. Compreso il terreno proveniente da siti contaminati. [32.49 T] | 297,865.11 |
| 57 |  | Demolizione impalcato esistente e rimozione apparecchi di appoggio Campata 59 | 3d | 2025-04-25 | 2025-04-29 | 56 | 0d |  | Demolizione integrale di impalcati Di opere d'arte o parti intere di strutture in c.a. o c.a ... aggio del traffico e l'onere della segnaletica necessaria. [132.72 mc]; Rimozione ed asporto di appoggi da sostituire, a sollevam ... necessari per l'esecuzione e l'accesso al posto di lavoro. [3.07 cad]; Demolizione a sezione obbligata eseguita in qualsiasi dim ... demolizione vada ad interessare i vincoli delle strutture. [0.06 mc] | 19,005.87 |
| 58 |  | Demolizione impalcato esistente e rimozione apparecchi di appoggio Campata 58 | 3d | 2025-04-30 | 2025-05-02 | 57 | 0d |  | Demolizione integrale di impalcati Di opere d'arte o parti intere di strutture in c.a. o c.a ... aggio del traffico e l'onere della segnaletica necessaria. [132.72 mc]; Rimozione ed asporto di appoggi da sostituire, a sollevam ... necessari per l'esecuzione e l'accesso al posto di lavoro. [3.07 cad]; Demolizione a sezione obbligata eseguita in qualsiasi dim ... demolizione vada ad interessare i vincoli delle strutture. [0.06 mc] | 19,005.87 |
| 59 |  | Demolizione impalcato esistente e rimozione apparecchi di appoggio Campata 57 | 3d | 2025-05-05 | 2025-05-07 | 58 | 17d | 0d | Demolizione integrale di impalcati Di opere d'arte o parti intere di strutture in c.a. o c.a ... aggio del traffico e l'onere della segnaletica necessaria. [132.72 mc]; Rimozione ed asporto di appoggi da sostituire, a sollevam ... necessari per l'esecuzione e l'accesso al posto di lavoro. [3.07 cad]; Demolizione a sezione obbligata eseguita in qualsiasi dim ... demolizione vada ad interessare i vincoli delle strutture. [0.06 mc] | 19,005.87 |
| 60 |  | Demolizione impalcato esistente e rimozione apparecchi di appoggio Campata 56 | 3d | 2025-05-08 | 2025-05-12 | 59 | 17d | 0d | Demolizione integrale di impalcati Di opere d'arte o parti intere di strutture in c.a. o c.a ... aggio del traffico e l'onere della segnaletica necessaria. [132.72 mc]; Rimozione ed asporto di appoggi da sostituire, a sollevam ... necessari per l'esecuzione e l'accesso al posto di lavoro. [3.07 cad]; Demolizione a sezione obbligata eseguita in qualsiasi dim ... demolizione vada ad interessare i vincoli delle strutture. [0.06 mc] | 19,005.87 |

| ID | WBS | Activity | Duration | Start | Finish | Predecessors | Total float | Free float | Resources | Cost |
| --- | --- | --- | --- | --- | --- | --- | --- | --- | --- | --- |
|  | 2 | **IMPALCATO A 3 TRAVI- Campata da 55 a 31** |  | 2025-01-30 | 2025-11-07 |  |  |  |  |  |
| 65 |  | Rimozione della barriere stradali 55 - 31 | 14d | 2025-01-30 | 2025-02-18 | 36 | 33d | 0d | Il ripristino localizzato di barriere incidentate, avvien ... ti, devono essere conservati per un successivo riutilizzo. [2417.93 ml] | 14,595 |
| 66 |  | Scarificazione della pavimentazione stradale esistente dalla Campata 55 alla 31 | 10d | 2025-02-19 | 2025-03-04 | 37, 65 | 33d | 0d | comprese le pavimentazioni, con gli oneri e le prescrizio ... e del materiale e la sua miscelazione con altro materiale. [1340.74]; MISCELE BITUMINOSE CONTENENTI CATRAME DI CARBONE Provenienti dalle attività di costruzione e demolizione. ... ione. Compreso il terreno proveniente da siti contaminati. [2949.63] | 107,934.44 |
| 67 |  | Rimozione giunti dalla Campata 55 alla 31 | 33d | 2025-03-05 | 2025-04-18 | 66 | 33d | 16d | Di qualunque dimensione su solette esistenti, eseguita co ... di risulta compreso l'onere per l'indennità di discarica. [260.54 ml]; Mediante l'asportazione con adeguati mezzi demolitori ad ... ccorra per dare il lavoro finito a perfetta regola d'arte. [260.54 ml] | 25,281 |
|  | 4 | **Demolizione impalcato esistente e rimozione apparecchi di appoggio 55 - 31** |  | 2025-05-13 | 2025-11-07 |  |  |  |  |  |
| 69 |  | Demolizione impalcato esistente e rimozione apparecchi di appoggio Campata 55 | 3d | 2025-05-13 | 2025-05-15 | 60, 67 | 17d | 0d | Demolizione integrale di impalcati Di opere d'arte o parti intere di strutture in c.a. o c.a ... aggio del traffico e l'onere della segnaletica necessaria. [132.72 mc]; Rimozione ed asporto di appoggi da sostituire, a sollevam ... necessari per l'esecuzione e l'accesso al posto di lavoro. [3.07 cad]; Demolizione a sezione obbligata eseguita in qualsiasi dim ... demolizione vada ad interessare i vincoli delle strutture. [0.06 mc] | 19,006.35 |
| 70 |  | Demolizione impalcato esistente e rimozione apparecchi di appoggio Campata 54 | 3d | 2025-05-16 | 2025-05-20 | 69 | 40.7d | 0d | Demolizione integrale di impalcati Di opere d'arte o parti intere di strutture in c.a. o c.a ... aggio del traffico e l'onere della segnaletica necessaria. [132.72 mc]; Rimozione ed asporto di appoggi da sostituire, a sollevam ... necessari per l'esecuzione e l'accesso al posto di lavoro. [3.07 cad]; Demolizione a sezione obbligata eseguita in qualsiasi dim ... demolizione vada ad interessare i vincoli delle strutture. [0.06 mc] | 19,006.35 |
| 71 |  | Demolizione impalcato esistente e rimozione apparecchi di appoggio Campata 53 | 3d | 2025-05-21 | 2025-05-23 | 70 | 40.7d | 0d | Demolizione integrale di impalcati Di opere d'arte o parti intere di strutture in c.a. o c.a ... aggio del traffico e l'onere della segnaletica necessaria. [132.72 mc]; Rimozione ed asporto di appoggi da sostituire, a sollevam ... necessari per l'esecuzione e l'accesso al posto di lavoro. [3.07 cad]; Demolizione a sezione obbligata eseguita in qualsiasi dim ... demolizione vada ad interessare i vincoli delle strutture. [0.06 mc] | 19,006.35 |
| 72 |  | Demolizione impalcato esistente e rimozione apparecchi di appoggio Campata 52 | 3d | 2025-05-26 | 2025-05-28 | 71 | 144.82d | 0d | Demolizione integrale di impalcati Di opere d'arte o parti intere di strutture in c.a. o c.a ... aggio del traffico e l'onere della segnaletica necessaria. [132.72 mc]; Rimozione ed asporto di appoggi da sostituire, a sollevam ... necessari per l'esecuzione e l'accesso al posto di lavoro. [3.07 cad]; Demolizione a sezione obbligata eseguita in qualsiasi dim ... demolizione vada ad interessare i vincoli delle strutture. [0.06 mc] | 19,006.35 |
| 94 |  | Deferrizzazione | 90d | 2025-05-26 | 2025-09-26 | 71 | 383d | 0d | Demolizione integrale di impalcati Di opere d'arte o parti intere di strutture in c.a. o c.a ... aggio del traffico e l'onere della segnaletica necessaria. [1990.86 mc]; Rimozione ed asporto di appoggi da sostituire, a sollevam ... necessari per l'esecuzione e l'accesso al posto di lavoro. [2.05 cad]; Demolizione a sezione obbligata eseguita in qualsiasi dim ... demolizione vada ad interessare i vincoli delle strutture. [0.88 mc] | 281,889.62 |
| 73 |  | Demolizione impalcato esistente e rimozione apparecchi di appoggio Campata 51 | 3d | 2025-05-29 | 2025-06-02 | 72 | 144.82d | 0d | Demolizione integrale di impalcati Di opere d'arte o parti intere di strutture in c.a. o c.a ... aggio del traffico e l'onere della segnaletica necessaria. [132.72 mc]; Rimozione ed asporto di appoggi da sostituire, a sollevam ... necessari per l'esecuzione e l'accesso al posto di lavoro. [3.07 cad]; Demolizione a sezione obbligata eseguita in qualsiasi dim ... demolizione vada ad interessare i vincoli delle strutture. [0.06 mc] | 19,006.35 |
| 74 |  | Demolizione impalcato esistente e rimozione apparecchi di appoggio Campata 50 | 3d | 2025-06-03 | 2025-06-05 | 73 | 144.82d | 0d | Demolizione integrale di impalcati Di opere d'arte o parti intere di strutture in c.a. o c.a ... aggio del traffico e l'onere della segnaletica necessaria. [132.72 mc]; Rimozione ed asporto di appoggi da sostituire, a sollevam ... necessari per l'esecuzione e l'accesso al posto di lavoro. [3.07 cad]; Demolizione a sezione obbligata eseguita in qualsiasi dim ... demolizione vada ad interessare i vincoli delle strutture. [0.06 mc] | 19,006.35 |
| 75 |  | Demolizione impalcato esistente e rimozione apparecchi di appoggio Campata 49 | 3d | 2025-06-06 | 2025-06-10 | 74 | 176.95d | 0d | Demolizione integrale di impalcati Di opere d'arte o parti intere di strutture in c.a. o c.a ... aggio del traffico e l'onere della segnaletica necessaria. [132.72 mc]; Rimozione ed asporto di appoggi da sostituire, a sollevam ... necessari per l'esecuzione e l'accesso al posto di lavoro. [3.07 cad]; Demolizione a sezione obbligata eseguita in qualsiasi dim ... demolizione vada ad interessare i vincoli delle strutture. [0.06 mc] | 19,006.35 |
| 76 |  | Demolizione impalcato esistente e rimozione apparecchi di appoggio Campata 48 | 3d | 2025-06-11 | 2025-06-13 | 75 | 185.95d | 0d | Demolizione integrale di impalcati Di opere d'arte o parti intere di strutture in c.a. o c.a ... aggio del traffico e l'onere della segnaletica necessaria. [132.72 mc]; Rimozione ed asporto di appoggi da sostituire, a sollevam ... necessari per l'esecuzione e l'accesso al posto di lavoro. [3.07 cad]; Demolizione a sezione obbligata eseguita in qualsiasi dim ... demolizione vada ad interessare i vincoli delle strutture. [0.06 mc] | 19,006.35 |
| 77 |  | Demolizione impalcato esistente e rimozione apparecchi di appoggio Campata 47 | 3d | 2025-06-16 | 2025-06-18 | 76 | 194.95d | 0d | Demolizione integrale di impalcati Di opere d'arte o parti intere di strutture in c.a. o c.a ... aggio del traffico e l'onere della segnaletica necessaria. [132.72 mc]; Rimozione ed asporto di appoggi da sostituire, a sollevam ... necessari per l'esecuzione e l'accesso al posto di lavoro. [3.07 cad]; Demolizione a sezione obbligata eseguita in qualsiasi dim ... demolizione vada ad interessare i vincoli delle strutture. [0.06 mc] | 19,006.35 |
| 95 |  | Riduzione di volume | 90d | 2025-06-16 | 2025-10-17 | 94 SS+15d | 383d | 0d | Rimozione ed asporto di appoggi da sostituire, a sollevam ... necessari per l'esecuzione e l'accesso al posto di lavoro. [30.65 cad]; Demolizione integrale di impalcati Di opere d'arte o parti intere di strutture in c.a. o c.a ... aggio del traffico e l'onere della segnaletica necessaria. [1327.24 mc]; Demolizione a sezione obbligata eseguita in qualsiasi dim ... demolizione vada ad interessare i vincoli delle strutture. [0.59 mc] | 190,061.93 |
| 78 |  | Demolizione impalcato esistente e rimozione apparecchi di appoggio Campata 46 | 3d | 2025-06-19 | 2025-06-23 | 77 | 197.95d | 0d | Demolizione integrale di impalcati Di opere d'arte o parti intere di strutture in c.a. o c.a ... aggio del traffico e l'onere della segnaletica necessaria. [132.72 mc]; Rimozione ed asporto di appoggi da sostituire, a sollevam ... necessari per l'esecuzione e l'accesso al posto di lavoro. [3.07 cad]; Demolizione a sezione obbligata eseguita in qualsiasi dim ... demolizione vada ad interessare i vincoli delle strutture. [0.06 mc] | 19,006.35 |
| 79 |  | Demolizione impalcato esistente e rimozione apparecchi di appoggio Campata 45 | 3d | 2025-06-24 | 2025-06-26 | 78 | 197.95d | 0d | Demolizione integrale di impalcati Di opere d'arte o parti intere di strutture in c.a. o c.a ... aggio del traffico e l'onere della segnaletica necessaria. [132.72 mc]; Rimozione ed asporto di appoggi da sostituire, a sollevam ... necessari per l'esecuzione e l'accesso al posto di lavoro. [3.07 cad]; Demolizione a sezione obbligata eseguita in qualsiasi dim ... demolizione vada ad interessare i vincoli delle strutture. [0.06 mc] | 19,006.35 |
| 80 |  | Demolizione impalcato esistente e rimozione apparecchi di appoggio Campata 44 | 3d | 2025-06-27 | 2025-07-01 | 79 | 197.95d | 0d | Demolizione integrale di impalcati Di opere d'arte o parti intere di strutture in c.a. o c.a ... aggio del traffico e l'onere della segnaletica necessaria. [132.72 mc]; Rimozione ed asporto di appoggi da sostituire, a sollevam ... necessari per l'esecuzione e l'accesso al posto di lavoro. [3.07 cad]; Demolizione a sezione obbligata eseguita in qualsiasi dim ... demolizione vada ad interessare i vincoli delle strutture. [0.06 mc] | 19,006.35 |
| 81 |  | Demolizione impalcato esistente e rimozione apparecchi di appoggio Campata 43 | 3d | 2025-07-02 | 2025-07-04 | 80 | 230.95d | 0d | Demolizione integrale di impalcati Di opere d'arte o parti intere di strutture in c.a. o c.a ... aggio del traffico e l'onere della segnaletica necessaria. [132.72 mc]; Rimozione ed asporto di appoggi da sostituire, a sollevam ... necessari per l'esecuzione e l'accesso al posto di lavoro. [3.07 cad]; Demolizione a sezione obbligata eseguita in qualsiasi dim ... demolizione vada ad interessare i vincoli delle strutture. [0.06 mc] | 19,006.35 |
| 82 |  | Demolizione impalcato esistente e rimozione apparecchi di appoggio Campata 42 | 3d | 2025-07-07 | 2025-07-09 | 81 | 239.95d | 0d | Demolizione integrale di impalcati Di opere d'arte o parti intere di strutture in c.a. o c.a ... aggio del traffico e l'onere della segnaletica necessaria. [132.72 mc]; Rimozione ed asporto di appoggi da sostituire, a sollevam ... necessari per l'esecuzione e l'accesso al posto di lavoro. [3.07 cad]; Demolizione a sezione obbligata eseguita in qualsiasi dim ... demolizione vada ad interessare i vincoli delle strutture. [0.06 mc] | 19,006.35 |
| 96 |  | Conferimento a discarica | 90d | 2025-07-07 | 2025-11-07 | 95 SS+15d | 383d |  | CAVI, DIVERSI DA QUELLI DI CUI ALLA VOCE "17 04 10" Provenienti dalle attività di costruzione e demolizione. ... ione. Compreso il terreno proveniente da siti contaminati. [211.29 T]; FERRO E ACCIAIO Provenienti dalle attività di costruzione e demolizione. ... ione. Compreso il terreno proveniente da siti contaminati. [1230.65 T]; CEMENTO Provenienti dalle attività di costruzione e demolizione. ... ione. Compreso il terreno proveniente da siti contaminati. [15933.9 T]; PLASTICA Provenienti dalle attività di costruzione e demolizione. ... ione. Compreso il terreno proveniente da siti contaminati. [38.68 T] | 354,602.15 |
| 83 |  | Demolizione impalcato esistente e rimozione apparecchi di appoggio Campata 41 | 3d | 2025-07-10 | 2025-07-14 | 82 | 248.95d | 0d | Demolizione integrale di impalcati Di opere d'arte o parti intere di strutture in c.a. o c.a ... aggio del traffico e l'onere della segnaletica necessaria. [132.72 mc]; Rimozione ed asporto di appoggi da sostituire, a sollevam ... necessari per l'esecuzione e l'accesso al posto di lavoro. [3.07 cad]; Demolizione a sezione obbligata eseguita in qualsiasi dim ... demolizione vada ad interessare i vincoli delle strutture. [0.06 mc] | 19,006.35 |
| 84 |  | Demolizione impalcato esistente e rimozione apparecchi di appoggio Campata 40 | 3d | 2025-07-15 | 2025-07-17 | 83 | 251.95d | 0d | Demolizione integrale di impalcati Di opere d'arte o parti intere di strutture in c.a. o c.a ... aggio del traffico e l'onere della segnaletica necessaria. [132.72 mc]; Rimozione ed asporto di appoggi da sostituire, a sollevam ... necessari per l'esecuzione e l'accesso al posto di lavoro. [3.07 cad]; Demolizione a sezione obbligata eseguita in qualsiasi dim ... demolizione vada ad interessare i vincoli delle strutture. [0.06 mc] | 19,006.35 |
| 85 |  | Demolizione impalcato esistente e rimozione apparecchi di appoggio Campata 39 | 3d | 2025-07-18 | 2025-07-22 | 84 | 251.95d | 0d | Demolizione integrale di impalcati Di opere d'arte o parti intere di strutture in c.a. o c.a ... aggio del traffico e l'onere della segnaletica necessaria. [132.72 mc]; Rimozione ed asporto di appoggi da sostituire, a sollevam ... necessari per l'esecuzione e l'accesso al posto di lavoro. [3.07 cad]; Demolizione a sezione obbligata eseguita in qualsiasi dim ... demolizione vada ad interessare i vincoli delle strutture. [0.06 mc] | 19,006.35 |
| 86 |  | Demolizione impalcato esistente e rimozione apparecchi di appoggio Campata 38 | 3d | 2025-07-23 | 2025-07-25 | 85 | 251.95d | 0d | Demolizione integrale di impalcati Di opere d'arte o parti intere di strutture in c.a. o c.a ... aggio del traffico e l'onere della segnaletica necessaria. [132.72 mc]; Rimozione ed asporto di appoggi da sostituire, a sollevam ... necessari per l'esecuzione e l'accesso al posto di lavoro. [3.07 cad]; Demolizione a sezione obbligata eseguita in qualsiasi dim ... demolizione vada ad interessare i vincoli delle strutture. [0.06 mc] | 19,006.35 |
| 87 |  | Demolizione impalcato esistente e rimozione apparecchi di appoggio Campata 37 | 3d | 2025-07-28 | 2025-07-30 | 86 | 297.11d | 0d | Demolizione integrale di impalcati Di opere d'arte o parti intere di strutture in c.a. o c.a ... aggio del traffico e l'onere della segnaletica necessaria. [132.72 mc]; Rimozione ed asporto di appoggi da sostituire, a sollevam ... necessari per l'esecuzione e l'accesso al posto di lavoro. [3.07 cad]; Demolizione a sezione obbligata eseguita in qualsiasi dim ... demolizione vada ad interessare i vincoli delle strutture. [0.06 mc] | 19,006.35 |
| 88 |  | Demolizione impalcato esistente e rimozione apparecchi di appoggio Campata 36 | 3d | 2025-07-31 | 2025-08-04 | 87 | 297.11d | 0d | Demolizione integrale di impalcati Di opere d'arte o parti intere di strutture in c.a. o c.a ... aggio del traffico e l'onere della segnaletica necessaria. [132.72 mc]; Rimozione ed asporto di appoggi da sostituire, a sollevam ... necessari per l'esecuzione e l'accesso al posto di lavoro. [3.07 cad]; Demolizione a sezione obbligata eseguita in qualsiasi dim ... demolizione vada ad interessare i vincoli delle strutture. [0.06 mc] | 19,006.35 |
| 89 |  | Demolizione impalcato esistente e rimozione apparecchi di appoggio Campata 35 | 3d | 2025-08-05 | 2025-08-07 | 88 | 306.11d | 0d | Demolizione integrale di impalcati Di opere d'arte o parti intere di strutture in c.a. o c.a ... aggio del traffico e l'onere della segnaletica necessaria. [132.72 mc]; Rimozione ed asporto di appoggi da sostituire, a sollevam ... necessari per l'esecuzione e l'accesso al posto di lavoro. [3.07 cad]; Demolizione a sezione obbligata eseguita in qualsiasi dim ... demolizione vada ad interessare i vincoli delle strutture. [0.06 mc] | 19,006.35 |
| 90 |  | Demolizione impalcato esistente e rimozione apparecchi di appoggio Campata 34 | 3d | 2025-08-08 | 2025-08-12 | 89 | 315.11d | 0d | Demolizione integrale di impalcati Di opere d'arte o parti intere di strutture in c.a. o c.a ... aggio del traffico e l'onere della segnaletica necessaria. [132.72 mc]; Rimozione ed asporto di appoggi da sostituire, a sollevam ... necessari per l'esecuzione e l'accesso al posto di lavoro. [3.07 cad]; Demolizione a sezione obbligata eseguita in qualsiasi dim ... demolizione vada ad interessare i vincoli delle strutture. [0.06 mc] | 19,006.35 |
| 91 |  | Demolizione impalcato esistente e rimozione apparecchi di appoggio Campata 33 | 3d | 2025-08-13 | 2025-08-15 | 90 | 324.11d | 0d | Demolizione integrale di impalcati Di opere d'arte o parti intere di strutture in c.a. o c.a ... aggio del traffico e l'onere della segnaletica necessaria. [132.72 mc]; Rimozione ed asporto di appoggi da sostituire, a sollevam ... necessari per l'esecuzione e l'accesso al posto di lavoro. [3.07 cad]; Demolizione a sezione obbligata eseguita in qualsiasi dim ... demolizione vada ad interessare i vincoli delle strutture. [0.06 mc] | 19,006.35 |
| 92 |  | Demolizione impalcato esistente e rimozione apparecchi di appoggio Campata 32 | 3d | 2025-08-18 | 2025-08-20 | 91 | 333.11d | 0d | Demolizione integrale di impalcati Di opere d'arte o parti intere di strutture in c.a. o c.a ... aggio del traffico e l'onere della segnaletica necessaria. [132.72 mc]; Rimozione ed asporto di appoggi da sostituire, a sollevam ... necessari per l'esecuzione e l'accesso al posto di lavoro. [3.07 cad]; Demolizione a sezione obbligata eseguita in qualsiasi dim ... demolizione vada ad interessare i vincoli delle strutture. [0.06 mc] | 19,006.35 |
| 93 |  | Demolizione impalcato esistente e rimozione apparecchi di appoggio Campata 31 | 3d | 2025-08-21 | 2025-08-25 | 92 | 342.11d | 0d | Demolizione integrale di impalcati Di opere d'arte o parti intere di strutture in c.a. o c.a ... aggio del traffico e l'onere della segnaletica necessaria. [132.72 mc]; Rimozione ed asporto di appoggi da sostituire, a sollevam ... necessari per l'esecuzione e l'accesso al posto di lavoro. [3.07 cad]; Demolizione a sezione obbligata eseguita in qualsiasi dim ... demolizione vada ad interessare i vincoli delle strutture. [0.06 mc] | 19,006.35 |

| ID | WBS | Activity | Duration | Start | Finish | Predecessors | Total float | Free float | Resources | Cost |
| --- | --- | --- | --- | --- | --- | --- | --- | --- | --- | --- |
|  | 009 | **COMPLETAMENTO RISANAMENTO CORTICALE PULVINI DA P 31 a 76** |  | 2025-03-04 | 2025-09-23 |  |  |  |  |  |
|  | 1 | **Ricostruzioni baggioli in testa ai pulvini e completamento risanamenti corticali CAMPATA da 76 A 56** |  | 2025-03-04 | 2025-06-11 |  |  |  |  |  |
|  | 21 | **Risanamento Pile e Pulvini e Ricostruzioni Baggioli - Pila 76** |  | 2025-03-05 | 2025-03-26 |  |  |  |  |  |
| 1578 |  | Bocciardatura Pulvino 76 | 3d | 2025-03-05 | 2025-03-07 | 1568 | 18d | 0d | Idrodemolizione su intradossi di impalcati di opere d'art ... necessari per l'esecuzione e l'accesso al posto di lavoro. [21.03]; CEMENTO Provenienti dalle attività di costruzione e demolizione. ... ione. Compreso il terreno proveniente da siti contaminati. [1.51 T] | 756.42 |
| 1588 |  | Passivazione Ferri Pila 76 | 1d | 2025-03-10 | 2025-03-10 | 1578 | 18d | 0d | Delle superfici in calcetruzzo di opere d'arte e/o manufa ... ccorrenti. Per ogni metro quadrato di superficie trattata. [23.01]; Comprendente: - la raddrizzatura ed il riposizionamento d ... oi ai nuovi lavori. Per ogni metro quadrato di intervento. [23.03]; Eseguita mediante applicazione di malta cementizia monoco ... nibitori di corrosione e dispersione di polimeri acrilici. [23.03] | 180 |
| 1598 |  | Inghisaggi Feri Baggioli Pila 76 | 2d | 2025-03-11 | 2025-03-12 | 1588 | 18d | 0d | Composto da resina chimica e barra ad aderenza migliorata ... a 4 ÷6 mm del diametro della barra e comunque secondo ETA. [4296.53] | 839.97 |
| 1608 |  | Montaggio Ferri Pulvino e Baggiolo Pila 76 | 4d | 2025-03-13 | 2025-03-18 | 1598 | 18d | 0d | in fili d'acciaio, rispondente alle caratteristiche di cu ... tture rivestite. Compresa la fornitura e la posa in opera. [46.8]; Per l'ancoraggio di nuovi getti, compreso l'esecuzione de ... e solo esclusa la fornitura di ganci e/o barre di acciaio. [41.63]; Acciaio classe B450C controllato in stabilimento, di qual ... lo sfrido, ecc. Compresa la fornitura e la posa in opera. [1069.84]; Per strutture in conglomerato cementizio semplice, armato ... , escluse le armature di sostegno oltre i 2 metri di luce. [14.31] | 1,813.47 |
| 1618 |  | Strati di Malta Pulvini e Baggioli Pila 76 | 6d | 2025-03-19 | 2025-03-26 | 1608 | 18d | 0d | Fornitura e posa in opera di malta ad espansione contrast ... sati nel prezzo per dare il lavoro finito a regola d’arte. [45.27]; Fornitura e posa in opera di malta ad espansione contrast ... sati nel prezzo per dare il lavoro finito a regola d’arte. [22.64]; L’applicazione della malta dovrà essere effettuata previa ... are in opera un paramento perfettamente rasato e lisciato. [20.56]; CLS Strutturale in Elev. RCK 45 N/mmq A prestazione garantita secondo le UNI EN-206 e UNI 11104 ... o materiale in cantiere, getto, vibrazione e stagionatura. [2.84]; Sovrapprezzo CLS per Ritiro Compensato Da applicare alle voci di Elenco Prezzi dei cls per quals ... relativi controlli aggiuntivi (tipo § 7.2 NTC sez 2 CSA). [473.67]; Sovrapprezzo CLS per SCC Da applicare alle voci di Elenco Prezzi dei cls per qualsiasi classe di resistenza. [473.67] | 3,381.85 |
|  | 20 | **Risanamento Pile e Pulvini e Ricostruzioni Baggioli - Pila 75** |  | 2025-03-10 | 2025-03-31 |  |  |  |  |  |
| 1508 |  | Bocciardatura Pulvino 75 | 2.88d | 2025-03-10 | 2025-03-12 | 1498, 1578 | 19.62d | 0d | Idrodemolizione su intradossi di impalcati di opere d'art ... necessari per l'esecuzione e l'accesso al posto di lavoro. [20.15]; CEMENTO Provenienti dalle attività di costruzione e demolizione. ... ione. Compreso il terreno proveniente da siti contaminati. [1.45 T] | 724.9 |
| 1518 |  | Passivazione Ferri Pila 75 | 0.88d | 2025-03-12 | 2025-03-13 | 1508 | 19.62d | 0d | Delle superfici in calcetruzzo di opere d'arte e/o manufa ... ccorrenti. Per ogni metro quadrato di superficie trattata. [20.13]; Comprendente: - la raddrizzatura ed il riposizionamento d ... oi ai nuovi lavori. Per ogni metro quadrato di intervento. [20.15]; Eseguita mediante applicazione di malta cementizia monoco ... nibitori di corrosione e dispersione di polimeri acrilici. [20.15] | 157.5 |
| 1528 |  | Inghisaggi Feri Baggioli Pila 75 | 1.88d | 2025-03-13 | 2025-03-17 | 1518 | 19.62d | 0d | Composto da resina chimica e barra ad aderenza migliorata ... a 4 ÷6 mm del diametro della barra e comunque secondo ETA. [4028] | 787.47 |
| 1538 |  | Montaggio Ferri Pulvino e Baggiolo Pila 75 | 3.88d | 2025-03-17 | 2025-03-21 | 1528 | 19.62d | 0d | in fili d'acciaio, rispondente alle caratteristiche di cu ... tture rivestite. Compresa la fornitura e la posa in opera. [45.34]; Per l'ancoraggio di nuovi getti, compreso l'esecuzione de ... e solo esclusa la fornitura di ganci e/o barre di acciaio. [40.33]; Acciaio classe B450C controllato in stabilimento, di qual ... lo sfrido, ecc. Compresa la fornitura e la posa in opera. [1036.41]; Per strutture in conglomerato cementizio semplice, armato ... , escluse le armature di sostegno oltre i 2 metri di luce. [13.86] | 1,756.8 |
| 1548 |  | Strati di Malta Pulvini e Baggioli Pila 75 | 5.88d | 2025-03-21 | 2025-03-31 | 1538 | 19.62d | 0d | Fornitura e posa in opera di malta ad espansione contrast ... sati nel prezzo per dare il lavoro finito a regola d’arte. [44.33]; Fornitura e posa in opera di malta ad espansione contrast ... sati nel prezzo per dare il lavoro finito a regola d’arte. [22.17]; L’applicazione della malta dovrà essere effettuata previa ... are in opera un paramento perfettamente rasato e lisciato. [20.13]; CLS Strutturale in Elev. RCK 45 N/mmq A prestazione garantita secondo le UNI EN-206 e UNI 11104 ... o materiale in cantiere, getto, vibrazione e stagionatura. [2.78]; Sovrapprezzo CLS per Ritiro Compensato Da applicare alle voci di Elenco Prezzi dei cls per quals ... relativi controlli aggiuntivi (tipo § 7.2 NTC sez 2 CSA). [463.8]; Sovrapprezzo CLS per SCC Da applicare alle voci di Elenco Prezzi dei cls per qualsiasi classe di resistenza. [463.8] | 3,311.4 |
|  | 19 | **Risanamento Pile e Pulvini e Ricostruzioni Baggioli - Pila 74** |  | 2025-03-04 | 2025-03-26 |  |  |  |  |  |
| 147 |  | Bocciardatura Pulvino 74 | 2.88d | 2025-03-04 | 2025-03-07 | 1438 | 26.75d | 0d | Idrodemolizione su intradossi di impalcati di opere d'art ... necessari per l'esecuzione e l'accesso al posto di lavoro. [20.15]; CEMENTO Provenienti dalle attività di costruzione e demolizione. ... ione. Compreso il terreno proveniente da siti contaminati. [1.45 T] | 724.9 |
| 1448 |  | Passivazione Ferri Pila 74 | 0.88d | 2025-03-07 | 2025-03-10 | 147 | 26.75d | 0d | Delle superfici in calcetruzzo di opere d'arte e/o manufa ... ccorrenti. Per ogni metro quadrato di superficie trattata. [20.13]; Comprendente: - la raddrizzatura ed il riposizionamento d ... oi ai nuovi lavori. Per ogni metro quadrato di intervento. [20.15]; Eseguita mediante applicazione di malta cementizia monoco ... nibitori di corrosione e dispersione di polimeri acrilici. [20.15] | 157.5 |
| 1458 |  | Inghisaggi Feri Baggioli Pila 74 | 1.88d | 2025-03-10 | 2025-03-12 | 1448 | 26.75d | 0d | Composto da resina chimica e barra ad aderenza migliorata ... a 4 ÷6 mm del diametro della barra e comunque secondo ETA. [4028] | 787.47 |
| 1468 |  | Montaggio Ferri Pulvino e Baggiolo Pila 74 | 3.88d | 2025-03-12 | 2025-03-18 | 1458 | 26.75d | 0d | in fili d'acciaio, rispondente alle caratteristiche di cu ... tture rivestite. Compresa la fornitura e la posa in opera. [45.34]; Per l'ancoraggio di nuovi getti, compreso l'esecuzione de ... e solo esclusa la fornitura di ganci e/o barre di acciaio. [40.33]; Acciaio classe B450C controllato in stabilimento, di qual ... lo sfrido, ecc. Compresa la fornitura e la posa in opera. [1036.41]; Per strutture in conglomerato cementizio semplice, armato ... , escluse le armature di sostegno oltre i 2 metri di luce. [13.86] | 1,756.8 |
| 1478 |  | Strati di Malta Pulvini e Baggioli Pila 74 | 5.88d | 2025-03-18 | 2025-03-26 | 1468 | 26.75d | 4d | Fornitura e posa in opera di malta ad espansione contrast ... sati nel prezzo per dare il lavoro finito a regola d’arte. [44.33]; Fornitura e posa in opera di malta ad espansione contrast ... sati nel prezzo per dare il lavoro finito a regola d’arte. [22.17]; L’applicazione della malta dovrà essere effettuata previa ... are in opera un paramento perfettamente rasato e lisciato. [20.13]; CLS Strutturale in Elev. RCK 45 N/mmq A prestazione garantita secondo le UNI EN-206 e UNI 11104 ... o materiale in cantiere, getto, vibrazione e stagionatura. [2.78]; Sovrapprezzo CLS per Ritiro Compensato Da applicare alle voci di Elenco Prezzi dei cls per quals ... relativi controlli aggiuntivi (tipo § 7.2 NTC sez 2 CSA). [463.8]; Sovrapprezzo CLS per SCC Da applicare alle voci di Elenco Prezzi dei cls per qualsiasi classe di resistenza. [463.8] | 3,311.4 |
|  | 18 | **Risanamento Pile e Pulvini e Ricostruzioni Baggioli - Pila 73** |  | 2025-03-07 | 2025-03-31 |  |  |  |  |  |
| 1378 |  | Bocciardatura Pulvino 73 | 2.88d | 2025-03-07 | 2025-03-12 | 1368, 147 | 27.88d | 0d | Idrodemolizione su intradossi di impalcati di opere d'art ... necessari per l'esecuzione e l'accesso al posto di lavoro. [20.15]; CEMENTO Provenienti dalle attività di costruzione e demolizione. ... ione. Compreso il terreno proveniente da siti contaminati. [1.45 T] | 724.9 |
| 1388 |  | Passivazione Ferri Pila 73 | 0.88d | 2025-03-12 | 2025-03-13 | 1378 | 27.88d | 0d | Delle superfici in calcetruzzo di opere d'arte e/o manufa ... ccorrenti. Per ogni metro quadrato di superficie trattata. [20.13]; Comprendente: - la raddrizzatura ed il riposizionamento d ... oi ai nuovi lavori. Per ogni metro quadrato di intervento. [20.15]; Eseguita mediante applicazione di malta cementizia monoco ... nibitori di corrosione e dispersione di polimeri acrilici. [20.15] | 157.5 |
| 1398 |  | Inghisaggi Feri Baggioli Pila 73 | 1.88d | 2025-03-13 | 2025-03-17 | 1388 | 27.88d | 0d | Composto da resina chimica e barra ad aderenza migliorata ... a 4 ÷6 mm del diametro della barra e comunque secondo ETA. [4028] | 787.47 |
| 1408 |  | Montaggio Ferri Pulvino e Baggiolo Pila 73 | 3.88d | 2025-03-17 | 2025-03-21 | 1398 | 27.88d | 0d | in fili d'acciaio, rispondente alle caratteristiche di cu ... tture rivestite. Compresa la fornitura e la posa in opera. [45.34]; Per l'ancoraggio di nuovi getti, compreso l'esecuzione de ... e solo esclusa la fornitura di ganci e/o barre di acciaio. [40.33]; Acciaio classe B450C controllato in stabilimento, di qual ... lo sfrido, ecc. Compresa la fornitura e la posa in opera. [1036.41]; Per strutture in conglomerato cementizio semplice, armato ... , escluse le armature di sostegno oltre i 2 metri di luce. [13.86] | 1,756.8 |
| 1418 |  | Strati di Malta Pulvini e Baggioli Pila 73 | 5.88d | 2025-03-21 | 2025-03-31 | 1408 | 27.88d | 2d | Fornitura e posa in opera di malta ad espansione contrast ... sati nel prezzo per dare il lavoro finito a regola d’arte. [44.33]; Fornitura e posa in opera di malta ad espansione contrast ... sati nel prezzo per dare il lavoro finito a regola d’arte. [22.17]; L’applicazione della malta dovrà essere effettuata previa ... are in opera un paramento perfettamente rasato e lisciato. [20.13]; CLS Strutturale in Elev. RCK 45 N/mmq A prestazione garantita secondo le UNI EN-206 e UNI 11104 ... o materiale in cantiere, getto, vibrazione e stagionatura. [2.78]; Sovrapprezzo CLS per Ritiro Compensato Da applicare alle voci di Elenco Prezzi dei cls per quals ... relativi controlli aggiuntivi (tipo § 7.2 NTC sez 2 CSA). [463.8]; Sovrapprezzo CLS per SCC Da applicare alle voci di Elenco Prezzi dei cls per qualsiasi classe di resistenza. [463.8] | 3,311.4 |

| ID | WBS | Activity | Duration | Start | Finish | Predecessors | Total float | Free float | Resources | Cost |
| --- | --- | --- | --- | --- | --- | --- | --- | --- | --- | --- |
|  | 17 | **Risanamento Pile e Pulvini e Ricostruzioni Baggioli - Pila 72** |  | 2025-03-20 | 2025-04-11 |  |  |  |  |  |
| 1308 |  | Bocciardatura Pulvino 72 | 2.88d | 2025-03-20 | 2025-03-25 | 1298 | 22.75d | 0d | Idrodemolizione su intradossi di impalcati di opere d'art ... necessari per l'esecuzione e l'accesso al posto di lavoro. [20.15]; CEMENTO Provenienti dalle attività di costruzione e demolizione. ... ione. Compreso il terreno proveniente da siti contaminati. [1.45 T] | 724.9 |
| 1318 |  | Passivazione Ferri Pila 72 | 0.88d | 2025-03-25 | 2025-03-26 | 1308 | 22.75d | 0d | Delle superfici in calcetruzzo di opere d'arte e/o manufa ... ccorrenti. Per ogni metro quadrato di superficie trattata. [20.13]; Comprendente: - la raddrizzatura ed il riposizionamento d ... oi ai nuovi lavori. Per ogni metro quadrato di intervento. [20.15]; Eseguita mediante applicazione di malta cementizia monoco ... nibitori di corrosione e dispersione di polimeri acrilici. [20.15] | 157.5 |
| 1328 |  | Inghisaggi Feri Baggioli Pila 72 | 1.88d | 2025-03-26 | 2025-03-28 | 1318 | 22.75d | 0d | Composto da resina chimica e barra ad aderenza migliorata ... a 4 ÷6 mm del diametro della barra e comunque secondo ETA. [4028] | 787.47 |
| 1338 |  | Montaggio Ferri Pulvino e Baggiolo Pila 72 | 3.88d | 2025-03-28 | 2025-04-03 | 1328 | 22.75d | 0d | in fili d'acciaio, rispondente alle caratteristiche di cu ... tture rivestite. Compresa la fornitura e la posa in opera. [45.34]; Per l'ancoraggio di nuovi getti, compreso l'esecuzione de ... e solo esclusa la fornitura di ganci e/o barre di acciaio. [40.33]; Acciaio classe B450C controllato in stabilimento, di qual ... lo sfrido, ecc. Compresa la fornitura e la posa in opera. [1036.41]; Per strutture in conglomerato cementizio semplice, armato ... , escluse le armature di sostegno oltre i 2 metri di luce. [13.86] | 1,756.8 |
| 1348 |  | Strati di Malta Pulvini e Baggioli Pila 72 | 5.88d | 2025-04-03 | 2025-04-11 | 1338 | 22.75d | 0d | Fornitura e posa in opera di malta ad espansione contrast ... sati nel prezzo per dare il lavoro finito a regola d’arte. [44.33]; Fornitura e posa in opera di malta ad espansione contrast ... sati nel prezzo per dare il lavoro finito a regola d’arte. [22.17]; L’applicazione della malta dovrà essere effettuata previa ... are in opera un paramento perfettamente rasato e lisciato. [20.13]; CLS Strutturale in Elev. RCK 45 N/mmq A prestazione garantita secondo le UNI EN-206 e UNI 11104 ... o materiale in cantiere, getto, vibrazione e stagionatura. [2.78]; Sovrapprezzo CLS per Ritiro Compensato Da applicare alle voci di Elenco Prezzi dei cls per quals ... relativi controlli aggiuntivi (tipo § 7.2 NTC sez 2 CSA). [463.8]; Sovrapprezzo CLS per SCC Da applicare alle voci di Elenco Prezzi dei cls per qualsiasi classe di resistenza. [463.8] | 3,311.4 |
|  | 16 | **Risanamento Pile e Pulvini e Ricostruzioni Baggioli - Pila 71** |  | 2025-03-24 | 2025-04-15 |  |  |  |  |  |
| 1248 |  | Bocciardatura Pulvino 71 | 2.88d | 2025-03-24 | 2025-03-27 | 1238 | 24.88d | 0d | Idrodemolizione su intradossi di impalcati di opere d'art ... necessari per l'esecuzione e l'accesso al posto di lavoro. [20.15]; CEMENTO Provenienti dalle attività di costruzione e demolizione. ... ione. Compreso il terreno proveniente da siti contaminati. [1.45 T] | 724.9 |
| 1258 |  | Passivazione Ferri Pila 71 | 0.88d | 2025-03-27 | 2025-03-28 | 1248 | 24.88d | 0d | Delle superfici in calcetruzzo di opere d'arte e/o manufa ... ccorrenti. Per ogni metro quadrato di superficie trattata. [20.13]; Comprendente: - la raddrizzatura ed il riposizionamento d ... oi ai nuovi lavori. Per ogni metro quadrato di intervento. [20.15]; Eseguita mediante applicazione di malta cementizia monoco ... nibitori di corrosione e dispersione di polimeri acrilici. [20.15] | 157.5 |
| 125 |  | Inghisaggi Feri Baggioli Pila 71 | 1.88d | 2025-03-28 | 2025-04-01 | 1258 | 24.88d | 0d | Composto da resina chimica e barra ad aderenza migliorata ... a 4 ÷6 mm del diametro della barra e comunque secondo ETA. [4028] | 787.47 |
| 1268 |  | Montaggio Ferri Pulvino e Baggiolo Pila 71 | 3.88d | 2025-04-01 | 2025-04-07 | 125 | 24.88d | 0d | in fili d'acciaio, rispondente alle caratteristiche di cu ... tture rivestite. Compresa la fornitura e la posa in opera. [45.34]; Per l'ancoraggio di nuovi getti, compreso l'esecuzione de ... e solo esclusa la fornitura di ganci e/o barre di acciaio. [40.33]; Acciaio classe B450C controllato in stabilimento, di qual ... lo sfrido, ecc. Compresa la fornitura e la posa in opera. [1036.41]; Per strutture in conglomerato cementizio semplice, armato ... , escluse le armature di sostegno oltre i 2 metri di luce. [13.86] | 1,756.8 |
| 1278 |  | Strati di Malta Pulvini e Baggioli Pila 71 | 5.88d | 2025-04-07 | 2025-04-15 | 1268 | 24.88d | 0d | Fornitura e posa in opera di malta ad espansione contrast ... sati nel prezzo per dare il lavoro finito a regola d’arte. [44.33]; Fornitura e posa in opera di malta ad espansione contrast ... sati nel prezzo per dare il lavoro finito a regola d’arte. [22.17]; L’applicazione della malta dovrà essere effettuata previa ... are in opera un paramento perfettamente rasato e lisciato. [20.13]; CLS Strutturale in Elev. RCK 45 N/mmq A prestazione garantita secondo le UNI EN-206 e UNI 11104 ... o materiale in cantiere, getto, vibrazione e stagionatura. [2.78]; Sovrapprezzo CLS per Ritiro Compensato Da applicare alle voci di Elenco Prezzi dei cls per quals ... relativi controlli aggiuntivi (tipo § 7.2 NTC sez 2 CSA). [463.8]; Sovrapprezzo CLS per SCC Da applicare alle voci di Elenco Prezzi dei cls per qualsiasi classe di resistenza. [463.8] | 3,311.4 |
|  | 15 | **Risanamento Pile e Pulvini e Ricostruzioni Baggioli - Pila 70** |  | 2025-03-26 | 2025-04-16 |  |  |  |  |  |
| 1178 |  | Bocciardatura Pulvino 70 | 2.88d | 2025-03-26 | 2025-03-31 | 1168 | 27d | 0d | Idrodemolizione su intradossi di impalcati di opere d'art ... necessari per l'esecuzione e l'accesso al posto di lavoro. [20.15]; CEMENTO Provenienti dalle attività di costruzione e demolizione. ... ione. Compreso il terreno proveniente da siti contaminati. [1.45 T] | 724.9 |
| 1188 |  | Passivazione Ferri Pila 70 | 0.88d | 2025-03-31 | 2025-04-01 | 1178 | 27d | 0d | Delle superfici in calcetruzzo di opere d'arte e/o manufa ... ccorrenti. Per ogni metro quadrato di superficie trattata. [20.13]; Comprendente: - la raddrizzatura ed il riposizionamento d ... oi ai nuovi lavori. Per ogni metro quadrato di intervento. [20.15]; Eseguita mediante applicazione di malta cementizia monoco ... nibitori di corrosione e dispersione di polimeri acrilici. [20.15] | 157.5 |
| 1198 |  | Inghisaggi Feri Baggioli Pila 70 | 1.88d | 2025-04-01 | 2025-04-03 | 1188 | 27d | 0d | Composto da resina chimica e barra ad aderenza migliorata ... a 4 ÷6 mm del diametro della barra e comunque secondo ETA. [4028] | 787.47 |
| 1208 |  | Montaggio Ferri Pulvino e Baggiolo Pila 70 | 3.88d | 2025-04-03 | 2025-04-09 | 1198 | 27d | 0d | in fili d'acciaio, rispondente alle caratteristiche di cu ... tture rivestite. Compresa la fornitura e la posa in opera. [45.34]; Per l'ancoraggio di nuovi getti, compreso l'esecuzione de ... e solo esclusa la fornitura di ganci e/o barre di acciaio. [40.33]; Acciaio classe B450C controllato in stabilimento, di qual ... lo sfrido, ecc. Compresa la fornitura e la posa in opera. [1036.41]; Per strutture in conglomerato cementizio semplice, armato ... , escluse le armature di sostegno oltre i 2 metri di luce. [13.86] | 1,756.8 |
| 1218 |  | Strati di Malta Pulvini e Baggioli Pila 70 | 5.88d | 2025-04-09 | 2025-04-16 | 1208 | 27d | 0d | Fornitura e posa in opera di malta ad espansione contrast ... sati nel prezzo per dare il lavoro finito a regola d’arte. [44.33]; Fornitura e posa in opera di malta ad espansione contrast ... sati nel prezzo per dare il lavoro finito a regola d’arte. [22.17]; L’applicazione della malta dovrà essere effettuata previa ... are in opera un paramento perfettamente rasato e lisciato. [20.13]; CLS Strutturale in Elev. RCK 45 N/mmq A prestazione garantita secondo le UNI EN-206 e UNI 11104 ... o materiale in cantiere, getto, vibrazione e stagionatura. [2.78]; Sovrapprezzo CLS per Ritiro Compensato Da applicare alle voci di Elenco Prezzi dei cls per quals ... relativi controlli aggiuntivi (tipo § 7.2 NTC sez 2 CSA). [463.8]; Sovrapprezzo CLS per SCC Da applicare alle voci di Elenco Prezzi dei cls per qualsiasi classe di resistenza. [463.8] | 3,311.4 |
|  | 14 | **Risanamento Pile e Pulvini e Ricostruzioni Baggioli - Pila 69** |  | 2025-03-28 | 2025-04-18 |  |  |  |  |  |
| 1108 |  | Bocciardatura Pulvino 69 | 2.88d | 2025-03-28 | 2025-04-02 | 1098 | 29.12d | 0d | Idrodemolizione su intradossi di impalcati di opere d'art ... necessari per l'esecuzione e l'accesso al posto di lavoro. [20.15]; CEMENTO Provenienti dalle attività di costruzione e demolizione. ... ione. Compreso il terreno proveniente da siti contaminati. [1.45 T] | 724.9 |
| 1118 |  | Passivazione Ferri Pila 69 | 0.88d | 2025-04-02 | 2025-04-03 | 1108 | 29.12d | 0d | Delle superfici in calcetruzzo di opere d'arte e/o manufa ... ccorrenti. Per ogni metro quadrato di superficie trattata. [20.13]; Comprendente: - la raddrizzatura ed il riposizionamento d ... oi ai nuovi lavori. Per ogni metro quadrato di intervento. [20.15]; Eseguita mediante applicazione di malta cementizia monoco ... nibitori di corrosione e dispersione di polimeri acrilici. [20.15] | 157.5 |
| 1128 |  | Inghisaggi Feri Baggioli Pila 69 | 1.88d | 2025-04-03 | 2025-04-07 | 1118 | 29.12d | 0d | Composto da resina chimica e barra ad aderenza migliorata ... a 4 ÷6 mm del diametro della barra e comunque secondo ETA. [4028] | 787.47 |
| 1138 |  | Montaggio Ferri Pulvino e Baggiolo Pila 69 | 3.88d | 2025-04-07 | 2025-04-10 | 1128 | 29.12d | 0d | in fili d'acciaio, rispondente alle caratteristiche di cu ... tture rivestite. Compresa la fornitura e la posa in opera. [45.34]; Per l'ancoraggio di nuovi getti, compreso l'esecuzione de ... e solo esclusa la fornitura di ganci e/o barre di acciaio. [40.33]; Acciaio classe B450C controllato in stabilimento, di qual ... lo sfrido, ecc. Compresa la fornitura e la posa in opera. [1036.41]; Per strutture in conglomerato cementizio semplice, armato ... , escluse le armature di sostegno oltre i 2 metri di luce. [13.86] | 1,756.8 |
| 1148 |  | Strati di Malta Pulvini e Baggioli Pila 69 | 5.88d | 2025-04-11 | 2025-04-18 | 1138 | 29.12d | 0d | Fornitura e posa in opera di malta ad espansione contrast ... sati nel prezzo per dare il lavoro finito a regola d’arte. [44.33]; Fornitura e posa in opera di malta ad espansione contrast ... sati nel prezzo per dare il lavoro finito a regola d’arte. [22.17]; L’applicazione della malta dovrà essere effettuata previa ... are in opera un paramento perfettamente rasato e lisciato. [20.13]; CLS Strutturale in Elev. RCK 45 N/mmq A prestazione garantita secondo le UNI EN-206 e UNI 11104 ... o materiale in cantiere, getto, vibrazione e stagionatura. [2.78]; Sovrapprezzo CLS per Ritiro Compensato Da applicare alle voci di Elenco Prezzi dei cls per quals ... relativi controlli aggiuntivi (tipo § 7.2 NTC sez 2 CSA). [463.8]; Sovrapprezzo CLS per SCC Da applicare alle voci di Elenco Prezzi dei cls per qualsiasi classe di resistenza. [463.8] | 3,311.4 |

| ID | WBS | Activity | Duration | Start | Finish | Predecessors | Total float | Free float | Resources | Cost |
| --- | --- | --- | --- | --- | --- | --- | --- | --- | --- | --- |
|  | 13 | **Risanamento Pile e Pulvini e Ricostruzioni Baggioli - Pila 68** |  | 2025-04-01 | 2025-04-22 |  |  |  |  |  |
| 99 |  | Bocciardatura Pulvino 68 | 2.88d | 2025-04-01 | 2025-04-04 | 98 | 31.25d | 0d | Idrodemolizione su intradossi di impalcati di opere d'art ... necessari per l'esecuzione e l'accesso al posto di lavoro. [20.15]; CEMENTO Provenienti dalle attività di costruzione e demolizione. ... ione. Compreso il terreno proveniente da siti contaminati. [1.45 T] | 724.9 |
| 1048 |  | Passivazione Ferri Pila 68 | 0.88d | 2025-04-04 | 2025-04-07 | 99 | 31.25d | 0d | Delle superfici in calcetruzzo di opere d'arte e/o manufa ... ccorrenti. Per ogni metro quadrato di superficie trattata. [20.13]; Comprendente: - la raddrizzatura ed il riposizionamento d ... oi ai nuovi lavori. Per ogni metro quadrato di intervento. [20.15]; Eseguita mediante applicazione di malta cementizia monoco ... nibitori di corrosione e dispersione di polimeri acrilici. [20.15] | 157.5 |
| 1058 |  | Inghisaggi Feri Baggioli Pila 68 | 1.88d | 2025-04-07 | 2025-04-08 | 1048 | 31.25d | 0d | Composto da resina chimica e barra ad aderenza migliorata ... a 4 ÷6 mm del diametro della barra e comunque secondo ETA. [4028] | 787.47 |
| 1068 |  | Montaggio Ferri Pulvino e Baggiolo Pila 68 | 3.88d | 2025-04-09 | 2025-04-14 | 1058 | 31.25d | 0d | in fili d'acciaio, rispondente alle caratteristiche di cu ... tture rivestite. Compresa la fornitura e la posa in opera. [45.34]; Per l'ancoraggio di nuovi getti, compreso l'esecuzione de ... e solo esclusa la fornitura di ganci e/o barre di acciaio. [40.33]; Acciaio classe B450C controllato in stabilimento, di qual ... lo sfrido, ecc. Compresa la fornitura e la posa in opera. [1036.41]; Per strutture in conglomerato cementizio semplice, armato ... , escluse le armature di sostegno oltre i 2 metri di luce. [13.86] | 1,756.8 |
| 1078 |  | Strati di Malta Pulvini e Baggioli Pila 68 | 5.88d | 2025-04-14 | 2025-04-22 | 1068 | 31.25d | 0d | Fornitura e posa in opera di malta ad espansione contrast ... sati nel prezzo per dare il lavoro finito a regola d’arte. [44.33]; Fornitura e posa in opera di malta ad espansione contrast ... sati nel prezzo per dare il lavoro finito a regola d’arte. [22.17]; L’applicazione della malta dovrà essere effettuata previa ... are in opera un paramento perfettamente rasato e lisciato. [20.13]; CLS Strutturale in Elev. RCK 45 N/mmq A prestazione garantita secondo le UNI EN-206 e UNI 11104 ... o materiale in cantiere, getto, vibrazione e stagionatura. [2.78]; Sovrapprezzo CLS per Ritiro Compensato Da applicare alle voci di Elenco Prezzi dei cls per quals ... relativi controlli aggiuntivi (tipo § 7.2 NTC sez 2 CSA). [463.8]; Sovrapprezzo CLS per SCC Da applicare alle voci di Elenco Prezzi dei cls per qualsiasi classe di resistenza. [463.8] | 3,311.4 |
|  | 12 | **Risanamento Pile e Pulvini e Ricostruzioni Baggioli - Pila 67** |  | 2025-04-03 | 2025-04-24 |  |  |  |  |  |
| 988 |  | Bocciardatura Pulvino 67 | 2.88d | 2025-04-03 | 2025-04-08 | 978 | 33.38d | 0d | Idrodemolizione su intradossi di impalcati di opere d'art ... necessari per l'esecuzione e l'accesso al posto di lavoro. [20.15]; CEMENTO Provenienti dalle attività di costruzione e demolizione. ... ione. Compreso il terreno proveniente da siti contaminati. [1.45 T] | 724.9 |
| 998 |  | Passivazione Ferri Pila 67 | 0.88d | 2025-04-08 | 2025-04-08 | 988 | 33.38d | 0d | Delle superfici in calcetruzzo di opere d'arte e/o manufa ... ccorrenti. Per ogni metro quadrato di superficie trattata. [20.13]; Comprendente: - la raddrizzatura ed il riposizionamento d ... oi ai nuovi lavori. Per ogni metro quadrato di intervento. [20.15]; Eseguita mediante applicazione di malta cementizia monoco ... nibitori di corrosione e dispersione di polimeri acrilici. [20.15] | 157.5 |
| 1008 |  | Inghisaggi Feri Baggioli Pila 67 | 1.88d | 2025-04-09 | 2025-04-10 | 998 | 33.38d | 0d | Composto da resina chimica e barra ad aderenza migliorata ... a 4 ÷6 mm del diametro della barra e comunque secondo ETA. [4028] | 787.47 |
| 1018 |  | Montaggio Ferri Pulvino e Baggiolo Pila 67 | 3.88d | 2025-04-10 | 2025-04-16 | 1008 | 33.38d | 0d | in fili d'acciaio, rispondente alle caratteristiche di cu ... tture rivestite. Compresa la fornitura e la posa in opera. [45.34]; Per l'ancoraggio di nuovi getti, compreso l'esecuzione de ... e solo esclusa la fornitura di ganci e/o barre di acciaio. [40.33]; Acciaio classe B450C controllato in stabilimento, di qual ... lo sfrido, ecc. Compresa la fornitura e la posa in opera. [1036.41]; Per strutture in conglomerato cementizio semplice, armato ... , escluse le armature di sostegno oltre i 2 metri di luce. [13.86] | 1,756.8 |
| 1028 |  | Strati di Malta Pulvini e Baggioli Pila 67 | 5.88d | 2025-04-16 | 2025-04-24 | 1018 | 33.38d | 0d | Fornitura e posa in opera di malta ad espansione contrast ... sati nel prezzo per dare il lavoro finito a regola d’arte. [44.33]; Fornitura e posa in opera di malta ad espansione contrast ... sati nel prezzo per dare il lavoro finito a regola d’arte. [22.17]; L’applicazione della malta dovrà essere effettuata previa ... are in opera un paramento perfettamente rasato e lisciato. [20.13]; CLS Strutturale in Elev. RCK 45 N/mmq A prestazione garantita secondo le UNI EN-206 e UNI 11104 ... o materiale in cantiere, getto, vibrazione e stagionatura. [2.78]; Sovrapprezzo CLS per Ritiro Compensato Da applicare alle voci di Elenco Prezzi dei cls per quals ... relativi controlli aggiuntivi (tipo § 7.2 NTC sez 2 CSA). [463.8]; Sovrapprezzo CLS per SCC Da applicare alle voci di Elenco Prezzi dei cls per qualsiasi classe di resistenza. [463.8] | 3,311.4 |
|  | 11 | **Risanamento Pile e Pulvini e Ricostruzioni Baggioli - Pila 66** |  | 2025-04-07 | 2025-04-28 |  |  |  |  |  |
| 918 |  | Bocciardatura Pulvino 66 | 2.88d | 2025-04-07 | 2025-04-09 | 908 | 35.5d | 0d | Idrodemolizione su intradossi di impalcati di opere d'art ... necessari per l'esecuzione e l'accesso al posto di lavoro. [20.15]; CEMENTO Provenienti dalle attività di costruzione e demolizione. ... ione. Compreso il terreno proveniente da siti contaminati. [1.45 T] | 724.9 |
| 928 |  | Passivazione Ferri Pila 66 | 0.88d | 2025-04-10 | 2025-04-10 | 918 | 35.5d | 0d | Delle superfici in calcetruzzo di opere d'arte e/o manufa ... ccorrenti. Per ogni metro quadrato di superficie trattata. [20.13]; Comprendente: - la raddrizzatura ed il riposizionamento d ... oi ai nuovi lavori. Per ogni metro quadrato di intervento. [20.15]; Eseguita mediante applicazione di malta cementizia monoco ... nibitori di corrosione e dispersione di polimeri acrilici. [20.15] | 157.5 |
| 938 |  | Inghisaggi Feri Baggioli Pila 66 | 1.88d | 2025-04-10 | 2025-04-14 | 928 | 35.5d | 0d | Composto da resina chimica e barra ad aderenza migliorata ... a 4 ÷6 mm del diametro della barra e comunque secondo ETA. [4028] | 787.47 |
| 948 |  | Montaggio Ferri Pulvino e Baggiolo Pila 66 | 3.88d | 2025-04-14 | 2025-04-18 | 938 | 35.5d | 0d | in fili d'acciaio, rispondente alle caratteristiche di cu ... tture rivestite. Compresa la fornitura e la posa in opera. [45.34]; Per l'ancoraggio di nuovi getti, compreso l'esecuzione de ... e solo esclusa la fornitura di ganci e/o barre di acciaio. [40.33]; Acciaio classe B450C controllato in stabilimento, di qual ... lo sfrido, ecc. Compresa la fornitura e la posa in opera. [1036.41]; Per strutture in conglomerato cementizio semplice, armato ... , escluse le armature di sostegno oltre i 2 metri di luce. [13.86] | 1,756.8 |
| 958 |  | Strati di Malta Pulvini e Baggioli Pila 66 | 5.88d | 2025-04-18 | 2025-04-28 | 948 | 35.5d | 0d | Fornitura e posa in opera di malta ad espansione contrast ... sati nel prezzo per dare il lavoro finito a regola d’arte. [44.33]; Fornitura e posa in opera di malta ad espansione contrast ... sati nel prezzo per dare il lavoro finito a regola d’arte. [22.17]; L’applicazione della malta dovrà essere effettuata previa ... are in opera un paramento perfettamente rasato e lisciato. [20.13]; CLS Strutturale in Elev. RCK 45 N/mmq A prestazione garantita secondo le UNI EN-206 e UNI 11104 ... o materiale in cantiere, getto, vibrazione e stagionatura. [2.78]; Sovrapprezzo CLS per Ritiro Compensato Da applicare alle voci di Elenco Prezzi dei cls per quals ... relativi controlli aggiuntivi (tipo § 7.2 NTC sez 2 CSA). [463.8]; Sovrapprezzo CLS per SCC Da applicare alle voci di Elenco Prezzi dei cls per qualsiasi classe di resistenza. [463.8] | 3,311.4 |
|  | 10 | **Risanamento Pile e Pulvini e Ricostruzioni Baggioli - Pila 65** |  | 2025-04-09 | 2025-04-30 |  |  |  |  |  |
| 848 |  | Bocciardatura Pulvino 65 | 2.88d | 2025-04-09 | 2025-04-11 | 838 | 37.62d | 0d | Idrodemolizione su intradossi di impalcati di opere d'art ... necessari per l'esecuzione e l'accesso al posto di lavoro. [20.15]; CEMENTO Provenienti dalle attività di costruzione e demolizione. ... ione. Compreso il terreno proveniente da siti contaminati. [1.45 T] | 724.9 |
| 858 |  | Passivazione Ferri Pila 65 | 0.88d | 2025-04-11 | 2025-04-14 | 848 | 37.62d | 0d | Delle superfici in calcetruzzo di opere d'arte e/o manufa ... ccorrenti. Per ogni metro quadrato di superficie trattata. [20.13]; Comprendente: - la raddrizzatura ed il riposizionamento d ... oi ai nuovi lavori. Per ogni metro quadrato di intervento. [20.15]; Eseguita mediante applicazione di malta cementizia monoco ... nibitori di corrosione e dispersione di polimeri acrilici. [20.15] | 157.5 |
| 868 |  | Inghisaggi Feri Baggioli Pila 65 | 1.88d | 2025-04-14 | 2025-04-16 | 858 | 37.62d | 0d | Composto da resina chimica e barra ad aderenza migliorata ... a 4 ÷6 mm del diametro della barra e comunque secondo ETA. [4028] | 787.47 |
| 878 |  | Montaggio Ferri Pulvino e Baggiolo Pila 65 | 3.88d | 2025-04-16 | 2025-04-22 | 868 | 37.62d | 0d | in fili d'acciaio, rispondente alle caratteristiche di cu ... tture rivestite. Compresa la fornitura e la posa in opera. [45.34]; Per l'ancoraggio di nuovi getti, compreso l'esecuzione de ... e solo esclusa la fornitura di ganci e/o barre di acciaio. [40.33]; Acciaio classe B450C controllato in stabilimento, di qual ... lo sfrido, ecc. Compresa la fornitura e la posa in opera. [1036.41]; Per strutture in conglomerato cementizio semplice, armato ... , escluse le armature di sostegno oltre i 2 metri di luce. [13.86] | 1,756.8 |
| 888 |  | Strati di Malta Pulvini e Baggioli Pila 65 | 5.88d | 2025-04-22 | 2025-04-30 | 878 | 37.62d | 0d | Fornitura e posa in opera di malta ad espansione contrast ... sati nel prezzo per dare il lavoro finito a regola d’arte. [44.33]; Fornitura e posa in opera di malta ad espansione contrast ... sati nel prezzo per dare il lavoro finito a regola d’arte. [22.17]; L’applicazione della malta dovrà essere effettuata previa ... are in opera un paramento perfettamente rasato e lisciato. [20.13]; CLS Strutturale in Elev. RCK 45 N/mmq A prestazione garantita secondo le UNI EN-206 e UNI 11104 ... o materiale in cantiere, getto, vibrazione e stagionatura. [2.78]; Sovrapprezzo CLS per Ritiro Compensato Da applicare alle voci di Elenco Prezzi dei cls per quals ... relativi controlli aggiuntivi (tipo § 7.2 NTC sez 2 CSA). [463.8]; Sovrapprezzo CLS per SCC Da applicare alle voci di Elenco Prezzi dei cls per qualsiasi classe di resistenza. [463.8] | 3,311.4 |

| ID | WBS | Activity | Duration | Start | Finish | Predecessors | Total float | Free float | Resources | Cost |
| --- | --- | --- | --- | --- | --- | --- | --- | --- | --- | --- |
|  | 9 | **Risanamento Pile e Pulvini e Ricostruzioni Baggioli - Pila 64** |  | 2025-04-18 | 2025-05-12 |  |  |  |  |  |
| 788 |  | Bocciardatura Pulvino 64 | 2.88d | 2025-04-18 | 2025-04-23 | 778 | 33.75d | 0d | Idrodemolizione su intradossi di impalcati di opere d'art ... necessari per l'esecuzione e l'accesso al posto di lavoro. [20.15]; CEMENTO Provenienti dalle attività di costruzione e demolizione. ... ione. Compreso il terreno proveniente da siti contaminati. [1.45 T] | 724.9 |
| 68 |  | Passivazione Ferri Pila 64 | 0.88d | 2025-04-23 | 2025-04-24 | 788 | 33.75d | 0d | Delle superfici in calcetruzzo di opere d'arte e/o manufa ... ccorrenti. Per ogni metro quadrato di superficie trattata. [20.13]; Comprendente: - la raddrizzatura ed il riposizionamento d ... oi ai nuovi lavori. Per ogni metro quadrato di intervento. [20.15]; Eseguita mediante applicazione di malta cementizia monoco ... nibitori di corrosione e dispersione di polimeri acrilici. [20.15] | 157.5 |
| 798 |  | Inghisaggi Feri Baggioli Pila 64 | 1.88d | 2025-04-24 | 2025-04-28 | 68 | 33.75d | 0d | Composto da resina chimica e barra ad aderenza migliorata ... a 4 ÷6 mm del diametro della barra e comunque secondo ETA. [4028] | 787.47 |
| 808 |  | Montaggio Ferri Pulvino e Baggiolo Pila 64 | 3.88d | 2025-04-28 | 2025-05-02 | 798 | 33.75d | 0d | in fili d'acciaio, rispondente alle caratteristiche di cu ... tture rivestite. Compresa la fornitura e la posa in opera. [45.34]; Per l'ancoraggio di nuovi getti, compreso l'esecuzione de ... e solo esclusa la fornitura di ganci e/o barre di acciaio. [40.33]; Acciaio classe B450C controllato in stabilimento, di qual ... lo sfrido, ecc. Compresa la fornitura e la posa in opera. [1036.41]; Per strutture in conglomerato cementizio semplice, armato ... , escluse le armature di sostegno oltre i 2 metri di luce. [13.86] | 1,756.8 |
| 818 |  | Strati di Malta Pulvini e Baggioli Pila 64 | 5.88d | 2025-05-02 | 2025-05-12 | 808 | 33.75d | 0d | Fornitura e posa in opera di malta ad espansione contrast ... sati nel prezzo per dare il lavoro finito a regola d’arte. [44.33]; Fornitura e posa in opera di malta ad espansione contrast ... sati nel prezzo per dare il lavoro finito a regola d’arte. [22.17]; L’applicazione della malta dovrà essere effettuata previa ... are in opera un paramento perfettamente rasato e lisciato. [20.13]; CLS Strutturale in Elev. RCK 45 N/mmq A prestazione garantita secondo le UNI EN-206 e UNI 11104 ... o materiale in cantiere, getto, vibrazione e stagionatura. [2.78]; Sovrapprezzo CLS per Ritiro Compensato Da applicare alle voci di Elenco Prezzi dei cls per quals ... relativi controlli aggiuntivi (tipo § 7.2 NTC sez 2 CSA). [463.8]; Sovrapprezzo CLS per SCC Da applicare alle voci di Elenco Prezzi dei cls per qualsiasi classe di resistenza. [463.8] | 3,311.4 |
|  | 8 | **Risanamento Pile e Pulvini e Ricostruzioni Baggioli - Pila 63** |  | 2025-04-22 | 2025-05-14 |  |  |  |  |  |
| 728 |  | Bocciardatura Pulvino 63 | 2.88d | 2025-04-22 | 2025-04-25 | 718 | 35.88d | 0d | Idrodemolizione su intradossi di impalcati di opere d'art ... necessari per l'esecuzione e l'accesso al posto di lavoro. [20.15]; CEMENTO Provenienti dalle attività di costruzione e demolizione. ... ione. Compreso il terreno proveniente da siti contaminati. [1.45 T] | 724.9 |
| 738 |  | Passivazione Ferri Pila 63 | 0.88d | 2025-04-25 | 2025-04-28 | 728 | 35.88d | 0d | Delle superfici in calcetruzzo di opere d'arte e/o manufa ... ccorrenti. Per ogni metro quadrato di superficie trattata. [20.13]; Comprendente: - la raddrizzatura ed il riposizionamento d ... oi ai nuovi lavori. Per ogni metro quadrato di intervento. [20.15]; Eseguita mediante applicazione di malta cementizia monoco ... nibitori di corrosione e dispersione di polimeri acrilici. [20.15] | 157.5 |
| 748 |  | Inghisaggi Feri Baggioli Pila 63 | 1.88d | 2025-04-28 | 2025-04-30 | 738 | 35.88d | 0d | Composto da resina chimica e barra ad aderenza migliorata ... a 4 ÷6 mm del diametro della barra e comunque secondo ETA. [4028] | 787.47 |
| 758 |  | Montaggio Ferri Pulvino e Baggiolo Pila 63 | 3.88d | 2025-04-30 | 2025-05-06 | 748 | 35.88d | 0d | in fili d'acciaio, rispondente alle caratteristiche di cu ... tture rivestite. Compresa la fornitura e la posa in opera. [45.34]; Per l'ancoraggio di nuovi getti, compreso l'esecuzione de ... e solo esclusa la fornitura di ganci e/o barre di acciaio. [40.33]; Acciaio classe B450C controllato in stabilimento, di qual ... lo sfrido, ecc. Compresa la fornitura e la posa in opera. [1036.41]; Per strutture in conglomerato cementizio semplice, armato ... , escluse le armature di sostegno oltre i 2 metri di luce. [13.86] | 1,756.8 |
| 768 |  | Strati di Malta Pulvini e Baggioli Pila 63 | 5.88d | 2025-05-06 | 2025-05-14 | 758 | 35.88d | 0d | Fornitura e posa in opera di malta ad espansione contrast ... sati nel prezzo per dare il lavoro finito a regola d’arte. [44.33]; Fornitura e posa in opera di malta ad espansione contrast ... sati nel prezzo per dare il lavoro finito a regola d’arte. [22.17]; L’applicazione della malta dovrà essere effettuata previa ... are in opera un paramento perfettamente rasato e lisciato. [20.13]; CLS Strutturale in Elev. RCK 45 N/mmq A prestazione garantita secondo le UNI EN-206 e UNI 11104 ... o materiale in cantiere, getto, vibrazione e stagionatura. [2.78]; Sovrapprezzo CLS per Ritiro Compensato Da applicare alle voci di Elenco Prezzi dei cls per quals ... relativi controlli aggiuntivi (tipo § 7.2 NTC sez 2 CSA). [463.8]; Sovrapprezzo CLS per SCC Da applicare alle voci di Elenco Prezzi dei cls per qualsiasi classe di resistenza. [463.8] | 3,311.4 |
|  | 7 | **Risanamento Pile e Pulvini e Ricostruzioni Baggioli - Pila 62** |  | 2025-04-24 | 2025-05-15 |  |  |  |  |  |
| 658 |  | Bocciardatura Pulvino 62 | 2.88d | 2025-04-24 | 2025-04-29 | 648 | 38d | 0d | Idrodemolizione su intradossi di impalcati di opere d'art ... necessari per l'esecuzione e l'accesso al posto di lavoro. [20.15]; CEMENTO Provenienti dalle attività di costruzione e demolizione. ... ione. Compreso il terreno proveniente da siti contaminati. [1.45 T] | 724.9 |
| 668 |  | Passivazione Ferri Pila 62 | 0.88d | 2025-04-29 | 2025-04-30 | 658 | 38d | 0d | Delle superfici in calcetruzzo di opere d'arte e/o manufa ... ccorrenti. Per ogni metro quadrato di superficie trattata. [20.13]; Comprendente: - la raddrizzatura ed il riposizionamento d ... oi ai nuovi lavori. Per ogni metro quadrato di intervento. [20.15]; Eseguita mediante applicazione di malta cementizia monoco ... nibitori di corrosione e dispersione di polimeri acrilici. [20.15] | 157.5 |
| 678 |  | Inghisaggi Feri Baggioli Pila 62 | 1.88d | 2025-04-30 | 2025-05-02 | 668 | 38d | 0d | Composto da resina chimica e barra ad aderenza migliorata ... a 4 ÷6 mm del diametro della barra e comunque secondo ETA. [4028] | 787.47 |
| 688 |  | Montaggio Ferri Pulvino e Baggiolo Pila 62 | 3.88d | 2025-05-02 | 2025-05-08 | 678 | 38d | 0d | in fili d'acciaio, rispondente alle caratteristiche di cu ... tture rivestite. Compresa la fornitura e la posa in opera. [45.34]; Per l'ancoraggio di nuovi getti, compreso l'esecuzione de ... e solo esclusa la fornitura di ganci e/o barre di acciaio. [40.33]; Acciaio classe B450C controllato in stabilimento, di qual ... lo sfrido, ecc. Compresa la fornitura e la posa in opera. [1036.41]; Per strutture in conglomerato cementizio semplice, armato ... , escluse le armature di sostegno oltre i 2 metri di luce. [13.86] | 1,756.8 |
| 698 |  | Strati di Malta Pulvini e Baggioli Pila 62 | 5.88d | 2025-05-08 | 2025-05-15 | 688 | 38d | 0d | Fornitura e posa in opera di malta ad espansione contrast ... sati nel prezzo per dare il lavoro finito a regola d’arte. [44.33]; Fornitura e posa in opera di malta ad espansione contrast ... sati nel prezzo per dare il lavoro finito a regola d’arte. [22.17]; L’applicazione della malta dovrà essere effettuata previa ... are in opera un paramento perfettamente rasato e lisciato. [20.13]; CLS Strutturale in Elev. RCK 45 N/mmq A prestazione garantita secondo le UNI EN-206 e UNI 11104 ... o materiale in cantiere, getto, vibrazione e stagionatura. [2.78]; Sovrapprezzo CLS per Ritiro Compensato Da applicare alle voci di Elenco Prezzi dei cls per quals ... relativi controlli aggiuntivi (tipo § 7.2 NTC sez 2 CSA). [463.8]; Sovrapprezzo CLS per SCC Da applicare alle voci di Elenco Prezzi dei cls per qualsiasi classe di resistenza. [463.8] | 3,311.4 |
|  | 6 | **Risanamento Pile e Pulvini e Ricostruzioni Baggioli - Pila 61** |  | 2025-04-28 | 2025-05-19 |  |  |  |  |  |
| 588 |  | Bocciardatura Pulvino 61 | 2.88d | 2025-04-28 | 2025-05-01 | 578 | 40.12d | 0d | Idrodemolizione su intradossi di impalcati di opere d'art ... necessari per l'esecuzione e l'accesso al posto di lavoro. [20.15]; CEMENTO Provenienti dalle attività di costruzione e demolizione. ... ione. Compreso il terreno proveniente da siti contaminati. [1.45 T] | 724.9 |
| 598 |  | Passivazione Ferri Pila 61 | 0.88d | 2025-05-01 | 2025-05-02 | 588 | 40.12d | 0d | Delle superfici in calcetruzzo di opere d'arte e/o manufa ... ccorrenti. Per ogni metro quadrato di superficie trattata. [20.13]; Comprendente: - la raddrizzatura ed il riposizionamento d ... oi ai nuovi lavori. Per ogni metro quadrato di intervento. [20.15]; Eseguita mediante applicazione di malta cementizia monoco ... nibitori di corrosione e dispersione di polimeri acrilici. [20.15] | 157.5 |
| 608 |  | Inghisaggi Feri Baggioli Pila 61 | 1.88d | 2025-05-02 | 2025-05-06 | 598 | 40.12d | 0d | Composto da resina chimica e barra ad aderenza migliorata ... a 4 ÷6 mm del diametro della barra e comunque secondo ETA. [4028] | 787.47 |
| 618 |  | Montaggio Ferri Pulvino e Baggiolo Pila 61 | 3.88d | 2025-05-06 | 2025-05-09 | 608 | 40.12d | 0d | in fili d'acciaio, rispondente alle caratteristiche di cu ... tture rivestite. Compresa la fornitura e la posa in opera. [45.34]; Per l'ancoraggio di nuovi getti, compreso l'esecuzione de ... e solo esclusa la fornitura di ganci e/o barre di acciaio. [40.33]; Acciaio classe B450C controllato in stabilimento, di qual ... lo sfrido, ecc. Compresa la fornitura e la posa in opera. [1036.41]; Per strutture in conglomerato cementizio semplice, armato ... , escluse le armature di sostegno oltre i 2 metri di luce. [13.86] | 1,756.8 |
| 628 |  | Strati di Malta Pulvini e Baggioli Pila 61 | 5.88d | 2025-05-12 | 2025-05-19 | 618 | 40.12d | 0d | Fornitura e posa in opera di malta ad espansione contrast ... sati nel prezzo per dare il lavoro finito a regola d’arte. [44.33]; Fornitura e posa in opera di malta ad espansione contrast ... sati nel prezzo per dare il lavoro finito a regola d’arte. [22.17]; L’applicazione della malta dovrà essere effettuata previa ... are in opera un paramento perfettamente rasato e lisciato. [20.13]; CLS Strutturale in Elev. RCK 45 N/mmq A prestazione garantita secondo le UNI EN-206 e UNI 11104 ... o materiale in cantiere, getto, vibrazione e stagionatura. [2.78]; Sovrapprezzo CLS per Ritiro Compensato Da applicare alle voci di Elenco Prezzi dei cls per quals ... relativi controlli aggiuntivi (tipo § 7.2 NTC sez 2 CSA). [463.8]; Sovrapprezzo CLS per SCC Da applicare alle voci di Elenco Prezzi dei cls per qualsiasi classe di resistenza. [463.8] | 3,311.4 |

| ID | WBS | Activity | Duration | Start | Finish | Predecessors | Total float | Free float | Resources | Cost |
| --- | --- | --- | --- | --- | --- | --- | --- | --- | --- | --- |
|  | 5 | **Risanamento Pile e Pulvini e Ricostruzioni Baggioli - Pila 60** |  | 2025-04-30 | 2025-05-21 |  |  |  |  |  |
| 35 |  | Bocciardatura Pulvino 60 | 2.88d | 2025-04-30 | 2025-05-05 | 528 | 42.25d | 0d | Idrodemolizione su intradossi di impalcati di opere d'art ... necessari per l'esecuzione e l'accesso al posto di lavoro. [20.15]; CEMENTO Provenienti dalle attività di costruzione e demolizione. ... ione. Compreso il terreno proveniente da siti contaminati. [1.45 T] | 724.9 |
| 538 |  | Passivazione Ferri Pila 60 | 0.88d | 2025-05-05 | 2025-05-06 | 35 | 42.25d | 0d | Delle superfici in calcetruzzo di opere d'arte e/o manufa ... ccorrenti. Per ogni metro quadrato di superficie trattata. [20.13]; Comprendente: - la raddrizzatura ed il riposizionamento d ... oi ai nuovi lavori. Per ogni metro quadrato di intervento. [20.15]; Eseguita mediante applicazione di malta cementizia monoco ... nibitori di corrosione e dispersione di polimeri acrilici. [20.15] | 157.5 |
| 548 |  | Inghisaggi Feri Baggioli Pila 60 | 1.88d | 2025-05-06 | 2025-05-07 | 538 | 42.25d | 0d | Composto da resina chimica e barra ad aderenza migliorata ... a 4 ÷6 mm del diametro della barra e comunque secondo ETA. [4028] | 787.47 |
| 558 |  | Montaggio Ferri Pulvino e Baggiolo Pila 60 | 3.88d | 2025-05-08 | 2025-05-13 | 548 | 42.25d | 0d | in fili d'acciaio, rispondente alle caratteristiche di cu ... tture rivestite. Compresa la fornitura e la posa in opera. [45.34]; Per l'ancoraggio di nuovi getti, compreso l'esecuzione de ... e solo esclusa la fornitura di ganci e/o barre di acciaio. [40.33]; Acciaio classe B450C controllato in stabilimento, di qual ... lo sfrido, ecc. Compresa la fornitura e la posa in opera. [1036.41]; Per strutture in conglomerato cementizio semplice, armato ... , escluse le armature di sostegno oltre i 2 metri di luce. [13.86] | 1,756.8 |
| 39 |  | Strati di Malta Pulvini e Baggioli Pila 60 | 5.88d | 2025-05-13 | 2025-05-21 | 558 | 42.25d | 0d | Fornitura e posa in opera di malta ad espansione contrast ... sati nel prezzo per dare il lavoro finito a regola d’arte. [44.33]; Fornitura e posa in opera di malta ad espansione contrast ... sati nel prezzo per dare il lavoro finito a regola d’arte. [22.17]; L’applicazione della malta dovrà essere effettuata previa ... are in opera un paramento perfettamente rasato e lisciato. [20.13]; CLS Strutturale in Elev. RCK 45 N/mmq A prestazione garantita secondo le UNI EN-206 e UNI 11104 ... o materiale in cantiere, getto, vibrazione e stagionatura. [2.78]; Sovrapprezzo CLS per Ritiro Compensato Da applicare alle voci di Elenco Prezzi dei cls per quals ... relativi controlli aggiuntivi (tipo § 7.2 NTC sez 2 CSA). [463.8]; Sovrapprezzo CLS per SCC Da applicare alle voci di Elenco Prezzi dei cls per qualsiasi classe di resistenza. [463.8] | 3,311.4 |
|  | 4 | **Risanamento Pile e Pulvini e Ricostruzioni Baggioli - Pila 59** |  | 2025-05-02 | 2025-05-26 |  |  |  |  |  |
| 27 |  | Bocciardatura Pulvino 59 | 3d | 2025-05-02 | 2025-05-07 | 468 | 48.62d | 0d | Idrodemolizione su intradossi di impalcati di opere d'art ... necessari per l'esecuzione e l'accesso al posto di lavoro. [21.03]; CEMENTO Provenienti dalle attività di costruzione e demolizione. ... ione. Compreso il terreno proveniente da siti contaminati. [1.51 T] | 756.42 |
| 478 |  | Passivazione Ferri Pila 59 | 1d | 2025-05-07 | 2025-05-08 | 27 | 48.62d | 0d | Delle superfici in calcetruzzo di opere d'arte e/o manufa ... ccorrenti. Per ogni metro quadrato di superficie trattata. [23.01]; Comprendente: - la raddrizzatura ed il riposizionamento d ... oi ai nuovi lavori. Per ogni metro quadrato di intervento. [23.03]; Eseguita mediante applicazione di malta cementizia monoco ... nibitori di corrosione e dispersione di polimeri acrilici. [23.03] | 180 |
| 488 |  | Inghisaggi Feri Baggioli Pila 59 | 2d | 2025-05-08 | 2025-05-12 | 478 | 48.62d | 0d | Composto da resina chimica e barra ad aderenza migliorata ... a 4 ÷6 mm del diametro della barra e comunque secondo ETA. [4296.53] | 839.97 |
| 498 |  | Montaggio Ferri Pulvino e Baggiolo Pila 59 | 4d | 2025-05-12 | 2025-05-16 | 488 | 48.62d | 0d | in fili d'acciaio, rispondente alle caratteristiche di cu ... tture rivestite. Compresa la fornitura e la posa in opera. [46.8]; Per l'ancoraggio di nuovi getti, compreso l'esecuzione de ... e solo esclusa la fornitura di ganci e/o barre di acciaio. [41.63]; Acciaio classe B450C controllato in stabilimento, di qual ... lo sfrido, ecc. Compresa la fornitura e la posa in opera. [1069.84]; Per strutture in conglomerato cementizio semplice, armato ... , escluse le armature di sostegno oltre i 2 metri di luce. [14.31] | 1,813.47 |
| 508 |  | Strati di Malta Pulvini e Baggioli Pila 59 | 6d | 2025-05-16 | 2025-05-26 | 498 | 48.62d | 0d | Fornitura e posa in opera di malta ad espansione contrast ... sati nel prezzo per dare il lavoro finito a regola d’arte. [45.27]; Fornitura e posa in opera di malta ad espansione contrast ... sati nel prezzo per dare il lavoro finito a regola d’arte. [22.64]; L’applicazione della malta dovrà essere effettuata previa ... are in opera un paramento perfettamente rasato e lisciato. [20.56]; CLS Strutturale in Elev. RCK 45 N/mmq A prestazione garantita secondo le UNI EN-206 e UNI 11104 ... o materiale in cantiere, getto, vibrazione e stagionatura. [2.84]; Sovrapprezzo CLS per Ritiro Compensato Da applicare alle voci di Elenco Prezzi dei cls per quals ... relativi controlli aggiuntivi (tipo § 7.2 NTC sez 2 CSA). [473.67]; Sovrapprezzo CLS per SCC Da applicare alle voci di Elenco Prezzi dei cls per qualsiasi classe di resistenza. [473.67] | 3,381.85 |
|  | 3 | **Risanamento Pile e Pulvini e Ricostruzioni Baggioli - Pila 58** |  | 2025-05-14 | 2025-06-05 |  |  |  |  |  |
| 428 |  | Bocciardatura Pulvino 58 | 2.88d | 2025-05-14 | 2025-05-19 | 418 | 47d | 0d | Idrodemolizione su intradossi di impalcati di opere d'art ... necessari per l'esecuzione e l'accesso al posto di lavoro. [20.15]; CEMENTO Provenienti dalle attività di costruzione e demolizione. ... ione. Compreso il terreno proveniente da siti contaminati. [1.45 T] | 724.9 |
| 20 |  | Passivazione Ferri Pila 58 | 0.88d | 2025-05-19 | 2025-05-20 | 428 | 47d | 0d | Delle superfici in calcetruzzo di opere d'arte e/o manufa ... ccorrenti. Per ogni metro quadrato di superficie trattata. [20.13]; Comprendente: - la raddrizzatura ed il riposizionamento d ... oi ai nuovi lavori. Per ogni metro quadrato di intervento. [20.15]; Eseguita mediante applicazione di malta cementizia monoco ... nibitori di corrosione e dispersione di polimeri acrilici. [20.15] | 157.5 |
| 438 |  | Inghisaggi Feri Baggioli Pila 58 | 1.88d | 2025-05-20 | 2025-05-22 | 20 | 47d | 0d | Composto da resina chimica e barra ad aderenza migliorata ... a 4 ÷6 mm del diametro della barra e comunque secondo ETA. [4028] | 787.47 |
| 448 |  | Montaggio Ferri Pulvino e Baggiolo Pila 58 | 3.88d | 2025-05-22 | 2025-05-28 | 438 | 47d | 0d | in fili d'acciaio, rispondente alle caratteristiche di cu ... tture rivestite. Compresa la fornitura e la posa in opera. [45.34]; Per l'ancoraggio di nuovi getti, compreso l'esecuzione de ... e solo esclusa la fornitura di ganci e/o barre di acciaio. [40.33]; Acciaio classe B450C controllato in stabilimento, di qual ... lo sfrido, ecc. Compresa la fornitura e la posa in opera. [1036.41]; Per strutture in conglomerato cementizio semplice, armato ... , escluse le armature di sostegno oltre i 2 metri di luce. [13.86] | 1,756.8 |
| 23 |  | Strati di Malta Pulvini e Baggioli Pila 58 | 5.88d | 2025-05-28 | 2025-06-05 | 448 | 47d | 0d | Fornitura e posa in opera di malta ad espansione contrast ... sati nel prezzo per dare il lavoro finito a regola d’arte. [44.33]; Fornitura e posa in opera di malta ad espansione contrast ... sati nel prezzo per dare il lavoro finito a regola d’arte. [22.17]; L’applicazione della malta dovrà essere effettuata previa ... are in opera un paramento perfettamente rasato e lisciato. [20.13]; CLS Strutturale in Elev. RCK 45 N/mmq A prestazione garantita secondo le UNI EN-206 e UNI 11104 ... o materiale in cantiere, getto, vibrazione e stagionatura. [2.78]; Sovrapprezzo CLS per Ritiro Compensato Da applicare alle voci di Elenco Prezzi dei cls per quals ... relativi controlli aggiuntivi (tipo § 7.2 NTC sez 2 CSA). [463.8]; Sovrapprezzo CLS per SCC Da applicare alle voci di Elenco Prezzi dei cls per qualsiasi classe di resistenza. [463.8] | 3,311.4 |
|  | 2 | **Risanamento Pile e Pulvini e Ricostruzioni Baggioli - Pila 57** |  | 2025-05-16 | 2025-06-09 |  |  |  |  |  |
| 11 |  | Bocciardatura Pulvino 57 | 2.88d | 2025-05-16 | 2025-05-21 | 388 | 46d | 0d | Idrodemolizione su intradossi di impalcati di opere d'art ... necessari per l'esecuzione e l'accesso al posto di lavoro. [20.15]; CEMENTO Provenienti dalle attività di costruzione e demolizione. ... ione. Compreso il terreno proveniente da siti contaminati. [1.45 T] | 724.9 |
| 12 |  | Passivazione Ferri Pila 57 | 0.88d | 2025-05-21 | 2025-05-22 | 11 | 46d | 0d | Comprendente: - la raddrizzatura ed il riposizionamento d ... oi ai nuovi lavori. Per ogni metro quadrato di intervento. [20.15]; Delle superfici in calcetruzzo di opere d'arte e/o manufa ... ccorrenti. Per ogni metro quadrato di superficie trattata. [20.13]; Eseguita mediante applicazione di malta cementizia monoco ... nibitori di corrosione e dispersione di polimeri acrilici. [20.15] | 157.5 |
| 13 |  | Inghisaggi Feri Baggioli Pila 57 | 1.88d | 2025-05-22 | 2025-05-26 | 12 | 46d | 0d | Composto da resina chimica e barra ad aderenza migliorata ... a 4 ÷6 mm del diametro della barra e comunque secondo ETA. [4028] | 787.47 |
| 398 |  | Montaggio Ferri Pulvino e Baggiolo Pila 57 | 3.88d | 2025-05-26 | 2025-05-30 | 13 | 46d | 0d | in fili d'acciaio, rispondente alle caratteristiche di cu ... tture rivestite. Compresa la fornitura e la posa in opera. [45.34]; Per l'ancoraggio di nuovi getti, compreso l'esecuzione de ... e solo esclusa la fornitura di ganci e/o barre di acciaio. [40.33]; Acciaio classe B450C controllato in stabilimento, di qual ... lo sfrido, ecc. Compresa la fornitura e la posa in opera. [1036.41]; Per strutture in conglomerato cementizio semplice, armato ... , escluse le armature di sostegno oltre i 2 metri di luce. [13.86] | 1,756.8 |
| 408 |  | Strati di Malta Pulvini e Baggioli Pila 57 | 5.88d | 2025-05-30 | 2025-06-09 | 398 | 46d | 0d | Fornitura e posa in opera di malta ad espansione contrast ... sati nel prezzo per dare il lavoro finito a regola d’arte. [44.33]; Fornitura e posa in opera di malta ad espansione contrast ... sati nel prezzo per dare il lavoro finito a regola d’arte. [22.17]; L’applicazione della malta dovrà essere effettuata previa ... are in opera un paramento perfettamente rasato e lisciato. [20.13]; CLS Strutturale in Elev. RCK 45 N/mmq A prestazione garantita secondo le UNI EN-206 e UNI 11104 ... o materiale in cantiere, getto, vibrazione e stagionatura. [2.78]; Sovrapprezzo CLS per Ritiro Compensato Da applicare alle voci di Elenco Prezzi dei cls per quals ... relativi controlli aggiuntivi (tipo § 7.2 NTC sez 2 CSA). [463.8]; Sovrapprezzo CLS per SCC Da applicare alle voci di Elenco Prezzi dei cls per qualsiasi classe di resistenza. [463.8] | 3,311.4 |

| ID | WBS | Activity | Duration | Start | Finish | Predecessors | Total float | Free float | Resources | Cost | MSP Activity ID |
| --- | --- | --- | --- | --- | --- | --- | --- | --- | --- | --- | --- |
|  | 1 | **Risanamento Pile e Pulvini e Ricostruzioni Baggioli - Pila 56** |  | 2025-05-20 | 2025-06-11 |  |  |  |  |  |  |
| 338 |  | Bocciardatura Pulvino 56 | 3d | 2025-05-20 | 2025-05-23 | 328 | 47.25d | 0d | Idrodemolizione su intradossi di impalcati di opere d'art ... necessari per l'esecuzione e l'accesso al posto di lavoro. [21.03]; CEMENTO Provenienti dalle attività di costruzione e demolizione. ... ione. Compreso il terreno proveniente da siti contaminati. [1.51 T] | 756.42 |  |
| 348 |  | Passivazione Ferri Pila 56 | 1d | 2025-05-23 | 2025-05-26 | 338 | 47.25d | 0d | Delle superfici in calcetruzzo di opere d'arte e/o manufa ... ccorrenti. Per ogni metro quadrato di superficie trattata. [23.01]; Comprendente: - la raddrizzatura ed il riposizionamento d ... oi ai nuovi lavori. Per ogni metro quadrato di intervento. [23.03]; Eseguita mediante applicazione di malta cementizia monoco ... nibitori di corrosione e dispersione di polimeri acrilici. [23.03] | 180 |  |
| 358 |  | Inghisaggi Feri Baggioli Pila 56 | 2d | 2025-05-26 | 2025-05-28 | 348 | 47.25d | 0d | Composto da resina chimica e barra ad aderenza migliorata ... a 4 ÷6 mm del diametro della barra e comunque secondo ETA. [4296.53] | 839.97 |  |
| 6 |  | Montaggio Ferri Pulvino e Baggiolo Pila 56 | 4d | 2025-05-28 | 2025-06-03 | 358 | 47.25d | 0d | in fili d'acciaio, rispondente alle caratteristiche di cu ... tture rivestite. Compresa la fornitura e la posa in opera. [46.8]; Per l'ancoraggio di nuovi getti, compreso l'esecuzione de ... e solo esclusa la fornitura di ganci e/o barre di acciaio. [41.63]; Acciaio classe B450C controllato in stabilimento, di qual ... lo sfrido, ecc. Compresa la fornitura e la posa in opera. [1069.84]; Per strutture in conglomerato cementizio semplice, armato ... , escluse le armature di sostegno oltre i 2 metri di luce. [14.31] | 1,813.47 |  |
| 368 |  | Strati di Malta Pulvini e Baggioli Pila 56 | 6d | 2025-06-03 | 2025-06-11 | 6 | 47.25d | 0d | Fornitura e posa in opera di malta ad espansione contrast ... sati nel prezzo per dare il lavoro finito a regola d’arte. [45.27]; Fornitura e posa in opera di malta ad espansione contrast ... sati nel prezzo per dare il lavoro finito a regola d’arte. [22.64]; L’applicazione della malta dovrà essere effettuata previa ... are in opera un paramento perfettamente rasato e lisciato. [20.56]; CLS Strutturale in Elev. RCK 45 N/mmq A prestazione garantita secondo le UNI EN-206 e UNI 11104 ... o materiale in cantiere, getto, vibrazione e stagionatura. [2.84]; Sovrapprezzo CLS per Ritiro Compensato Da applicare alle voci di Elenco Prezzi dei cls per quals ... relativi controlli aggiuntivi (tipo § 7.2 NTC sez 2 CSA). [473.67]; Sovrapprezzo CLS per SCC Da applicare alle voci di Elenco Prezzi dei cls per qualsiasi classe di resistenza. [473.67] | 3,381.85 |  |
|  | 2 | **Ricostruzioni baggioli in testa ai pulvini e completamento risanamenti corticali CAMPATA da 55 A 31** |  | 2025-05-28 | 2025-09-23 |  |  |  |  |  |  |
|  | 25 | **Risanamento Pile e Pulvini e Ricostruzioni Baggioli - Pila 55** |  | 2025-05-28 | 2025-06-26 |  |  |  |  |  |  |
| 3308 |  | Bocciardatura Baggioli Pila 55 | 5.52d | 2025-05-28 | 2025-06-04 | 3298 | 40.7d | 0d | Idrodemolizione su intradossi di impalcati di opere d'art ... necessari per l'esecuzione e l'accesso al posto di lavoro. [20.15]; CEMENTO Provenienti dalle attività di costruzione e demolizione. ... ione. Compreso il terreno proveniente da siti contaminati. [1.45 T] | 724.9 | 211 |
| 3318 |  | Passivazione Ferri Baggioli Pila 55 | 0.88d | 2025-06-04 | 2025-06-05 | 3308 | 40.7d | 0d | Comprendente: - la raddrizzatura ed il riposizionamento d ... oi ai nuovi lavori. Per ogni metro quadrato di intervento. [20.15]; Delle superfici in calcetruzzo di opere d'arte e/o manufa ... ccorrenti. Per ogni metro quadrato di superficie trattata. [20.13]; Eseguita mediante applicazione di malta cementizia monoco ... nibitori di corrosione e dispersione di polimeri acrilici. [20.15] | 157.5 | 212 |
| 3328 |  | Inghisaggi Feri Baggioli Pila 55 | 5.03d | 2025-06-05 | 2025-06-12 | 3318 | 40.7d | 0d | Composto da resina chimica e barra ad aderenza migliorata ... a 4 ÷6 mm del diametro della barra e comunque secondo ETA. [4028] | 787.47 | 213 |
| 3338 |  | Montaggio Ferri Pulvino e Baggiolo Pila 55 | 4d | 2025-06-12 | 2025-06-18 | 3328 | 40.7d | 0d | in fili d'acciaio, rispondente alle caratteristiche di cu ... tture rivestite. Compresa la fornitura e la posa in opera. [45.34]; Comprendente: - la raddrizzatura ed il riposizionamento d ... oi ai nuovi lavori. Per ogni metro quadrato di intervento. [32]; Acciaio classe B450C controllato in stabilimento, di qual ... lo sfrido, ecc. Compresa la fornitura e la posa in opera. [1036.41]; Per strutture in conglomerato cementizio semplice, armato ... , escluse le armature di sostegno oltre i 2 metri di luce. [13.86]; Per l'ancoraggio di nuovi getti, compreso l'esecuzione de ... e solo esclusa la fornitura di ganci e/o barre di acciaio. [40.33] | 1,825.92 | 214 |
| 3348 |  | Strati di Malta Pulvini e Baggioli Pila 55 | 6d | 2025-06-18 | 2025-06-26 | 3338 | 40.7d | 0d | Fornitura e posa in opera di malta ad espansione contrast ... sati nel prezzo per dare il lavoro finito a regola d’arte. [44.33]; CLS Strutturale in Elev. RCK 45 N/mmq A prestazione garantita secondo le UNI EN-206 e UNI 11104 ... o materiale in cantiere, getto, vibrazione e stagionatura. [2.78]; Sovrapprezzo CLS per Ritiro Compensato Da applicare alle voci di Elenco Prezzi dei cls per quals ... relativi controlli aggiuntivi (tipo § 7.2 NTC sez 2 CSA). [463.8]; Sovrapprezzo CLS per SCC Da applicare alle voci di Elenco Prezzi dei cls per qualsiasi classe di resistenza. [463.8]; Fornitura e posa in opera di malta ad espansione contrast ... sati nel prezzo per dare il lavoro finito a regola d’arte. [22.17]; L’applicazione della malta dovrà essere effettuata previa ... are in opera un paramento perfettamente rasato e lisciato. [20.13] | 3,311.4 | 215 |
|  | 24 | **Risanamento Pile e Pulvini e Ricostruzioni Baggioli - Pila 54** |  | 2025-05-28 | 2025-06-27 |  |  |  |  |  |  |
| 3238 |  | Bocciardatura Baggioli Pila 54 | 5.52d | 2025-05-28 | 2025-06-05 | 3288 | 134.7d | 0d | Idrodemolizione su intradossi di impalcati di opere d'art ... necessari per l'esecuzione e l'accesso al posto di lavoro. [20.15]; CEMENTO Provenienti dalle attività di costruzione e demolizione. ... ione. Compreso il terreno proveniente da siti contaminati. [1.45 T] | 724.9 | 203 |
| 3248 |  | Passivazione Ferri Baggioli Pila 54 | 0.88d | 2025-06-05 | 2025-06-06 | 3238 | 134.7d | 0d | Comprendente: - la raddrizzatura ed il riposizionamento d ... oi ai nuovi lavori. Per ogni metro quadrato di intervento. [20.15]; Delle superfici in calcetruzzo di opere d'arte e/o manufa ... ccorrenti. Per ogni metro quadrato di superficie trattata. [20.13]; Eseguita mediante applicazione di malta cementizia monoco ... nibitori di corrosione e dispersione di polimeri acrilici. [20.15] | 157.5 | 204 |
| 3258 |  | Inghisaggi Feri Baggioli Pila 54 | 5.03d | 2025-06-06 | 2025-06-13 | 3248 | 134.7d | 0d | Composto da resina chimica e barra ad aderenza migliorata ... a 4 ÷6 mm del diametro della barra e comunque secondo ETA. [4028] | 787.47 | 205 |
| 3268 |  | Montaggio Ferri Pulvino e Baggiolo Pila 54 | 4d | 2025-06-13 | 2025-06-19 | 3258 | 134.7d | 0d | in fili d'acciaio, rispondente alle caratteristiche di cu ... tture rivestite. Compresa la fornitura e la posa in opera. [45.34]; Comprendente: - la raddrizzatura ed il riposizionamento d ... oi ai nuovi lavori. Per ogni metro quadrato di intervento. [32]; Acciaio classe B450C controllato in stabilimento, di qual ... lo sfrido, ecc. Compresa la fornitura e la posa in opera. [1036.41]; Per strutture in conglomerato cementizio semplice, armato ... , escluse le armature di sostegno oltre i 2 metri di luce. [13.86]; Per l'ancoraggio di nuovi getti, compreso l'esecuzione de ... e solo esclusa la fornitura di ganci e/o barre di acciaio. [40.33] | 1,825.92 | 206 |
| 3278 |  | Strati di Malta Pulvini e Baggioli Pila 54 | 6d | 2025-06-19 | 2025-06-27 | 3268 | 134.7d | 0d | Fornitura e posa in opera di malta ad espansione contrast ... sati nel prezzo per dare il lavoro finito a regola d’arte. [44.33]; CLS Strutturale in Elev. RCK 45 N/mmq A prestazione garantita secondo le UNI EN-206 e UNI 11104 ... o materiale in cantiere, getto, vibrazione e stagionatura. [2.78]; Sovrapprezzo CLS per Ritiro Compensato Da applicare alle voci di Elenco Prezzi dei cls per quals ... relativi controlli aggiuntivi (tipo § 7.2 NTC sez 2 CSA). [463.8]; Sovrapprezzo CLS per SCC Da applicare alle voci di Elenco Prezzi dei cls per qualsiasi classe di resistenza. [463.8]; Fornitura e posa in opera di malta ad espansione contrast ... sati nel prezzo per dare il lavoro finito a regola d’arte. [22.17]; L’applicazione della malta dovrà essere effettuata previa ... are in opera un paramento perfettamente rasato e lisciato. [20.13] | 3,311.4 | 207 |
|  | 23 | **Risanamento Pile e Pulvini e Ricostruzioni Baggioli - Pila 53** |  | 2025-05-29 | 2025-06-30 |  |  |  |  |  |  |
| 3168 |  | Bocciardatura Baggioli Pila 53 | 5.52d | 2025-05-29 | 2025-06-06 | 3218 | 137.82d | 0d | Idrodemolizione su intradossi di impalcati di opere d'art ... necessari per l'esecuzione e l'accesso al posto di lavoro. [20.15]; CEMENTO Provenienti dalle attività di costruzione e demolizione. ... ione. Compreso il terreno proveniente da siti contaminati. [1.45 T] | 724.9 | 195 |
| 3178 |  | Passivazione Ferri Baggioli Pila 53 | 0.88d | 2025-06-06 | 2025-06-09 | 3168 | 137.82d | 0d | Comprendente: - la raddrizzatura ed il riposizionamento d ... oi ai nuovi lavori. Per ogni metro quadrato di intervento. [20.15]; Delle superfici in calcetruzzo di opere d'arte e/o manufa ... ccorrenti. Per ogni metro quadrato di superficie trattata. [20.13]; Eseguita mediante applicazione di malta cementizia monoco ... nibitori di corrosione e dispersione di polimeri acrilici. [20.15] | 157.5 | 196 |
| 3188 |  | Inghisaggi Feri Baggioli Pila 53 | 5.03d | 2025-06-09 | 2025-06-16 | 3178 | 137.82d | 0d | Composto da resina chimica e barra ad aderenza migliorata ... a 4 ÷6 mm del diametro della barra e comunque secondo ETA. [4028] | 787.47 | 197 |
| 3198 |  | Montaggio Ferri Pulvino e Baggiolo Pila 53 | 4d | 2025-06-16 | 2025-06-20 | 3188 | 137.82d | 0d | in fili d'acciaio, rispondente alle caratteristiche di cu ... tture rivestite. Compresa la fornitura e la posa in opera. [45.34]; Comprendente: - la raddrizzatura ed il riposizionamento d ... oi ai nuovi lavori. Per ogni metro quadrato di intervento. [32]; Acciaio classe B450C controllato in stabilimento, di qual ... lo sfrido, ecc. Compresa la fornitura e la posa in opera. [1036.41]; Per strutture in conglomerato cementizio semplice, armato ... , escluse le armature di sostegno oltre i 2 metri di luce. [13.86]; Per l'ancoraggio di nuovi getti, compreso l'esecuzione de ... e solo esclusa la fornitura di ganci e/o barre di acciaio. [40.33] | 1,825.92 | 198 |
| 3208 |  | Strati di Malta Pulvini e Baggioli Pila 53 | 6d | 2025-06-20 | 2025-06-30 | 3198 | 137.82d | 1.12d | Fornitura e posa in opera di malta ad espansione contrast ... sati nel prezzo per dare il lavoro finito a regola d’arte. [44.33]; CLS Strutturale in Elev. RCK 45 N/mmq A prestazione garantita secondo le UNI EN-206 e UNI 11104 ... o materiale in cantiere, getto, vibrazione e stagionatura. [2.78]; Sovrapprezzo CLS per Ritiro Compensato Da applicare alle voci di Elenco Prezzi dei cls per quals ... relativi controlli aggiuntivi (tipo § 7.2 NTC sez 2 CSA). [463.8]; Sovrapprezzo CLS per SCC Da applicare alle voci di Elenco Prezzi dei cls per qualsiasi classe di resistenza. [463.8]; Fornitura e posa in opera di malta ad espansione contrast ... sati nel prezzo per dare il lavoro finito a regola d’arte. [22.17]; L’applicazione della malta dovrà essere effettuata previa ... are in opera un paramento perfettamente rasato e lisciato. [20.13] | 3,311.4 | 199 |

| ID | WBS | Activity | Duration | Start | Finish | Predecessors | Total float | Free float | Resources | Cost | MSP Activity ID |
| --- | --- | --- | --- | --- | --- | --- | --- | --- | --- | --- | --- |
|  | 22 | **Risanamento Pile e Pulvini e Ricostruzioni Baggioli - Pila 52** |  | 2025-06-06 | 2025-07-08 |  |  |  |  |  |  |
| 3118 |  | Bocciardatura Baggioli Pila 52 | 5.52d | 2025-06-06 | 2025-06-16 | 3108 | 144.82d | 0d | Idrodemolizione su intradossi di impalcati di opere d'art ... necessari per l'esecuzione e l'accesso al posto di lavoro. [20.15]; CEMENTO Provenienti dalle attività di costruzione e demolizione. ... ione. Compreso il terreno proveniente da siti contaminati. [1.45 T] | 724.9 | 187 |
| 3128 |  | Passivazione Ferri Baggioli Pila 52 | 0.88d | 2025-06-16 | 2025-06-17 | 3118 | 144.82d | 0d | Comprendente: - la raddrizzatura ed il riposizionamento d ... oi ai nuovi lavori. Per ogni metro quadrato di intervento. [20.15]; Delle superfici in calcetruzzo di opere d'arte e/o manufa ... ccorrenti. Per ogni metro quadrato di superficie trattata. [20.13]; Eseguita mediante applicazione di malta cementizia monoco ... nibitori di corrosione e dispersione di polimeri acrilici. [20.15] | 157.5 | 188 |
| 3138 |  | Inghisaggi Feri Baggioli Pila 52 | 5.03d | 2025-06-17 | 2025-06-24 | 3128 | 144.82d | 0d | Composto da resina chimica e barra ad aderenza migliorata ... a 4 ÷6 mm del diametro della barra e comunque secondo ETA. [4028] | 787.47 | 189 |
| 174 |  | Montaggio Ferri Pulvino e Baggiolo Pila 52 | 4d | 2025-06-24 | 2025-06-30 | 3138 | 144.82d | 0d | in fili d'acciaio, rispondente alle caratteristiche di cu ... tture rivestite. Compresa la fornitura e la posa in opera. [45.34]; Comprendente: - la raddrizzatura ed il riposizionamento d ... oi ai nuovi lavori. Per ogni metro quadrato di intervento. [32]; Acciaio classe B450C controllato in stabilimento, di qual ... lo sfrido, ecc. Compresa la fornitura e la posa in opera. [1036.41]; Per strutture in conglomerato cementizio semplice, armato ... , escluse le armature di sostegno oltre i 2 metri di luce. [13.86]; Per l'ancoraggio di nuovi getti, compreso l'esecuzione de ... e solo esclusa la fornitura di ganci e/o barre di acciaio. [40.33] | 1,825.92 | 190 |
| 175 |  | Strati di Malta Pulvini e Baggioli Pila 52 | 6d | 2025-06-30 | 2025-07-08 | 174 | 144.82d | 0d | Fornitura e posa in opera di malta ad espansione contrast ... sati nel prezzo per dare il lavoro finito a regola d’arte. [44.33]; CLS Strutturale in Elev. RCK 45 N/mmq A prestazione garantita secondo le UNI EN-206 e UNI 11104 ... o materiale in cantiere, getto, vibrazione e stagionatura. [2.78]; Sovrapprezzo CLS per Ritiro Compensato Da applicare alle voci di Elenco Prezzi dei cls per quals ... relativi controlli aggiuntivi (tipo § 7.2 NTC sez 2 CSA). [463.8]; Sovrapprezzo CLS per SCC Da applicare alle voci di Elenco Prezzi dei cls per qualsiasi classe di resistenza. [463.8]; Fornitura e posa in opera di malta ad espansione contrast ... sati nel prezzo per dare il lavoro finito a regola d’arte. [22.17]; L’applicazione della malta dovrà essere effettuata previa ... are in opera un paramento perfettamente rasato e lisciato. [20.13] | 3,311.4 | 191 |
|  | 21 | **Risanamento Pile e Pulvini e Ricostruzioni Baggioli - Pila 51** |  | 2025-06-10 | 2025-07-10 |  |  |  |  |  |  |
| 3048 |  | Bocciardatura Baggioli Pila 51 | 5.52d | 2025-06-10 | 2025-06-18 | 3038 | 155.07d | 0d | Idrodemolizione su intradossi di impalcati di opere d'art ... necessari per l'esecuzione e l'accesso al posto di lavoro. [20.15]; CEMENTO Provenienti dalle attività di costruzione e demolizione. ... ione. Compreso il terreno proveniente da siti contaminati. [1.45 T] | 724.9 | 179 |
| 3058 |  | Passivazione Ferri Baggioli Pila 51 | 0.88d | 2025-06-18 | 2025-06-19 | 3048 | 155.07d | 0d | Comprendente: - la raddrizzatura ed il riposizionamento d ... oi ai nuovi lavori. Per ogni metro quadrato di intervento. [20.15]; Delle superfici in calcetruzzo di opere d'arte e/o manufa ... ccorrenti. Per ogni metro quadrato di superficie trattata. [20.13]; Eseguita mediante applicazione di malta cementizia monoco ... nibitori di corrosione e dispersione di polimeri acrilici. [20.15] | 157.5 | 180 |
| 3068 |  | Inghisaggi Feri Baggioli Pila 51 | 5.03d | 2025-06-19 | 2025-06-26 | 3058 | 155.07d | 0d | Composto da resina chimica e barra ad aderenza migliorata ... a 4 ÷6 mm del diametro della barra e comunque secondo ETA. [4028] | 787.47 | 181 |
| 3078 |  | Montaggio Ferri Pulvino e Baggiolo Pila 51 | 4d | 2025-06-26 | 2025-07-02 | 3068 | 155.07d | 0d | in fili d'acciaio, rispondente alle caratteristiche di cu ... tture rivestite. Compresa la fornitura e la posa in opera. [45.34]; Comprendente: - la raddrizzatura ed il riposizionamento d ... oi ai nuovi lavori. Per ogni metro quadrato di intervento. [31]; Acciaio classe B450C controllato in stabilimento, di qual ... lo sfrido, ecc. Compresa la fornitura e la posa in opera. [1036.41]; Per strutture in conglomerato cementizio semplice, armato ... , escluse le armature di sostegno oltre i 2 metri di luce. [13.86]; Per l'ancoraggio di nuovi getti, compreso l'esecuzione de ... e solo esclusa la fornitura di ganci e/o barre di acciaio. [40.33] | 1,823.76 | 182 |
| 3088 |  | Strati di Malta Pulvini e Baggioli Pila 51 | 5.88d | 2025-07-02 | 2025-07-10 | 3078 | 155.07d | 0d | Fornitura e posa in opera di malta ad espansione contrast ... sati nel prezzo per dare il lavoro finito a regola d’arte. [44.33]; CLS Strutturale in Elev. RCK 45 N/mmq A prestazione garantita secondo le UNI EN-206 e UNI 11104 ... o materiale in cantiere, getto, vibrazione e stagionatura. [2.78]; Sovrapprezzo CLS per Ritiro Compensato Da applicare alle voci di Elenco Prezzi dei cls per quals ... relativi controlli aggiuntivi (tipo § 7.2 NTC sez 2 CSA). [463.8]; Sovrapprezzo CLS per SCC Da applicare alle voci di Elenco Prezzi dei cls per qualsiasi classe di resistenza. [463.8]; Fornitura e posa in opera di malta ad espansione contrast ... sati nel prezzo per dare il lavoro finito a regola d’arte. [22.17]; L’applicazione della malta dovrà essere effettuata previa ... are in opera un paramento perfettamente rasato e lisciato. [20.13] | 3,311.4 | 183 |
|  | 20 | **Risanamento Pile e Pulvini e Ricostruzioni Baggioli - Pila 50** |  | 2025-06-12 | 2025-07-11 |  |  |  |  |  |  |
| 2978 |  | Bocciardatura Baggioli Pila 50 | 5.52d | 2025-06-12 | 2025-06-20 | 2968 | 165.2d | 0d | Idrodemolizione su intradossi di impalcati di opere d'art ... necessari per l'esecuzione e l'accesso al posto di lavoro. [20.15]; CEMENTO Provenienti dalle attività di costruzione e demolizione. ... ione. Compreso il terreno proveniente da siti contaminati. [1.45 T] | 724.9 | 171 |
| 2988 |  | Passivazione Ferri Baggioli Pila 50 | 0.88d | 2025-06-20 | 2025-06-23 | 2978 | 165.2d | 0d | Comprendente: - la raddrizzatura ed il riposizionamento d ... oi ai nuovi lavori. Per ogni metro quadrato di intervento. [20.15]; Delle superfici in calcetruzzo di opere d'arte e/o manufa ... ccorrenti. Per ogni metro quadrato di superficie trattata. [20.13]; Eseguita mediante applicazione di malta cementizia monoco ... nibitori di corrosione e dispersione di polimeri acrilici. [20.15] | 157.5 | 172 |
| 2998 |  | Inghisaggi Feri Baggioli Pila 50 | 5.03d | 2025-06-23 | 2025-06-30 | 2988 | 165.2d | 0d | Composto da resina chimica e barra ad aderenza migliorata ... a 4 ÷6 mm del diametro della barra e comunque secondo ETA. [4028] | 787.47 | 173 |
| 3008 |  | Montaggio Ferri Pulvino e Baggiolo Pila 50 | 4d | 2025-06-30 | 2025-07-04 | 2998 | 165.2d | 0d | in fili d'acciaio, rispondente alle caratteristiche di cu ... tture rivestite. Compresa la fornitura e la posa in opera. [45.34]; Comprendente: - la raddrizzatura ed il riposizionamento d ... oi ai nuovi lavori. Per ogni metro quadrato di intervento. [31]; Acciaio classe B450C controllato in stabilimento, di qual ... lo sfrido, ecc. Compresa la fornitura e la posa in opera. [1036.41]; Per strutture in conglomerato cementizio semplice, armato ... , escluse le armature di sostegno oltre i 2 metri di luce. [13.86]; Per l'ancoraggio di nuovi getti, compreso l'esecuzione de ... e solo esclusa la fornitura di ganci e/o barre di acciaio. [40.33] | 1,823.76 | 174 |
| 3018 |  | Strati di Malta Pulvini e Baggioli Pila 50 | 5.88d | 2025-07-04 | 2025-07-11 | 3008 | 165.2d | 0d | Fornitura e posa in opera di malta ad espansione contrast ... sati nel prezzo per dare il lavoro finito a regola d’arte. [44.33]; CLS Strutturale in Elev. RCK 45 N/mmq A prestazione garantita secondo le UNI EN-206 e UNI 11104 ... o materiale in cantiere, getto, vibrazione e stagionatura. [2.78]; Sovrapprezzo CLS per Ritiro Compensato Da applicare alle voci di Elenco Prezzi dei cls per quals ... relativi controlli aggiuntivi (tipo § 7.2 NTC sez 2 CSA). [463.8]; Sovrapprezzo CLS per SCC Da applicare alle voci di Elenco Prezzi dei cls per qualsiasi classe di resistenza. [463.8]; Fornitura e posa in opera di malta ad espansione contrast ... sati nel prezzo per dare il lavoro finito a regola d’arte. [22.17]; L’applicazione della malta dovrà essere effettuata previa ... are in opera un paramento perfettamente rasato e lisciato. [20.13] | 3,311.4 | 175 |
|  | 19 | **Risanamento Pile e Pulvini e Ricostruzioni Baggioli - Pila 49** |  | 2025-06-16 | 2025-07-15 |  |  |  |  |  |  |
| 2908 |  | Bocciardatura Baggioli Pila 49 | 5.52d | 2025-06-16 | 2025-06-24 | 2898 | 175.32d | 0d | Idrodemolizione su intradossi di impalcati di opere d'art ... necessari per l'esecuzione e l'accesso al posto di lavoro. [20.15]; CEMENTO Provenienti dalle attività di costruzione e demolizione. ... ione. Compreso il terreno proveniente da siti contaminati. [1.45 T] | 724.9 | 163 |
| 2918 |  | Passivazione Ferri Baggioli Pila 49 | 0.88d | 2025-06-24 | 2025-06-24 | 2908 | 175.32d | 0d | Comprendente: - la raddrizzatura ed il riposizionamento d ... oi ai nuovi lavori. Per ogni metro quadrato di intervento. [20.15]; Delle superfici in calcetruzzo di opere d'arte e/o manufa ... ccorrenti. Per ogni metro quadrato di superficie trattata. [20.13]; Eseguita mediante applicazione di malta cementizia monoco ... nibitori di corrosione e dispersione di polimeri acrilici. [20.15] | 157.5 | 164 |
| 2928 |  | Inghisaggi Feri Baggioli Pila 49 | 5.03d | 2025-06-24 | 2025-07-01 | 2918 | 175.32d | 0d | Composto da resina chimica e barra ad aderenza migliorata ... a 4 ÷6 mm del diametro della barra e comunque secondo ETA. [4028] | 787.47 | 165 |
| 2938 |  | Montaggio Ferri Pulvino e Baggiolo Pila 49 | 4d | 2025-07-01 | 2025-07-07 | 2928 | 175.32d | 0d | in fili d'acciaio, rispondente alle caratteristiche di cu ... tture rivestite. Compresa la fornitura e la posa in opera. [45.34]; Comprendente: - la raddrizzatura ed il riposizionamento d ... oi ai nuovi lavori. Per ogni metro quadrato di intervento. [31]; Acciaio classe B450C controllato in stabilimento, di qual ... lo sfrido, ecc. Compresa la fornitura e la posa in opera. [1036.41]; Per strutture in conglomerato cementizio semplice, armato ... , escluse le armature di sostegno oltre i 2 metri di luce. [13.86]; Per l'ancoraggio di nuovi getti, compreso l'esecuzione de ... e solo esclusa la fornitura di ganci e/o barre di acciaio. [40.33] | 1,823.76 | 166 |
| 2948 |  | Strati di Malta Pulvini e Baggioli Pila 49 | 5.88d | 2025-07-07 | 2025-07-15 | 2938 | 175.32d | 0d | Fornitura e posa in opera di malta ad espansione contrast ... sati nel prezzo per dare il lavoro finito a regola d’arte. [44.33]; CLS Strutturale in Elev. RCK 45 N/mmq A prestazione garantita secondo le UNI EN-206 e UNI 11104 ... o materiale in cantiere, getto, vibrazione e stagionatura. [2.78]; Sovrapprezzo CLS per Ritiro Compensato Da applicare alle voci di Elenco Prezzi dei cls per quals ... relativi controlli aggiuntivi (tipo § 7.2 NTC sez 2 CSA). [463.8]; Sovrapprezzo CLS per SCC Da applicare alle voci di Elenco Prezzi dei cls per qualsiasi classe di resistenza. [463.8]; Fornitura e posa in opera di malta ad espansione contrast ... sati nel prezzo per dare il lavoro finito a regola d’arte. [22.17]; L’applicazione della malta dovrà essere effettuata previa ... are in opera un paramento perfettamente rasato e lisciato. [20.13] | 3,311.4 | 167 |

| ID | WBS | Activity | Duration | Start | Finish | Predecessors | Total float | Free float | Resources | Cost | MSP Activity ID |
| --- | --- | --- | --- | --- | --- | --- | --- | --- | --- | --- | --- |
|  | 18 | **Risanamento Pile e Pulvini e Ricostruzioni Baggioli - Pila 48** |  | 2025-06-18 | 2025-07-17 |  |  |  |  |  |  |
| 2838 |  | Bocciardatura Baggioli Pila 48 | 5.52d | 2025-06-18 | 2025-06-25 | 2828 | 185.45d | 0d | Idrodemolizione su intradossi di impalcati di opere d'art ... necessari per l'esecuzione e l'accesso al posto di lavoro. [20.15]; CEMENTO Provenienti dalle attività di costruzione e demolizione. ... ione. Compreso il terreno proveniente da siti contaminati. [1.45 T] | 724.9 | 155 |
| 2848 |  | Passivazione Ferri Baggioli Pila 48 | 0.88d | 2025-06-25 | 2025-06-26 | 2838 | 185.45d | 0d | Comprendente: - la raddrizzatura ed il riposizionamento d ... oi ai nuovi lavori. Per ogni metro quadrato di intervento. [20.15]; Delle superfici in calcetruzzo di opere d'arte e/o manufa ... ccorrenti. Per ogni metro quadrato di superficie trattata. [20.13]; Eseguita mediante applicazione di malta cementizia monoco ... nibitori di corrosione e dispersione di polimeri acrilici. [20.15] | 157.5 | 156 |
| 2858 |  | Inghisaggi Feri Baggioli Pila 48 | 5.03d | 2025-06-26 | 2025-07-03 | 2848 | 185.45d | 0d | Composto da resina chimica e barra ad aderenza migliorata ... a 4 ÷6 mm del diametro della barra e comunque secondo ETA. [4028] | 787.47 | 157 |
| 2868 |  | Montaggio Ferri Pulvino e Baggiolo Pila 48 | 4d | 2025-07-03 | 2025-07-09 | 2858 | 185.45d | 0d | in fili d'acciaio, rispondente alle caratteristiche di cu ... tture rivestite. Compresa la fornitura e la posa in opera. [45.34]; Comprendente: - la raddrizzatura ed il riposizionamento d ... oi ai nuovi lavori. Per ogni metro quadrato di intervento. [31]; Acciaio classe B450C controllato in stabilimento, di qual ... lo sfrido, ecc. Compresa la fornitura e la posa in opera. [1036.41]; Per strutture in conglomerato cementizio semplice, armato ... , escluse le armature di sostegno oltre i 2 metri di luce. [13.86]; Per l'ancoraggio di nuovi getti, compreso l'esecuzione de ... e solo esclusa la fornitura di ganci e/o barre di acciaio. [40.33] | 1,823.76 | 158 |
| 2878 |  | Strati di Malta Pulvini e Baggioli Pila 48 | 5.88d | 2025-07-09 | 2025-07-17 | 2868 | 185.45d | 0d | Fornitura e posa in opera di malta ad espansione contrast ... sati nel prezzo per dare il lavoro finito a regola d’arte. [44.33]; CLS Strutturale in Elev. RCK 45 N/mmq A prestazione garantita secondo le UNI EN-206 e UNI 11104 ... o materiale in cantiere, getto, vibrazione e stagionatura. [2.78]; Sovrapprezzo CLS per Ritiro Compensato Da applicare alle voci di Elenco Prezzi dei cls per quals ... relativi controlli aggiuntivi (tipo § 7.2 NTC sez 2 CSA). [463.8]; Sovrapprezzo CLS per SCC Da applicare alle voci di Elenco Prezzi dei cls per qualsiasi classe di resistenza. [463.8]; Fornitura e posa in opera di malta ad espansione contrast ... sati nel prezzo per dare il lavoro finito a regola d’arte. [22.17]; L’applicazione della malta dovrà essere effettuata previa ... are in opera un paramento perfettamente rasato e lisciato. [20.13] | 3,311.4 | 159 |
|  | 17 | **Risanamento Pile e Pulvini e Ricostruzioni Baggioli - Pila 47** |  | 2025-06-20 | 2025-07-22 |  |  |  |  |  |  |
| 2768 |  | Bocciardatura Baggioli Pila 47 | 5.52d | 2025-06-20 | 2025-06-30 | 2758 | 194.95d | 0d | Idrodemolizione su intradossi di impalcati di opere d'art ... necessari per l'esecuzione e l'accesso al posto di lavoro. [20.15]; CEMENTO Provenienti dalle attività di costruzione e demolizione. ... ione. Compreso il terreno proveniente da siti contaminati. [1.45 T] | 724.9 | 147 |
| 2778 |  | Passivazione Ferri Baggioli Pila 47 | 0.88d | 2025-06-30 | 2025-07-01 | 2768 | 194.95d | 0d | Comprendente: - la raddrizzatura ed il riposizionamento d ... oi ai nuovi lavori. Per ogni metro quadrato di intervento. [20.15]; Delle superfici in calcetruzzo di opere d'arte e/o manufa ... ccorrenti. Per ogni metro quadrato di superficie trattata. [20.13]; Eseguita mediante applicazione di malta cementizia monoco ... nibitori di corrosione e dispersione di polimeri acrilici. [20.15] | 157.5 | 148 |
| 2788 |  | Inghisaggi Feri Baggioli Pila 47 | 5.03d | 2025-07-01 | 2025-07-08 | 2778 | 194.95d | 0d | Composto da resina chimica e barra ad aderenza migliorata ... a 4 ÷6 mm del diametro della barra e comunque secondo ETA. [4028] | 787.47 | 149 |
| 2798 |  | Montaggio Ferri Pulvino e Baggiolo Pila 47 | 4d | 2025-07-08 | 2025-07-14 | 2788 | 194.95d | 0d | in fili d'acciaio, rispondente alle caratteristiche di cu ... tture rivestite. Compresa la fornitura e la posa in opera. [45.34]; Comprendente: - la raddrizzatura ed il riposizionamento d ... oi ai nuovi lavori. Per ogni metro quadrato di intervento. [31]; Acciaio classe B450C controllato in stabilimento, di qual ... lo sfrido, ecc. Compresa la fornitura e la posa in opera. [1036.41]; Per strutture in conglomerato cementizio semplice, armato ... , escluse le armature di sostegno oltre i 2 metri di luce. [13.86]; Per l'ancoraggio di nuovi getti, compreso l'esecuzione de ... e solo esclusa la fornitura di ganci e/o barre di acciaio. [40.33] | 1,823.76 | 150 |
| 2808 |  | Strati di Malta Pulvini e Baggioli Pila 47 | 5.88d | 2025-07-14 | 2025-07-22 | 2798 | 194.95d | 0d | Fornitura e posa in opera di malta ad espansione contrast ... sati nel prezzo per dare il lavoro finito a regola d’arte. [44.33]; CLS Strutturale in Elev. RCK 45 N/mmq A prestazione garantita secondo le UNI EN-206 e UNI 11104 ... o materiale in cantiere, getto, vibrazione e stagionatura. [2.78]; Sovrapprezzo CLS per Ritiro Compensato Da applicare alle voci di Elenco Prezzi dei cls per quals ... relativi controlli aggiuntivi (tipo § 7.2 NTC sez 2 CSA). [463.8]; Sovrapprezzo CLS per SCC Da applicare alle voci di Elenco Prezzi dei cls per qualsiasi classe di resistenza. [463.8]; Fornitura e posa in opera di malta ad espansione contrast ... sati nel prezzo per dare il lavoro finito a regola d’arte. [22.17]; L’applicazione della malta dovrà essere effettuata previa ... are in opera un paramento perfettamente rasato e lisciato. [20.13] | 3,311.4 | 151 |
|  | 16 | **Risanamento Pile e Pulvini e Ricostruzioni Baggioli - Pila 46** |  | 2025-07-07 | 2025-08-05 |  |  |  |  |  |  |
| 2698 |  | Bocciardatura Baggioli Pila 46 | 5.52d | 2025-07-07 | 2025-07-14 | 2688 | 196.65d | 0d | Idrodemolizione su intradossi di impalcati di opere d'art ... necessari per l'esecuzione e l'accesso al posto di lavoro. [20.15]; CEMENTO Provenienti dalle attività di costruzione e demolizione. ... ione. Compreso il terreno proveniente da siti contaminati. [1.45 T] | 724.9 | 139 |
| 2708 |  | Passivazione Ferri Baggioli Pila 46 | 0.88d | 2025-07-14 | 2025-07-15 | 2698 | 196.65d | 0d | Comprendente: - la raddrizzatura ed il riposizionamento d ... oi ai nuovi lavori. Per ogni metro quadrato di intervento. [20.15]; Delle superfici in calcetruzzo di opere d'arte e/o manufa ... ccorrenti. Per ogni metro quadrato di superficie trattata. [20.13]; Eseguita mediante applicazione di malta cementizia monoco ... nibitori di corrosione e dispersione di polimeri acrilici. [20.15] | 157.5 | 140 |
| 2718 |  | Inghisaggi Feri Baggioli Pila 46 | 5.03d | 2025-07-15 | 2025-07-22 | 2708 | 196.65d | 0d | Composto da resina chimica e barra ad aderenza migliorata ... a 4 ÷6 mm del diametro della barra e comunque secondo ETA. [4028] | 787.47 | 141 |
| 2728 |  | Montaggio Ferri Pulvino e Baggiolo Pila 46 | 4d | 2025-07-22 | 2025-07-28 | 2718 | 196.65d | 0d | in fili d'acciaio, rispondente alle caratteristiche di cu ... tture rivestite. Compresa la fornitura e la posa in opera. [45.34]; Comprendente: - la raddrizzatura ed il riposizionamento d ... oi ai nuovi lavori. Per ogni metro quadrato di intervento. [31]; Acciaio classe B450C controllato in stabilimento, di qual ... lo sfrido, ecc. Compresa la fornitura e la posa in opera. [1036.41]; Per strutture in conglomerato cementizio semplice, armato ... , escluse le armature di sostegno oltre i 2 metri di luce. [13.86]; Per l'ancoraggio di nuovi getti, compreso l'esecuzione de ... e solo esclusa la fornitura di ganci e/o barre di acciaio. [40.33] | 1,823.76 | 142 |
| 2738 |  | Strati di Malta Pulvini e Baggioli Pila 46 | 5.88d | 2025-07-28 | 2025-08-05 | 2728 | 196.65d | 0d | Fornitura e posa in opera di malta ad espansione contrast ... sati nel prezzo per dare il lavoro finito a regola d’arte. [44.33]; CLS Strutturale in Elev. RCK 45 N/mmq A prestazione garantita secondo le UNI EN-206 e UNI 11104 ... o materiale in cantiere, getto, vibrazione e stagionatura. [2.78]; Sovrapprezzo CLS per Ritiro Compensato Da applicare alle voci di Elenco Prezzi dei cls per quals ... relativi controlli aggiuntivi (tipo § 7.2 NTC sez 2 CSA). [463.8]; Sovrapprezzo CLS per SCC Da applicare alle voci di Elenco Prezzi dei cls per qualsiasi classe di resistenza. [463.8]; Fornitura e posa in opera di malta ad espansione contrast ... sati nel prezzo per dare il lavoro finito a regola d’arte. [22.17]; L’applicazione della malta dovrà essere effettuata previa ... are in opera un paramento perfettamente rasato e lisciato. [20.13] | 3,311.4 | 143 |
|  | 15 | **Risanamento Pile e Pulvini e Ricostruzioni Baggioli - Pila 45** |  | 2025-07-09 | 2025-08-07 |  |  |  |  |  |  |
| 2628 |  | Bocciardatura Baggioli Pila 45 | 5.52d | 2025-07-09 | 2025-07-16 | 2618 | 206.78d | 0d | Idrodemolizione su intradossi di impalcati di opere d'art ... necessari per l'esecuzione e l'accesso al posto di lavoro. [20.15]; CEMENTO Provenienti dalle attività di costruzione e demolizione. ... ione. Compreso il terreno proveniente da siti contaminati. [1.45 T] | 724.9 | 131 |
| 2638 |  | Passivazione Ferri Baggioli Pila 45 | 0.88d | 2025-07-16 | 2025-07-17 | 2628 | 206.78d | 0d | Comprendente: - la raddrizzatura ed il riposizionamento d ... oi ai nuovi lavori. Per ogni metro quadrato di intervento. [20.15]; Delle superfici in calcetruzzo di opere d'arte e/o manufa ... ccorrenti. Per ogni metro quadrato di superficie trattata. [20.13]; Eseguita mediante applicazione di malta cementizia monoco ... nibitori di corrosione e dispersione di polimeri acrilici. [20.15] | 157.5 | 132 |
| 2648 |  | Inghisaggi Feri Baggioli Pila 45 | 5.03d | 2025-07-17 | 2025-07-24 | 2638 | 206.78d | 0d | Composto da resina chimica e barra ad aderenza migliorata ... a 4 ÷6 mm del diametro della barra e comunque secondo ETA. [4028] | 787.47 | 133 |
| 2658 |  | Montaggio Ferri Pulvino e Baggiolo Pila 45 | 4d | 2025-07-24 | 2025-07-30 | 2648 | 206.78d | 0d | in fili d'acciaio, rispondente alle caratteristiche di cu ... tture rivestite. Compresa la fornitura e la posa in opera. [45.34]; Comprendente: - la raddrizzatura ed il riposizionamento d ... oi ai nuovi lavori. Per ogni metro quadrato di intervento. [31]; Acciaio classe B450C controllato in stabilimento, di qual ... lo sfrido, ecc. Compresa la fornitura e la posa in opera. [1036.41]; Per strutture in conglomerato cementizio semplice, armato ... , escluse le armature di sostegno oltre i 2 metri di luce. [13.86]; Per l'ancoraggio di nuovi getti, compreso l'esecuzione de ... e solo esclusa la fornitura di ganci e/o barre di acciaio. [40.33] | 1,823.76 | 134 |
| 2668 |  | Strati di Malta Pulvini e Baggioli Pila 45 | 5.88d | 2025-07-30 | 2025-08-07 | 2658 | 206.78d | 0d | Fornitura e posa in opera di malta ad espansione contrast ... sati nel prezzo per dare il lavoro finito a regola d’arte. [44.33]; CLS Strutturale in Elev. RCK 45 N/mmq A prestazione garantita secondo le UNI EN-206 e UNI 11104 ... o materiale in cantiere, getto, vibrazione e stagionatura. [2.78]; Sovrapprezzo CLS per Ritiro Compensato Da applicare alle voci di Elenco Prezzi dei cls per quals ... relativi controlli aggiuntivi (tipo § 7.2 NTC sez 2 CSA). [463.8]; Sovrapprezzo CLS per SCC Da applicare alle voci di Elenco Prezzi dei cls per qualsiasi classe di resistenza. [463.8]; Fornitura e posa in opera di malta ad espansione contrast ... sati nel prezzo per dare il lavoro finito a regola d’arte. [22.17]; L’applicazione della malta dovrà essere effettuata previa ... are in opera un paramento perfettamente rasato e lisciato. [20.13] | 3,311.4 | 135 |

| ID | WBS | Activity | Duration | Start | Finish | Predecessors | Total float | Free float | Resources | Cost | MSP Activity ID |
| --- | --- | --- | --- | --- | --- | --- | --- | --- | --- | --- | --- |
|  | 14 | **Risanamento Pile e Pulvini e Ricostruzioni Baggioli - Pila 44** |  | 2025-07-10 | 2025-08-11 |  |  |  |  |  |  |
| 2558 |  | Bocciardatura Baggioli Pila 44 | 5.52d | 2025-07-10 | 2025-07-18 | 2548 | 216.9d | 0d | Idrodemolizione su intradossi di impalcati di opere d'art ... necessari per l'esecuzione e l'accesso al posto di lavoro. [20.15]; CEMENTO Provenienti dalle attività di costruzione e demolizione. ... ione. Compreso il terreno proveniente da siti contaminati. [1.45 T] | 724.9 | 123 |
| 2568 |  | Passivazione Ferri Baggioli Pila 44 | 0.88d | 2025-07-18 | 2025-07-21 | 2558 | 216.9d | 0d | Comprendente: - la raddrizzatura ed il riposizionamento d ... oi ai nuovi lavori. Per ogni metro quadrato di intervento. [20.15]; Delle superfici in calcetruzzo di opere d'arte e/o manufa ... ccorrenti. Per ogni metro quadrato di superficie trattata. [20.13]; Eseguita mediante applicazione di malta cementizia monoco ... nibitori di corrosione e dispersione di polimeri acrilici. [20.15] | 157.5 | 124 |
| 2578 |  | Inghisaggi Feri Baggioli Pila 44 | 5.03d | 2025-07-21 | 2025-07-28 | 2568 | 216.9d | 0d | Composto da resina chimica e barra ad aderenza migliorata ... a 4 ÷6 mm del diametro della barra e comunque secondo ETA. [4028] | 787.47 | 125 |
| 2588 |  | Montaggio Ferri Pulvino e Baggiolo Pila 44 | 4d | 2025-07-28 | 2025-08-01 | 2578 | 216.9d | 0d | in fili d'acciaio, rispondente alle caratteristiche di cu ... tture rivestite. Compresa la fornitura e la posa in opera. [45.34]; Comprendente: - la raddrizzatura ed il riposizionamento d ... oi ai nuovi lavori. Per ogni metro quadrato di intervento. [31]; Acciaio classe B450C controllato in stabilimento, di qual ... lo sfrido, ecc. Compresa la fornitura e la posa in opera. [1036.41]; Per strutture in conglomerato cementizio semplice, armato ... , escluse le armature di sostegno oltre i 2 metri di luce. [13.86]; Per l'ancoraggio di nuovi getti, compreso l'esecuzione de ... e solo esclusa la fornitura di ganci e/o barre di acciaio. [40.33] | 1,823.76 | 126 |
| 2598 |  | Strati di Malta Pulvini e Baggioli Pila 44 | 5.88d | 2025-08-01 | 2025-08-11 | 2588 | 216.9d | 0d | Fornitura e posa in opera di malta ad espansione contrast ... sati nel prezzo per dare il lavoro finito a regola d’arte. [44.33]; CLS Strutturale in Elev. RCK 45 N/mmq A prestazione garantita secondo le UNI EN-206 e UNI 11104 ... o materiale in cantiere, getto, vibrazione e stagionatura. [2.78]; Sovrapprezzo CLS per Ritiro Compensato Da applicare alle voci di Elenco Prezzi dei cls per quals ... relativi controlli aggiuntivi (tipo § 7.2 NTC sez 2 CSA). [463.8]; Sovrapprezzo CLS per SCC Da applicare alle voci di Elenco Prezzi dei cls per qualsiasi classe di resistenza. [463.8]; Fornitura e posa in opera di malta ad espansione contrast ... sati nel prezzo per dare il lavoro finito a regola d’arte. [22.17]; L’applicazione della malta dovrà essere effettuata previa ... are in opera un paramento perfettamente rasato e lisciato. [20.13] | 3,311.4 | 127 |
|  | 13 | **Risanamento Pile e Pulvini e Ricostruzioni Baggioli - Pila 43** |  | 2025-07-14 | 2025-08-13 |  |  |  |  |  |  |
| 2488 |  | Bocciardatura Baggioli Pila 43 | 5.52d | 2025-07-14 | 2025-07-22 | 2478 | 227.03d | 0d | Idrodemolizione su intradossi di impalcati di opere d'art ... necessari per l'esecuzione e l'accesso al posto di lavoro. [20.15]; CEMENTO Provenienti dalle attività di costruzione e demolizione. ... ione. Compreso il terreno proveniente da siti contaminati. [1.45 T] | 724.9 | 115 |
| 2498 |  | Passivazione Ferri Baggioli Pila 43 | 0.88d | 2025-07-22 | 2025-07-23 | 2488 | 227.03d | 0d | Comprendente: - la raddrizzatura ed il riposizionamento d ... oi ai nuovi lavori. Per ogni metro quadrato di intervento. [20.15]; Delle superfici in calcetruzzo di opere d'arte e/o manufa ... ccorrenti. Per ogni metro quadrato di superficie trattata. [20.13]; Eseguita mediante applicazione di malta cementizia monoco ... nibitori di corrosione e dispersione di polimeri acrilici. [20.15] | 157.5 | 116 |
| 2508 |  | Inghisaggi Feri Baggioli Pila 43 | 5.03d | 2025-07-23 | 2025-07-30 | 2498 | 227.03d | 0d | Composto da resina chimica e barra ad aderenza migliorata ... a 4 ÷6 mm del diametro della barra e comunque secondo ETA. [4028] | 787.47 | 117 |
| 2518 |  | Montaggio Ferri Pulvino e Baggiolo Pila 43 | 4d | 2025-07-30 | 2025-08-05 | 2508 | 227.03d | 0d | in fili d'acciaio, rispondente alle caratteristiche di cu ... tture rivestite. Compresa la fornitura e la posa in opera. [45.34]; Comprendente: - la raddrizzatura ed il riposizionamento d ... oi ai nuovi lavori. Per ogni metro quadrato di intervento. [31]; Acciaio classe B450C controllato in stabilimento, di qual ... lo sfrido, ecc. Compresa la fornitura e la posa in opera. [1036.41]; Per strutture in conglomerato cementizio semplice, armato ... , escluse le armature di sostegno oltre i 2 metri di luce. [13.86]; Per l'ancoraggio di nuovi getti, compreso l'esecuzione de ... e solo esclusa la fornitura di ganci e/o barre di acciaio. [40.33] | 1,823.76 | 118 |
| 2528 |  | Strati di Malta Pulvini e Baggioli Pila 43 | 5.88d | 2025-08-05 | 2025-08-13 | 2518 | 227.03d | 0d | Fornitura e posa in opera di malta ad espansione contrast ... sati nel prezzo per dare il lavoro finito a regola d’arte. [44.33]; CLS Strutturale in Elev. RCK 45 N/mmq A prestazione garantita secondo le UNI EN-206 e UNI 11104 ... o materiale in cantiere, getto, vibrazione e stagionatura. [2.78]; Sovrapprezzo CLS per Ritiro Compensato Da applicare alle voci di Elenco Prezzi dei cls per quals ... relativi controlli aggiuntivi (tipo § 7.2 NTC sez 2 CSA). [463.8]; Sovrapprezzo CLS per SCC Da applicare alle voci di Elenco Prezzi dei cls per qualsiasi classe di resistenza. [463.8]; Fornitura e posa in opera di malta ad espansione contrast ... sati nel prezzo per dare il lavoro finito a regola d’arte. [22.17]; L’applicazione della malta dovrà essere effettuata previa ... are in opera un paramento perfettamente rasato e lisciato. [20.13] | 3,311.4 | 119 |
|  | 12 | **Risanamento Pile e Pulvini e Ricostruzioni Baggioli - Pila 42** |  | 2025-07-16 | 2025-08-14 |  |  |  |  |  |  |
| 2418 |  | Bocciardatura Baggioli Pila 42 | 5.52d | 2025-07-16 | 2025-07-24 | 2408 | 237.15d | 0d | Idrodemolizione su intradossi di impalcati di opere d'art ... necessari per l'esecuzione e l'accesso al posto di lavoro. [20.15]; CEMENTO Provenienti dalle attività di costruzione e demolizione. ... ione. Compreso il terreno proveniente da siti contaminati. [1.45 T] | 724.9 | 107 |
| 2428 |  | Passivazione Ferri Baggioli Pila 42 | 0.88d | 2025-07-24 | 2025-07-25 | 2418 | 237.15d | 0d | Comprendente: - la raddrizzatura ed il riposizionamento d ... oi ai nuovi lavori. Per ogni metro quadrato di intervento. [20.15]; Delle superfici in calcetruzzo di opere d'arte e/o manufa ... ccorrenti. Per ogni metro quadrato di superficie trattata. [20.13]; Eseguita mediante applicazione di malta cementizia monoco ... nibitori di corrosione e dispersione di polimeri acrilici. [20.15] | 157.5 | 108 |
| 2438 |  | Inghisaggi Feri Baggioli Pila 42 | 5.03d | 2025-07-25 | 2025-08-01 | 2428 | 237.15d | 0d | Composto da resina chimica e barra ad aderenza migliorata ... a 4 ÷6 mm del diametro della barra e comunque secondo ETA. [4028] | 787.47 | 109 |
| 2448 |  | Montaggio Ferri Pulvino e Baggiolo Pila 42 | 4d | 2025-08-01 | 2025-08-07 | 2438 | 237.15d | 0d | in fili d'acciaio, rispondente alle caratteristiche di cu ... tture rivestite. Compresa la fornitura e la posa in opera. [45.34]; Comprendente: - la raddrizzatura ed il riposizionamento d ... oi ai nuovi lavori. Per ogni metro quadrato di intervento. [31]; Acciaio classe B450C controllato in stabilimento, di qual ... lo sfrido, ecc. Compresa la fornitura e la posa in opera. [1036.41]; Per strutture in conglomerato cementizio semplice, armato ... , escluse le armature di sostegno oltre i 2 metri di luce. [13.86]; Per l'ancoraggio di nuovi getti, compreso l'esecuzione de ... e solo esclusa la fornitura di ganci e/o barre di acciaio. [40.33] | 1,823.76 | 110 |
| 2458 |  | Strati di Malta Pulvini e Baggioli Pila 42 | 5.88d | 2025-08-07 | 2025-08-14 | 2448 | 237.15d | 0d | Fornitura e posa in opera di malta ad espansione contrast ... sati nel prezzo per dare il lavoro finito a regola d’arte. [44.33]; CLS Strutturale in Elev. RCK 45 N/mmq A prestazione garantita secondo le UNI EN-206 e UNI 11104 ... o materiale in cantiere, getto, vibrazione e stagionatura. [2.78]; Sovrapprezzo CLS per Ritiro Compensato Da applicare alle voci di Elenco Prezzi dei cls per quals ... relativi controlli aggiuntivi (tipo § 7.2 NTC sez 2 CSA). [463.8]; Sovrapprezzo CLS per SCC Da applicare alle voci di Elenco Prezzi dei cls per qualsiasi classe di resistenza. [463.8]; Fornitura e posa in opera di malta ad espansione contrast ... sati nel prezzo per dare il lavoro finito a regola d’arte. [22.17]; L’applicazione della malta dovrà essere effettuata previa ... are in opera un paramento perfettamente rasato e lisciato. [20.13] | 3,311.4 | 111 |
|  | 11 | **Risanamento Pile e Pulvini e Ricostruzioni Baggioli - Pila 41** |  | 2025-07-18 | 2025-08-18 |  |  |  |  |  |  |
| 2348 |  | Bocciardatura Baggioli Pila 41 | 5.52d | 2025-07-18 | 2025-07-28 | 2338 | 247.28d | 0d | Idrodemolizione su intradossi di impalcati di opere d'art ... necessari per l'esecuzione e l'accesso al posto di lavoro. [20.15]; CEMENTO Provenienti dalle attività di costruzione e demolizione. ... ione. Compreso il terreno proveniente da siti contaminati. [1.45 T] | 724.9 | 99 |
| 2358 |  | Passivazione Ferri Baggioli Pila 41 | 0.88d | 2025-07-28 | 2025-07-28 | 2348 | 247.28d | 0d | Comprendente: - la raddrizzatura ed il riposizionamento d ... oi ai nuovi lavori. Per ogni metro quadrato di intervento. [20.15]; Delle superfici in calcetruzzo di opere d'arte e/o manufa ... ccorrenti. Per ogni metro quadrato di superficie trattata. [20.13]; Eseguita mediante applicazione di malta cementizia monoco ... nibitori di corrosione e dispersione di polimeri acrilici. [20.15] | 157.5 | 100 |
| 2368 |  | Inghisaggi Feri Baggioli Pila 41 | 5.03d | 2025-07-28 | 2025-08-04 | 2358 | 247.28d | 0d | Composto da resina chimica e barra ad aderenza migliorata ... a 4 ÷6 mm del diametro della barra e comunque secondo ETA. [4028] | 787.47 | 101 |
| 2378 |  | Montaggio Ferri Pulvino e Baggiolo Pila 41 | 4d | 2025-08-04 | 2025-08-08 | 2368 | 247.28d | 0d | in fili d'acciaio, rispondente alle caratteristiche di cu ... tture rivestite. Compresa la fornitura e la posa in opera. [45.34]; Comprendente: - la raddrizzatura ed il riposizionamento d ... oi ai nuovi lavori. Per ogni metro quadrato di intervento. [31]; Acciaio classe B450C controllato in stabilimento, di qual ... lo sfrido, ecc. Compresa la fornitura e la posa in opera. [1036.41]; Per strutture in conglomerato cementizio semplice, armato ... , escluse le armature di sostegno oltre i 2 metri di luce. [13.86]; Per l'ancoraggio di nuovi getti, compreso l'esecuzione de ... e solo esclusa la fornitura di ganci e/o barre di acciaio. [40.33] | 1,823.76 | 102 |
| 2388 |  | Strati di Malta Pulvini e Baggioli Pila 41 | 5.88d | 2025-08-08 | 2025-08-18 | 2378 | 247.28d | 0d | Fornitura e posa in opera di malta ad espansione contrast ... sati nel prezzo per dare il lavoro finito a regola d’arte. [44.33]; CLS Strutturale in Elev. RCK 45 N/mmq A prestazione garantita secondo le UNI EN-206 e UNI 11104 ... o materiale in cantiere, getto, vibrazione e stagionatura. [2.78]; Sovrapprezzo CLS per Ritiro Compensato Da applicare alle voci di Elenco Prezzi dei cls per quals ... relativi controlli aggiuntivi (tipo § 7.2 NTC sez 2 CSA). [463.8]; Sovrapprezzo CLS per SCC Da applicare alle voci di Elenco Prezzi dei cls per qualsiasi classe di resistenza. [463.8]; Fornitura e posa in opera di malta ad espansione contrast ... sati nel prezzo per dare il lavoro finito a regola d’arte. [22.17]; L’applicazione della malta dovrà essere effettuata previa ... are in opera un paramento perfettamente rasato e lisciato. [20.13] | 3,311.4 | 103 |

| ID | WBS | Activity | Duration | Start | Finish | Predecessors | Total float | Free float | Resources | Cost | MSP Activity ID |
| --- | --- | --- | --- | --- | --- | --- | --- | --- | --- | --- | --- |
|  | 10 | **Risanamento Pile e Pulvini e Ricostruzioni Baggioli - Pila 40** |  | 2025-07-29 | 2025-08-28 |  |  |  |  |  |  |
| 2278 |  | Bocciardatura Baggioli Pila 40 | 5.52d | 2025-07-29 | 2025-08-06 | 2268 | 251.95d | 0d | Idrodemolizione su intradossi di impalcati di opere d'art ... necessari per l'esecuzione e l'accesso al posto di lavoro. [20.15]; CEMENTO Provenienti dalle attività di costruzione e demolizione. ... ione. Compreso il terreno proveniente da siti contaminati. [1.45 T] | 726.2 | 91 |
| 2288 |  | Passivazione Ferri Baggioli Pila 40 | 0.88d | 2025-08-06 | 2025-08-07 | 2278 | 251.95d | 0d | Comprendente: - la raddrizzatura ed il riposizionamento d ... oi ai nuovi lavori. Per ogni metro quadrato di intervento. [20.15]; Delle superfici in calcetruzzo di opere d'arte e/o manufa ... ccorrenti. Per ogni metro quadrato di superficie trattata. [20.13]; Eseguita mediante applicazione di malta cementizia monoco ... nibitori di corrosione e dispersione di polimeri acrilici. [20.15] | 157.5 | 92 |
| 2298 |  | Inghisaggi Feri Baggioli Pila 40 | 5.03d | 2025-08-07 | 2025-08-14 | 2288 | 251.95d | 0d | Composto da resina chimica e barra ad aderenza migliorata ... a 4 ÷6 mm del diametro della barra e comunque secondo ETA. [4028] | 975.02 | 93 |
| 2308 |  | Montaggio Ferri Pulvino e Baggiolo Pila 40 | 4d | 2025-08-14 | 2025-08-20 | 2298 | 251.95d | 0d | in fili d'acciaio, rispondente alle caratteristiche di cu ... tture rivestite. Compresa la fornitura e la posa in opera. [45.34]; Comprendente: - la raddrizzatura ed il riposizionamento d ... oi ai nuovi lavori. Per ogni metro quadrato di intervento. [31]; Acciaio classe B450C controllato in stabilimento, di qual ... lo sfrido, ecc. Compresa la fornitura e la posa in opera. [1036.41]; Per strutture in conglomerato cementizio semplice, armato ... , escluse le armature di sostegno oltre i 2 metri di luce. [13.86]; Per l'ancoraggio di nuovi getti, compreso l'esecuzione de ... e solo esclusa la fornitura di ganci e/o barre di acciaio. [40.33] | 2,628.27 | 94 |
| 2318 |  | Strati di Malta Pulvini e Baggioli Pila 40 | 5.88d | 2025-08-20 | 2025-08-28 | 2308 | 251.95d | 0d | Fornitura e posa in opera di malta ad espansione contrast ... sati nel prezzo per dare il lavoro finito a regola d’arte. [44.33]; CLS Strutturale in Elev. RCK 45 N/mmq A prestazione garantita secondo le UNI EN-206 e UNI 11104 ... o materiale in cantiere, getto, vibrazione e stagionatura. [2.78]; Sovrapprezzo CLS per Ritiro Compensato Da applicare alle voci di Elenco Prezzi dei cls per quals ... relativi controlli aggiuntivi (tipo § 7.2 NTC sez 2 CSA). [463.8]; Sovrapprezzo CLS per SCC Da applicare alle voci di Elenco Prezzi dei cls per qualsiasi classe di resistenza. [463.8]; Fornitura e posa in opera di malta ad espansione contrast ... sati nel prezzo per dare il lavoro finito a regola d’arte. [22.17]; L’applicazione della malta dovrà essere effettuata previa ... are in opera un paramento perfettamente rasato e lisciato. [20.13] | 3,163.53 | 95 |
|  | 9 | **Risanamento Pile e Pulvini e Ricostruzioni Baggioli - Pila 39** |  | 2025-07-31 | 2025-09-01 |  |  |  |  |  |  |
| 2208 |  | Bocciardatura Baggioli Pila 39 | 5.52d | 2025-07-31 | 2025-08-08 | 2198 | 262.07d | 0d | Idrodemolizione su intradossi di impalcati di opere d'art ... necessari per l'esecuzione e l'accesso al posto di lavoro. [20.15]; CEMENTO Provenienti dalle attività di costruzione e demolizione. ... ione. Compreso il terreno proveniente da siti contaminati. [1.45 T] | 732.43 | 83 |
| 2218 |  | Passivazione Ferri Baggioli Pila 39 | 0.88d | 2025-08-08 | 2025-08-11 | 2208 | 262.07d | 0d | Comprendente: - la raddrizzatura ed il riposizionamento d ... oi ai nuovi lavori. Per ogni metro quadrato di intervento. [20.15]; Delle superfici in calcetruzzo di opere d'arte e/o manufa ... ccorrenti. Per ogni metro quadrato di superficie trattata. [20.13]; Eseguita mediante applicazione di malta cementizia monoco ... nibitori di corrosione e dispersione di polimeri acrilici. [20.15] | 157.5 | 84 |
| 2228 |  | Inghisaggi Feri Baggioli Pila 39 | 5.03d | 2025-08-11 | 2025-08-18 | 2218 | 262.07d | 0d | Composto da resina chimica e barra ad aderenza migliorata ... a 4 ÷6 mm del diametro della barra e comunque secondo ETA. [4028] | 1,007 | 85 |
| 2238 |  | Montaggio Ferri Pulvino e Baggiolo Pila 39 | 4d | 2025-08-18 | 2025-08-22 | 2228 | 262.07d | 0d | in fili d'acciaio, rispondente alle caratteristiche di cu ... tture rivestite. Compresa la fornitura e la posa in opera. [45.34]; Comprendente: - la raddrizzatura ed il riposizionamento d ... oi ai nuovi lavori. Per ogni metro quadrato di intervento. [31]; Acciaio classe B450C controllato in stabilimento, di qual ... lo sfrido, ecc. Compresa la fornitura e la posa in opera. [1036.41]; Per strutture in conglomerato cementizio semplice, armato ... , escluse le armature di sostegno oltre i 2 metri di luce. [13.86]; Per l'ancoraggio di nuovi getti, compreso l'esecuzione de ... e solo esclusa la fornitura di ganci e/o barre di acciaio. [40.33] | 2,628.27 | 86 |
| 2248 |  | Strati di Malta Pulvini e Baggioli Pila 39 | 5.88d | 2025-08-22 | 2025-09-01 | 2238 | 262.07d | 0d | Fornitura e posa in opera di malta ad espansione contrast ... sati nel prezzo per dare il lavoro finito a regola d’arte. [44.33]; CLS Strutturale in Elev. RCK 45 N/mmq A prestazione garantita secondo le UNI EN-206 e UNI 11104 ... o materiale in cantiere, getto, vibrazione e stagionatura. [2.78]; Sovrapprezzo CLS per Ritiro Compensato Da applicare alle voci di Elenco Prezzi dei cls per quals ... relativi controlli aggiuntivi (tipo § 7.2 NTC sez 2 CSA). [463.8]; Sovrapprezzo CLS per SCC Da applicare alle voci di Elenco Prezzi dei cls per qualsiasi classe di resistenza. [463.8]; Fornitura e posa in opera di malta ad espansione contrast ... sati nel prezzo per dare il lavoro finito a regola d’arte. [22.17]; L’applicazione della malta dovrà essere effettuata previa ... are in opera un paramento perfettamente rasato e lisciato. [20.13] | 3,163.53 | 87 |
|  | 8 | **Risanamento Pile e Pulvini e Ricostruzioni Baggioli - Pila 38** |  | 2025-08-04 | 2025-09-02 |  |  |  |  |  |  |
| 2138 |  | Bocciardatura Baggioli Pila 38 | 5.52d | 2025-08-04 | 2025-08-12 | 2128 | 272.2d | 0d | Idrodemolizione su intradossi di impalcati di opere d'art ... necessari per l'esecuzione e l'accesso al posto di lavoro. [20.15]; CEMENTO Provenienti dalle attività di costruzione e demolizione. ... ione. Compreso il terreno proveniente da siti contaminati. [1.45 T] | 738.67 | 75 |
| 2148 |  | Passivazione Ferri Baggioli Pila 38 | 0.88d | 2025-08-12 | 2025-08-13 | 2138 | 272.2d | 0d | Comprendente: - la raddrizzatura ed il riposizionamento d ... oi ai nuovi lavori. Per ogni metro quadrato di intervento. [20.15]; Delle superfici in calcetruzzo di opere d'arte e/o manufa ... ccorrenti. Per ogni metro quadrato di superficie trattata. [20.13]; Eseguita mediante applicazione di malta cementizia monoco ... nibitori di corrosione e dispersione di polimeri acrilici. [20.15] | 157.5 | 76 |
| 2158 |  | Inghisaggi Feri Baggioli Pila 38 | 5.03d | 2025-08-13 | 2025-08-20 | 2148 | 272.2d | 0d | Composto da resina chimica e barra ad aderenza migliorata ... a 4 ÷6 mm del diametro della barra e comunque secondo ETA. [4028] | 1,007 | 77 |
| 2168 |  | Montaggio Ferri Pulvino e Baggiolo Pila 38 | 4d | 2025-08-20 | 2025-08-26 | 2158 | 272.2d | 0d | in fili d'acciaio, rispondente alle caratteristiche di cu ... tture rivestite. Compresa la fornitura e la posa in opera. [45.34]; Comprendente: - la raddrizzatura ed il riposizionamento d ... oi ai nuovi lavori. Per ogni metro quadrato di intervento. [31]; Acciaio classe B450C controllato in stabilimento, di qual ... lo sfrido, ecc. Compresa la fornitura e la posa in opera. [1036.41]; Per strutture in conglomerato cementizio semplice, armato ... , escluse le armature di sostegno oltre i 2 metri di luce. [13.86]; Per l'ancoraggio di nuovi getti, compreso l'esecuzione de ... e solo esclusa la fornitura di ganci e/o barre di acciaio. [40.33] | 2,628.27 | 78 |
| 2178 |  | Strati di Malta Pulvini e Baggioli Pila 38 | 5.88d | 2025-08-26 | 2025-09-02 | 2168 | 272.2d | 0d | Fornitura e posa in opera di malta ad espansione contrast ... sati nel prezzo per dare il lavoro finito a regola d’arte. [44.33]; CLS Strutturale in Elev. RCK 45 N/mmq A prestazione garantita secondo le UNI EN-206 e UNI 11104 ... o materiale in cantiere, getto, vibrazione e stagionatura. [2.78]; Sovrapprezzo CLS per Ritiro Compensato Da applicare alle voci di Elenco Prezzi dei cls per quals ... relativi controlli aggiuntivi (tipo § 7.2 NTC sez 2 CSA). [463.8]; Sovrapprezzo CLS per SCC Da applicare alle voci di Elenco Prezzi dei cls per qualsiasi classe di resistenza. [463.8]; Fornitura e posa in opera di malta ad espansione contrast ... sati nel prezzo per dare il lavoro finito a regola d’arte. [22.17]; L’applicazione della malta dovrà essere effettuata previa ... are in opera un paramento perfettamente rasato e lisciato. [20.13] | 3,163.53 | 79 |
|  | 7 | **Risanamento Pile e Pulvini e Ricostruzioni Baggioli - Pila 37** |  | 2025-08-06 | 2025-09-01 |  |  |  |  |  |  |
| 2068 |  | Bocciardatura Baggioli Pila 37 | 5.52d | 2025-08-06 | 2025-08-14 | 2058 | 285.48d | 0d | Idrodemolizione su intradossi di impalcati di opere d'art ... necessari per l'esecuzione e l'accesso al posto di lavoro. [20.15]; CEMENTO Provenienti dalle attività di costruzione e demolizione. ... ione. Compreso il terreno proveniente da siti contaminati. [1.45 T] | 743.24 | 67 |
| 2078 |  | Passivazione Ferri Baggioli Pila 37 | 0.88d | 2025-08-14 | 2025-08-14 | 2068 | 285.48d | 0d | Comprendente: - la raddrizzatura ed il riposizionamento d ... oi ai nuovi lavori. Per ogni metro quadrato di intervento. [20.15]; Delle superfici in calcetruzzo di opere d'arte e/o manufa ... ccorrenti. Per ogni metro quadrato di superficie trattata. [20.13]; Eseguita mediante applicazione di malta cementizia monoco ... nibitori di corrosione e dispersione di polimeri acrilici. [20.15] | 157.5 | 68 |
| 2088 |  | Inghisaggi Feri Baggioli Pila 37 | 1.88d | 2025-08-14 | 2025-08-18 | 2078 | 285.48d | 0d | Composto da resina chimica e barra ad aderenza migliorata ... a 4 ÷6 mm del diametro della barra e comunque secondo ETA. [4028] | 1,007 | 69 |
| 2098 |  | Montaggio Ferri Pulvino e Baggiolo Pila 37 | 4d | 2025-08-18 | 2025-08-22 | 2088 | 285.48d | 0d | in fili d'acciaio, rispondente alle caratteristiche di cu ... tture rivestite. Compresa la fornitura e la posa in opera. [45.34]; Comprendente: - la raddrizzatura ed il riposizionamento d ... oi ai nuovi lavori. Per ogni metro quadrato di intervento. [31]; Acciaio classe B450C controllato in stabilimento, di qual ... lo sfrido, ecc. Compresa la fornitura e la posa in opera. [1036.41]; Per strutture in conglomerato cementizio semplice, armato ... , escluse le armature di sostegno oltre i 2 metri di luce. [13.86]; Per l'ancoraggio di nuovi getti, compreso l'esecuzione de ... e solo esclusa la fornitura di ganci e/o barre di acciaio. [40.33] | 2,628.27 | 70 |
| 2108 |  | Strati di Malta Pulvini e Baggioli Pila 37 | 5.88d | 2025-08-22 | 2025-09-01 | 2098 | 285.48d | 2.16d | Fornitura e posa in opera di malta ad espansione contrast ... sati nel prezzo per dare il lavoro finito a regola d’arte. [44.33]; CLS Strutturale in Elev. RCK 45 N/mmq A prestazione garantita secondo le UNI EN-206 e UNI 11104 ... o materiale in cantiere, getto, vibrazione e stagionatura. [2.78]; Sovrapprezzo CLS per Ritiro Compensato Da applicare alle voci di Elenco Prezzi dei cls per quals ... relativi controlli aggiuntivi (tipo § 7.2 NTC sez 2 CSA). [463.8]; Sovrapprezzo CLS per SCC Da applicare alle voci di Elenco Prezzi dei cls per qualsiasi classe di resistenza. [463.8]; Fornitura e posa in opera di malta ad espansione contrast ... sati nel prezzo per dare il lavoro finito a regola d’arte. [22.17]; L’applicazione della malta dovrà essere effettuata previa ... are in opera un paramento perfettamente rasato e lisciato. [20.13] | 3,163.53 | 71 |

| ID | WBS | Activity | Duration | Start | Finish | Predecessors | Total float | Free float | Resources | Cost | MSP Activity ID |
| --- | --- | --- | --- | --- | --- | --- | --- | --- | --- | --- | --- |
|  | 6 | **Risanamento Pile e Pulvini e Ricostruzioni Baggioli - Pila 36** |  | 2025-08-08 | 2025-09-03 |  |  |  |  |  |  |
| 1998 |  | Bocciardatura Baggioli Pila 36 | 5.52d | 2025-08-08 | 2025-08-15 | 1988 | 295.61d | 0d | Idrodemolizione su intradossi di impalcati di opere d'art ... necessari per l'esecuzione e l'accesso al posto di lavoro. [20.15]; CEMENTO Provenienti dalle attività di costruzione e demolizione. ... ione. Compreso il terreno proveniente da siti contaminati. [1.45 T] | 743.24 | 59 |
| 2008 |  | Passivazione Ferri Baggioli Pila 36 | 0.88d | 2025-08-15 | 2025-08-18 | 1998 | 295.61d | 0d | Comprendente: - la raddrizzatura ed il riposizionamento d ... oi ai nuovi lavori. Per ogni metro quadrato di intervento. [20.15]; Delle superfici in calcetruzzo di opere d'arte e/o manufa ... ccorrenti. Per ogni metro quadrato di superficie trattata. [20.13]; Eseguita mediante applicazione di malta cementizia monoco ... nibitori di corrosione e dispersione di polimeri acrilici. [20.15] | 157.5 | 60 |
| 2018 |  | Inghisaggi Feri Baggioli Pila 36 | 1.88d | 2025-08-18 | 2025-08-20 | 2008 | 295.61d | 0d | Composto da resina chimica e barra ad aderenza migliorata ... a 4 ÷6 mm del diametro della barra e comunque secondo ETA. [4028] | 1,007 | 61 |
| 2028 |  | Montaggio Ferri Pulvino e Baggiolo Pila 36 | 4d | 2025-08-20 | 2025-08-26 | 2018 | 295.61d | 0d | in fili d'acciaio, rispondente alle caratteristiche di cu ... tture rivestite. Compresa la fornitura e la posa in opera. [45.34]; Comprendente: - la raddrizzatura ed il riposizionamento d ... oi ai nuovi lavori. Per ogni metro quadrato di intervento. [31]; Acciaio classe B450C controllato in stabilimento, di qual ... lo sfrido, ecc. Compresa la fornitura e la posa in opera. [1036.41]; Per strutture in conglomerato cementizio semplice, armato ... , escluse le armature di sostegno oltre i 2 metri di luce. [13.86]; Per l'ancoraggio di nuovi getti, compreso l'esecuzione de ... e solo esclusa la fornitura di ganci e/o barre di acciaio. [40.33] | 2,628.27 | 62 |
| 2038 |  | Strati di Malta Pulvini e Baggioli Pila 36 | 5.88d | 2025-08-26 | 2025-09-03 | 2028 | 295.61d | 1.16d | Fornitura e posa in opera di malta ad espansione contrast ... sati nel prezzo per dare il lavoro finito a regola d’arte. [44.33]; CLS Strutturale in Elev. RCK 45 N/mmq A prestazione garantita secondo le UNI EN-206 e UNI 11104 ... o materiale in cantiere, getto, vibrazione e stagionatura. [2.78]; Sovrapprezzo CLS per Ritiro Compensato Da applicare alle voci di Elenco Prezzi dei cls per quals ... relativi controlli aggiuntivi (tipo § 7.2 NTC sez 2 CSA). [463.8]; Sovrapprezzo CLS per SCC Da applicare alle voci di Elenco Prezzi dei cls per qualsiasi classe di resistenza. [463.8]; Fornitura e posa in opera di malta ad espansione contrast ... sati nel prezzo per dare il lavoro finito a regola d’arte. [22.17]; L’applicazione della malta dovrà essere effettuata previa ... are in opera un paramento perfettamente rasato e lisciato. [20.13] | 3,163.53 | 63 |
|  | 5 | **Risanamento Pile e Pulvini e Ricostruzioni Baggioli - Pila 35** |  | 2025-08-12 | 2025-09-05 |  |  |  |  |  |  |
| 1928 |  | Bocciardatura Pila 35 | 5.52d | 2025-08-12 | 2025-08-19 | 1918 | 305.73d | 0d | Idrodemolizione su intradossi di impalcati di opere d'art ... necessari per l'esecuzione e l'accesso al posto di lavoro. [20.15]; CEMENTO Provenienti dalle attività di costruzione e demolizione. ... ione. Compreso il terreno proveniente da siti contaminati. [1.45 T] | 743.24 | 51 |
| 1938 |  | Passivazione Ferri Baggioli Pila 35 | 0.88d | 2025-08-19 | 2025-08-20 | 1928 | 305.73d | 0d | Comprendente: - la raddrizzatura ed il riposizionamento d ... oi ai nuovi lavori. Per ogni metro quadrato di intervento. [20.15]; Delle superfici in calcetruzzo di opere d'arte e/o manufa ... ccorrenti. Per ogni metro quadrato di superficie trattata. [20.13]; Eseguita mediante applicazione di malta cementizia monoco ... nibitori di corrosione e dispersione di polimeri acrilici. [20.15] | 157.5 | 52 |
| 1948 |  | Inghisaggi Feri Baggioli Pila 35 | 1.88d | 2025-08-20 | 2025-08-22 | 1938 | 305.73d | 0d | Composto da resina chimica e barra ad aderenza migliorata ... a 4 ÷6 mm del diametro della barra e comunque secondo ETA. [4028] | 1,007 | 53 |
| 1958 |  | Montaggio Ferri Pulvino e Baggiolo Pila 35 | 4d | 2025-08-22 | 2025-08-28 | 1948 | 305.73d | 0d | in fili d'acciaio, rispondente alle caratteristiche di cu ... tture rivestite. Compresa la fornitura e la posa in opera. [45.34]; Comprendente: - la raddrizzatura ed il riposizionamento d ... oi ai nuovi lavori. Per ogni metro quadrato di intervento. [31]; Acciaio classe B450C controllato in stabilimento, di qual ... lo sfrido, ecc. Compresa la fornitura e la posa in opera. [1036.41]; Per strutture in conglomerato cementizio semplice, armato ... , escluse le armature di sostegno oltre i 2 metri di luce. [13.86]; Per l'ancoraggio di nuovi getti, compreso l'esecuzione de ... e solo esclusa la fornitura di ganci e/o barre di acciaio. [40.33] | 2,628.27 | 54 |
| 1968 |  | Strati di Malta Pulvini e Baggioli Pila 35 | 5.88d | 2025-08-28 | 2025-09-05 | 1958 | 305.73d | 0.16d | Fornitura e posa in opera di malta ad espansione contrast ... sati nel prezzo per dare il lavoro finito a regola d’arte. [44.33]; CLS Strutturale in Elev. RCK 45 N/mmq A prestazione garantita secondo le UNI EN-206 e UNI 11104 ... o materiale in cantiere, getto, vibrazione e stagionatura. [2.78]; Sovrapprezzo CLS per Ritiro Compensato Da applicare alle voci di Elenco Prezzi dei cls per quals ... relativi controlli aggiuntivi (tipo § 7.2 NTC sez 2 CSA). [463.8]; Sovrapprezzo CLS per SCC Da applicare alle voci di Elenco Prezzi dei cls per qualsiasi classe di resistenza. [463.8]; Fornitura e posa in opera di malta ad espansione contrast ... sati nel prezzo per dare il lavoro finito a regola d’arte. [22.17]; L’applicazione della malta dovrà essere effettuata previa ... are in opera un paramento perfettamente rasato e lisciato. [20.13] | 3,163.53 | 55 |
|  | 4 | **Risanamento Pile e Pulvini e Ricostruzioni Baggioli - Pila 34** |  | 2025-08-14 | 2025-09-10 |  |  |  |  |  |  |
| 1858 |  | Bocciardatura Pila 34 | 5.52d | 2025-08-14 | 2025-08-22 | 1848 | 315.11d | 0d | Idrodemolizione su intradossi di impalcati di opere d'art ... necessari per l'esecuzione e l'accesso al posto di lavoro. [20.15]; CEMENTO Provenienti dalle attività di costruzione e demolizione. ... ione. Compreso il terreno proveniente da siti contaminati. [1.45 T] | 743.24 | 43 |
| 1868 |  | Passivazione Ferri Baggioli Pila 34 | 0.88d | 2025-08-22 | 2025-08-25 | 1858 | 315.11d | 0d | Comprendente: - la raddrizzatura ed il riposizionamento d ... oi ai nuovi lavori. Per ogni metro quadrato di intervento. [20.15]; Delle superfici in calcetruzzo di opere d'arte e/o manufa ... ccorrenti. Per ogni metro quadrato di superficie trattata. [20.13]; Eseguita mediante applicazione di malta cementizia monoco ... nibitori di corrosione e dispersione di polimeri acrilici. [20.15] | 157.5 | 44 |
| 1878 |  | Inghisaggi Feri Baggioli Pila 34 | 1.88d | 2025-08-25 | 2025-08-27 | 1868 | 315.11d | 0d | Composto da resina chimica e barra ad aderenza migliorata ... a 4 ÷6 mm del diametro della barra e comunque secondo ETA. [4028] | 1,007 | 45 |
| 1898 |  | Montaggio Ferri Pulvino e Baggiolo Pila 34 | 5.88d | 2025-08-27 | 2025-09-04 | 1878 | 315.11d | 0d | Eseguita mediante applicazione di malta cementizia monoco ... nibitori di corrosione e dispersione di polimeri acrilici. [47]; Fornitura e posa in opera di malta ad espansione contrast ... sati nel prezzo per dare il lavoro finito a regola d’arte. [47]; CLS Strutturale in Elev. RCK 45 N/mmq A prestazione garantita secondo le UNI EN-206 e UNI 11104 ... o materiale in cantiere, getto, vibrazione e stagionatura. [47]; Sovrapprezzo CLS per Ritiro Compensato Da applicare alle voci di Elenco Prezzi dei cls per quals ... relativi controlli aggiuntivi (tipo § 7.2 NTC sez 2 CSA). [47]; Sovrapprezzo CLS per SCC Da applicare alle voci di Elenco Prezzi dei cls per qualsiasi classe di resistenza. [47] | 9,022.59 | 47 |
| 1888 |  | Strati di Malta Pulvini e Baggioli Pila 34 | 4d | 2025-09-04 | 2025-09-10 | 1898 | 315.11d | 0d | Fornitura e posa in opera di malta ad espansione contrast ... sati nel prezzo per dare il lavoro finito a regola d’arte. [22.17]; Fornitura e posa in opera di malta ad espansione contrast ... sati nel prezzo per dare il lavoro finito a regola d’arte. [44.33]; L’applicazione della malta dovrà essere effettuata previa ... are in opera un paramento perfettamente rasato e lisciato. [20.13]; Sovrapprezzo CLS per SCC Da applicare alle voci di Elenco Prezzi dei cls per qualsiasi classe di resistenza. [463.8]; Sovrapprezzo CLS per Ritiro Compensato Da applicare alle voci di Elenco Prezzi dei cls per quals ... relativi controlli aggiuntivi (tipo § 7.2 NTC sez 2 CSA). [463.8]; CLS Strutturale in Elev. RCK 45 N/mmq A prestazione garantita secondo le UNI EN-206 e UNI 11104 ... o materiale in cantiere, getto, vibrazione e stagionatura. [2.78] | 3,163.53 | 46 |
|  | 3 | **Risanamento Pile e Pulvini e Ricostruzioni Baggioli - Pila 33** |  | 2025-08-19 | 2025-09-15 |  |  |  |  |  |  |
| 1788 |  | Bocciardatura Pila 33 | 5.52d | 2025-08-19 | 2025-08-27 | 1778 | 324.11d | 0d | Idrodemolizione su intradossi di impalcati di opere d'art ... necessari per l'esecuzione e l'accesso al posto di lavoro. [20.15]; CEMENTO Provenienti dalle attività di costruzione e demolizione. ... ione. Compreso il terreno proveniente da siti contaminati. [1.45 T] | 743.24 | 35 |
| 1798 |  | Passivazione Ferri Baggioli Pila 33 | 0.88d | 2025-08-27 | 2025-08-28 | 1788 | 324.11d | 0d | Comprendente: - la raddrizzatura ed il riposizionamento d ... oi ai nuovi lavori. Per ogni metro quadrato di intervento. [20.15]; Delle superfici in calcetruzzo di opere d'arte e/o manufa ... ccorrenti. Per ogni metro quadrato di superficie trattata. [20.13]; Eseguita mediante applicazione di malta cementizia monoco ... nibitori di corrosione e dispersione di polimeri acrilici. [20.15] | 157.5 | 36 |
| 1808 |  | Inghisaggi Feri Baggioli Pila 33 | 1.88d | 2025-08-28 | 2025-09-01 | 1798 | 324.11d | 0d | Composto da resina chimica e barra ad aderenza migliorata ... a 4 ÷6 mm del diametro della barra e comunque secondo ETA. [4028] | 1,007 | 37 |
| 1818 |  | Montaggio Ferri Pulvino e Baggiolo Pila 33 | 4d | 2025-09-01 | 2025-09-05 | 1808 | 324.11d | 0d | in fili d'acciaio, rispondente alle caratteristiche di cu ... tture rivestite. Compresa la fornitura e la posa in opera. [45.34]; Comprendente: - la raddrizzatura ed il riposizionamento d ... oi ai nuovi lavori. Per ogni metro quadrato di intervento. [31]; Acciaio classe B450C controllato in stabilimento, di qual ... lo sfrido, ecc. Compresa la fornitura e la posa in opera. [1036.41]; Per strutture in conglomerato cementizio semplice, armato ... , escluse le armature di sostegno oltre i 2 metri di luce. [13.86]; Per l'ancoraggio di nuovi getti, compreso l'esecuzione de ... e solo esclusa la fornitura di ganci e/o barre di acciaio. [40.33] | 2,628.27 | 38 |
| 1828 |  | Strati di Malta Pulvini e Baggioli Pila 33 | 5.88d | 2025-09-05 | 2025-09-15 | 1818 | 324.11d | 0d | Fornitura e posa in opera di malta ad espansione contrast ... sati nel prezzo per dare il lavoro finito a regola d’arte. [44.33]; CLS Strutturale in Elev. RCK 45 N/mmq A prestazione garantita secondo le UNI EN-206 e UNI 11104 ... o materiale in cantiere, getto, vibrazione e stagionatura. [2.78]; Sovrapprezzo CLS per Ritiro Compensato Da applicare alle voci di Elenco Prezzi dei cls per quals ... relativi controlli aggiuntivi (tipo § 7.2 NTC sez 2 CSA). [463.8]; Sovrapprezzo CLS per SCC Da applicare alle voci di Elenco Prezzi dei cls per qualsiasi classe di resistenza. [463.8]; Fornitura e posa in opera di malta ad espansione contrast ... sati nel prezzo per dare il lavoro finito a regola d’arte. [22.17]; L’applicazione della malta dovrà essere effettuata previa ... are in opera un paramento perfettamente rasato e lisciato. [20.13] | 3,163.53 | 39 |

| ID | WBS | Activity | Duration | Start | Finish | Predecessors | Total float | Free float | Resources | Cost | MSP Activity ID |
| --- | --- | --- | --- | --- | --- | --- | --- | --- | --- | --- | --- |
|  | 2 | **Risanamento Pile e Pulvini e Ricostruzioni Baggioli - Pila 32** |  | 2025-08-22 | 2025-09-18 |  |  |  |  |  |  |
| 1718 |  | Bocciardatura Pila 32 | 5.52d | 2025-08-22 | 2025-09-01 | 1708 | 333.11d | 0d | Idrodemolizione su intradossi di impalcati di opere d'art ... necessari per l'esecuzione e l'accesso al posto di lavoro. [20.15]; CEMENTO Provenienti dalle attività di costruzione e demolizione. ... ione. Compreso il terreno proveniente da siti contaminati. [1.45 T] | 743.24 | 27 |
| 1728 |  | Passivazione Ferri Baggioli Pila 32 | 0.88d | 2025-09-01 | 2025-09-02 | 1718 | 333.11d | 0d | Comprendente: - la raddrizzatura ed il riposizionamento d ... oi ai nuovi lavori. Per ogni metro quadrato di intervento. [20.15]; Delle superfici in calcetruzzo di opere d'arte e/o manufa ... ccorrenti. Per ogni metro quadrato di superficie trattata. [20.13]; Eseguita mediante applicazione di malta cementizia monoco ... nibitori di corrosione e dispersione di polimeri acrilici. [20.15] | 157.5 | 28 |
| 1738 |  | Inghisaggi Feri Baggioli Pila 32 | 1.88d | 2025-09-02 | 2025-09-04 | 1728 | 333.11d | 0d | Composto da resina chimica e barra ad aderenza migliorata ... a 4 ÷6 mm del diametro della barra e comunque secondo ETA. [4028] | 1,007 | 29 |
| 1748 |  | Strati di Malta Pulvini e Baggioli Pila 32 | 4d | 2025-09-04 | 2025-09-10 | 1738 | 333.11d | 0d | Fornitura e posa in opera di malta ad espansione contrast ... sati nel prezzo per dare il lavoro finito a regola d’arte. [22.17]; Fornitura e posa in opera di malta ad espansione contrast ... sati nel prezzo per dare il lavoro finito a regola d’arte. [44.33]; L’applicazione della malta dovrà essere effettuata previa ... are in opera un paramento perfettamente rasato e lisciato. [20.13]; CLS Strutturale in Elev. RCK 45 N/mmq A prestazione garantita secondo le UNI EN-206 e UNI 11104 ... o materiale in cantiere, getto, vibrazione e stagionatura. [2.78]; Sovrapprezzo CLS per SCC Da applicare alle voci di Elenco Prezzi dei cls per qualsiasi classe di resistenza. [463.8]; Sovrapprezzo CLS per Ritiro Compensato Da applicare alle voci di Elenco Prezzi dei cls per quals ... relativi controlli aggiuntivi (tipo § 7.2 NTC sez 2 CSA). [463.8] | 3,163.53 | 30 |
| 1758 |  | Montaggio Ferri Pulvino e Baggiolo Pila 32 | 5.88d | 2025-09-10 | 2025-09-18 | 1748 | 333.11d | 0d | Eseguita mediante applicazione di malta cementizia monoco ... nibitori di corrosione e dispersione di polimeri acrilici. [47]; Fornitura e posa in opera di malta ad espansione contrast ... sati nel prezzo per dare il lavoro finito a regola d’arte. [47]; CLS Strutturale in Elev. RCK 45 N/mmq A prestazione garantita secondo le UNI EN-206 e UNI 11104 ... o materiale in cantiere, getto, vibrazione e stagionatura. [47]; Sovrapprezzo CLS per Ritiro Compensato Da applicare alle voci di Elenco Prezzi dei cls per quals ... relativi controlli aggiuntivi (tipo § 7.2 NTC sez 2 CSA). [47]; Sovrapprezzo CLS per SCC Da applicare alle voci di Elenco Prezzi dei cls per qualsiasi classe di resistenza. [47] | 9,022.59 | 31 |
|  | 1 | **Risanamento Pile e Pulvini e Ricostruzioni Baggioli - Pila 31** |  | 2025-08-27 | 2025-09-23 |  |  |  |  |  |  |
| 1648 |  | Bocciardatura Pila 31 | 5.52d | 2025-08-27 | 2025-09-04 | 1638 | 342.11d | 0d | Idrodemolizione su intradossi di impalcati di opere d'art ... necessari per l'esecuzione e l'accesso al posto di lavoro. [20.15]; CEMENTO Provenienti dalle attività di costruzione e demolizione. ... ione. Compreso il terreno proveniente da siti contaminati. [1.45 T] | 743.24 | 19 |
| 1658 |  | Passivazione Ferri Baggioli Pila 31 | 0.88d | 2025-09-04 | 2025-09-05 | 1648 | 342.11d | 0d | Comprendente: - la raddrizzatura ed il riposizionamento d ... oi ai nuovi lavori. Per ogni metro quadrato di intervento. [20.15]; Delle superfici in calcetruzzo di opere d'arte e/o manufa ... ccorrenti. Per ogni metro quadrato di superficie trattata. [20.13]; Eseguita mediante applicazione di malta cementizia monoco ... nibitori di corrosione e dispersione di polimeri acrilici. [20.15] | 157.5 | 20 |
| 1668 |  | Inghisaggi Feri Baggioli Pila 31 | 1.88d | 2025-09-05 | 2025-09-09 | 1658 | 342.11d | 0d | Composto da resina chimica e barra ad aderenza migliorata ... a 4 ÷6 mm del diametro della barra e comunque secondo ETA. [4028] | 1,007 | 21 |
| 1678 |  | Montaggio Ferri Pulvino e Baggiolo Pila 31 | 4d | 2025-09-09 | 2025-09-15 | 1668 | 342.11d | 0d | in fili d'acciaio, rispondente alle caratteristiche di cu ... tture rivestite. Compresa la fornitura e la posa in opera. [45.34]; Comprendente: - la raddrizzatura ed il riposizionamento d ... oi ai nuovi lavori. Per ogni metro quadrato di intervento. [31]; Acciaio classe B450C controllato in stabilimento, di qual ... lo sfrido, ecc. Compresa la fornitura e la posa in opera. [1036.41]; Per strutture in conglomerato cementizio semplice, armato ... , escluse le armature di sostegno oltre i 2 metri di luce. [13.86]; Per l'ancoraggio di nuovi getti, compreso l'esecuzione de ... e solo esclusa la fornitura di ganci e/o barre di acciaio. [40.33] | 2,628.27 | 22 |
| 1688 |  | Strati di Malta Pulvini e Baggioli Pila 31 | 5.88d | 2025-09-15 | 2025-09-23 | 1678 | 342.11d | 0d | Fornitura e posa in opera di malta ad espansione contrast ... sati nel prezzo per dare il lavoro finito a regola d’arte. [44.33]; CLS Strutturale in Elev. RCK 45 N/mmq A prestazione garantita secondo le UNI EN-206 e UNI 11104 ... o materiale in cantiere, getto, vibrazione e stagionatura. [2.78]; Sovrapprezzo CLS per Ritiro Compensato Da applicare alle voci di Elenco Prezzi dei cls per quals ... relativi controlli aggiuntivi (tipo § 7.2 NTC sez 2 CSA). [463.8]; Sovrapprezzo CLS per SCC Da applicare alle voci di Elenco Prezzi dei cls per qualsiasi classe di resistenza. [463.8]; Fornitura e posa in opera di malta ad espansione contrast ... sati nel prezzo per dare il lavoro finito a regola d’arte. [22.17]; L’applicazione della malta dovrà essere effettuata previa ... are in opera un paramento perfettamente rasato e lisciato. [20.13] | 3,163.53 | 23 |
|  | 004 | **APPARECCHI DI APPOGGIO E GIUNTI** |  | 2026-08-13 | 2027-03-18 |  |  |  |  |  |  |
| 172 |  | Realizzazione dei giunti di dilatazione 55 - 31 | 30d | 2026-08-13 | 2026-09-23 | 171 SS+5d | 105d | 0d | Avente le caratteristiche tecniche prescritte dal Capitol ... iunti o appoggi. Compresa la fornitura e la posa in opera. [2654.72]; Lavori d'inghisaggio appoggi mediante applicazioni di mal ... necessari per l'esecuzione e l'accesso al posto di lavoro. [128]; Fornitura e posa in opera di isolatori elastomerici - mar ... atta salva la riduzione per il volume eccedente i 120 dmc. [5120]; Per impalcati di ponti e viadotti realizzato con elementi ... ta regola d'arte. PER ESCURSIONI TRASVERSALI FINO A 50 MM. [12.27]; Di cui alla voce precedente. PER ESCURSIONI TRASVERSALI OLTRE A 50 MM. [52157.1]; Fornitura e posa in opera di giunto adatto ad assorbire s ... a perfetta regola d'arte secondo le indicazioni della D.L. [1.6]; Per disallineamento verticale adottato nei collegamenti t ... pera compresi tutti i magisteri e le forniture necessarie. [80] | 521,248.33 |  |
| 261 |  | Realizzazione dei giunti di dilatazione 76 - 56 | 30d | 2027-02-05 | 2027-03-18 | 260 SS+5d | 0d |  | Avente le caratteristiche tecniche prescritte dal Capitol ... iunti o appoggi. Compresa la fornitura e la posa in opera. [3246.26]; Lavori d'inghisaggio appoggi mediante applicazioni di mal ... necessari per l'esecuzione e l'accesso al posto di lavoro. [156.52]; Fornitura e posa in opera di isolatori elastomerici - mar ... atta salva la riduzione per il volume eccedente i 120 dmc. [6260.87]; Per impalcati di ponti e viadotti realizzato con elementi ... ta regola d'arte. PER ESCURSIONI TRASVERSALI FINO A 50 MM. [15]; Di cui alla voce precedente. PER ESCURSIONI TRASVERSALI OLTRE A 50 MM. [63779]; Fornitura e posa in opera di giunto adatto ad assorbire s ... a perfetta regola d'arte secondo le indicazioni della D.L. [1.96]; Per disallineamento verticale adottato nei collegamenti t ... pera compresi tutti i magisteri e le forniture necessarie. [98] | 637,583.19 |  |
|  | 003 | **NUOVO IMPALCATO IN ACCIAIO CLS** |  | 2025-03-27 | 2027-02-18 |  |  |  |  |  |  |
|  | 1 | **Posa travi impalcato Campata da 76 a 56** |  | 2025-03-27 | 2025-08-22 |  |  |  |  |  |  |
| 126 |  | Posa travi impalcato Campata 76 | 4d | 2025-03-27 | 2025-04-01 | 1618, 43 | 18d | 0d | STRUTTURE IN ACCIAIO Per l'esecuzione di strutture di ponti o viadotti, dato i ... per dare compiuta la lavorazione a perfetta regola d'arte. [114816] | 318,040.32 |  |
| 127 |  | Posa travi impalcato Campata 75 | 4d | 2025-04-02 | 2025-04-07 | 126, 1548 | 18d | 0d | STRUTTURE IN ACCIAIO Per l'esecuzione di strutture di ponti o viadotti, dato i ... per dare compiuta la lavorazione a perfetta regola d'arte. [114816] | 318,040.32 |  |
| 128 |  | Posa travi impalcato Campata 74 | 4d | 2025-04-08 | 2025-04-11 | 127, 1478 | 18d | 0d | STRUTTURE IN ACCIAIO Per l'esecuzione di strutture di ponti o viadotti, dato i ... per dare compiuta la lavorazione a perfetta regola d'arte. [114816] | 318,040.32 |  |
| 129 |  | Posa travi impalcato Campata 73 | 4d | 2025-04-14 | 2025-04-17 | 128, 1418 | 18d | 0d | STRUTTURE IN ACCIAIO Per l'esecuzione di strutture di ponti o viadotti, dato i ... per dare compiuta la lavorazione a perfetta regola d'arte. [114816] | 318,040.32 |  |
| 130 |  | Posa travi impalcato Campata 72 | 4d | 2025-04-18 | 2025-04-23 | 129, 1348 | 18d | 0d | STRUTTURE IN ACCIAIO Per l'esecuzione di strutture di ponti o viadotti, dato i ... per dare compiuta la lavorazione a perfetta regola d'arte. [114816] | 318,040.32 |  |
| 131 |  | Posa travi impalcato Campata 71 | 4d | 2025-04-24 | 2025-04-29 | 130, 1278 | 18d | 0d | STRUTTURE IN ACCIAIO Per l'esecuzione di strutture di ponti o viadotti, dato i ... per dare compiuta la lavorazione a perfetta regola d'arte. [114816] | 318,040.32 |  |
| 132 |  | Posa travi impalcato Campata 70 | 4d | 2025-04-30 | 2025-05-05 | 131, 1218 | 18d | 0d | STRUTTURE IN ACCIAIO Per l'esecuzione di strutture di ponti o viadotti, dato i ... per dare compiuta la lavorazione a perfetta regola d'arte. [114816] | 318,040.32 |  |
| 133 |  | Posa travi impalcato Campata 69 | 4d | 2025-05-06 | 2025-05-09 | 132, 1148 | 18d | 0d | STRUTTURE IN ACCIAIO Per l'esecuzione di strutture di ponti o viadotti, dato i ... per dare compiuta la lavorazione a perfetta regola d'arte. [114816] | 318,040.32 |  |
| 134 |  | Posa travi impalcato Campata 68 | 4d | 2025-05-12 | 2025-05-15 | 133, 1078 | 18d | 0d | STRUTTURE IN ACCIAIO Per l'esecuzione di strutture di ponti o viadotti, dato i ... per dare compiuta la lavorazione a perfetta regola d'arte. [114816] | 318,040.32 |  |
| 135 |  | Posa travi impalcato Campata 67 | 4d | 2025-05-16 | 2025-05-21 | 134, 1028 | 18d | 0d | STRUTTURE IN ACCIAIO Per l'esecuzione di strutture di ponti o viadotti, dato i ... per dare compiuta la lavorazione a perfetta regola d'arte. [114816] | 318,040.32 |  |
| 136 |  | Posa travi impalcato Campata 66 | 4d | 2025-05-22 | 2025-05-27 | 135, 958 | 18d | 0d | STRUTTURE IN ACCIAIO Per l'esecuzione di strutture di ponti o viadotti, dato i ... per dare compiuta la lavorazione a perfetta regola d'arte. [114816] | 318,040.32 |  |
| 137 |  | Posa travi impalcato Campata 65 | 4d | 2025-05-28 | 2025-06-02 | 136, 888 | 18d | 0d | STRUTTURE IN ACCIAIO Per l'esecuzione di strutture di ponti o viadotti, dato i ... per dare compiuta la lavorazione a perfetta regola d'arte. [114816] | 318,040.32 |  |
| 138 |  | Posa travi impalcato Campata 64 | 4d | 2025-06-03 | 2025-06-06 | 137, 818 | 18d | 0d | STRUTTURE IN ACCIAIO Per l'esecuzione di strutture di ponti o viadotti, dato i ... per dare compiuta la lavorazione a perfetta regola d'arte. [114816] | 318,040.32 |  |
| 139 |  | Posa travi impalcato Campata 63 | 4d | 2025-06-09 | 2025-06-12 | 138, 768 | 18d | 0d | STRUTTURE IN ACCIAIO Per l'esecuzione di strutture di ponti o viadotti, dato i ... per dare compiuta la lavorazione a perfetta regola d'arte. [114816] | 318,040.32 |  |
| 140 |  | Posa travi impalcato Campata 62 | 4d | 2025-06-13 | 2025-06-18 | 139, 698 | 18d | 0d | STRUTTURE IN ACCIAIO Per l'esecuzione di strutture di ponti o viadotti, dato i ... per dare compiuta la lavorazione a perfetta regola d'arte. [114816] | 318,040.32 |  |
| 141 |  | Posa travi impalcato Campata 61 | 4d | 2025-06-19 | 2025-06-24 | 140, 628 | 18d | 0d | STRUTTURE IN ACCIAIO Per l'esecuzione di strutture di ponti o viadotti, dato i ... per dare compiuta la lavorazione a perfetta regola d'arte. [114816] | 318,040.32 |  |
| 142 |  | Posa travi impalcato Campata 60 | 4d | 2025-06-25 | 2025-06-30 | 141, 39 | 18d | 0d | STRUTTURE IN ACCIAIO Per l'esecuzione di strutture di ponti o viadotti, dato i ... per dare compiuta la lavorazione a perfetta regola d'arte. [114816] | 318,040.32 |  |
| 143 |  | Posa travi impalcato Campata 59 | 4d | 2025-07-01 | 2025-07-04 | 142, 508 | 23d |  | STRUTTURE IN ACCIAIO Per l'esecuzione di strutture di ponti o viadotti, dato i ... per dare compiuta la lavorazione a perfetta regola d'arte. [114816] | 318,040.32 |  |
| 144 |  | Posa travi impalcato Campata 58 | 4d | 2025-08-07 | 2025-08-12 | 143, 21, 458 | 0d |  | STRUTTURE IN ACCIAIO Per l'esecuzione di strutture di ponti o viadotti, dato i ... per dare compiuta la lavorazione a perfetta regola d'arte. [114816] | 318,040.32 |  |
| 145 |  | Posa travi impalcato Campata 57 | 4d | 2025-08-13 | 2025-08-18 | 144, 16 | 0d |  | STRUTTURE IN ACCIAIO Per l'esecuzione di strutture di ponti o viadotti, dato i ... per dare compiuta la lavorazione a perfetta regola d'arte. [114816] | 318,040.32 |  |
| 146 |  | Posa travi impalcato Campata 56 | 4d | 2025-08-19 | 2025-08-22 | 145, 378 | 0d |  | STRUTTURE IN ACCIAIO Per l'esecuzione di strutture di ponti o viadotti, dato i ... per dare compiuta la lavorazione a perfetta regola d'arte. [114816] | 318,040.32 |  |

| ID | WBS | Activity | Duration | Start | Finish | Predecessors | Total float | Free float | Resources | Cost |
| --- | --- | --- | --- | --- | --- | --- | --- | --- | --- | --- |
|  | 2 | **Posa travi impalcato - Campata da 55 a 31** |  | 2025-08-25 | 2026-01-13 |  |  |  |  |  |
| 207 |  | Posa travi impalcato Campata 55 | 4d | 2025-08-25 | 2025-08-28 | 146, 71, 54, 48, 43, 3358 | 0d |  | STRUTTURE IN ACCIAIO Per l'esecuzione di strutture di ponti o viadotti, dato i ... per dare compiuta la lavorazione a perfetta regola d'arte. [114816] | 318,040.32 |
| 208 |  | Posa travi impalcato Campata 54 | 4d | 2025-08-29 | 2025-09-03 | 207, 3228 | 92d | 0d | STRUTTURE IN ACCIAIO Per l'esecuzione di strutture di ponti o viadotti, dato i ... per dare compiuta la lavorazione a perfetta regola d'arte. [114816] | 318,040.32 |
| 209 |  | Posa travi impalcato Campata 53 | 4d | 2025-09-04 | 2025-09-09 | 208, 3158 | 92d | 0d | STRUTTURE IN ACCIAIO Per l'esecuzione di strutture di ponti o viadotti, dato i ... per dare compiuta la lavorazione a perfetta regola d'arte. [114816] | 318,040.32 |
| 210 |  | Posa travi impalcato Campata 52 | 4d | 2025-09-10 | 2025-09-15 | 209, 3148 | 100d | 0d | STRUTTURE IN ACCIAIO Per l'esecuzione di strutture di ponti o viadotti, dato i ... per dare compiuta la lavorazione a perfetta regola d'arte. [114816] | 318,040.32 |
| 211 |  | Posa travi impalcato Campata 51 | 4d | 2025-09-16 | 2025-09-19 | 210, 3098 | 108d | 0d | STRUTTURE IN ACCIAIO Per l'esecuzione di strutture di ponti o viadotti, dato i ... per dare compiuta la lavorazione a perfetta regola d'arte. [114816] | 318,040.32 |
| 212 |  | Posa travi impalcato Campata 50 | 4d | 2025-09-22 | 2025-09-25 | 211, 3028 | 116d | 0d | STRUTTURE IN ACCIAIO Per l'esecuzione di strutture di ponti o viadotti, dato i ... per dare compiuta la lavorazione a perfetta regola d'arte. [114816] | 318,040.32 |
| 213 |  | Posa travi impalcato Campata 49 | 4d | 2025-09-26 | 2025-10-01 | 212, 2958 | 124d | 0d | STRUTTURE IN ACCIAIO Per l'esecuzione di strutture di ponti o viadotti, dato i ... per dare compiuta la lavorazione a perfetta regola d'arte. [114816] | 318,040.32 |
| 214 |  | Posa travi impalcato Campata 48 | 4d | 2025-10-02 | 2025-10-07 | 213, 2888 | 132d | 0d | STRUTTURE IN ACCIAIO Per l'esecuzione di strutture di ponti o viadotti, dato i ... per dare compiuta la lavorazione a perfetta regola d'arte. [114816] | 318,040.32 |
| 215 |  | Posa travi impalcato Campata 47 | 4d | 2025-10-08 | 2025-10-13 | 214, 2818 | 140d | 0d | STRUTTURE IN ACCIAIO Per l'esecuzione di strutture di ponti o viadotti, dato i ... per dare compiuta la lavorazione a perfetta regola d'arte. [114816] | 318,040.32 |
| 216 |  | Posa travi impalcato Campata 46 | 4d | 2025-10-14 | 2025-10-17 | 215, 2748 | 148d | 0d | STRUTTURE IN ACCIAIO Per l'esecuzione di strutture di ponti o viadotti, dato i ... per dare compiuta la lavorazione a perfetta regola d'arte. [114816] | 318,040.32 |
| 217 |  | Posa travi impalcato Campata 45 | 4d | 2025-10-20 | 2025-10-23 | 216, 2678 | 156d | 0d | STRUTTURE IN ACCIAIO Per l'esecuzione di strutture di ponti o viadotti, dato i ... per dare compiuta la lavorazione a perfetta regola d'arte. [114816] | 318,040.32 |
| 218 |  | Posa travi impalcato Campata 44 | 4d | 2025-10-24 | 2025-10-29 | 217, 2608 | 164d | 0d | STRUTTURE IN ACCIAIO Per l'esecuzione di strutture di ponti o viadotti, dato i ... per dare compiuta la lavorazione a perfetta regola d'arte. [114816] | 318,040.32 |
| 219 |  | Posa travi impalcato Campata 43 | 4d | 2025-10-30 | 2025-11-04 | 218, 2538 | 172d | 0d | STRUTTURE IN ACCIAIO Per l'esecuzione di strutture di ponti o viadotti, dato i ... per dare compiuta la lavorazione a perfetta regola d'arte. [114816] | 318,040.32 |
| 220 |  | Posa travi impalcato Campata 42 | 4d | 2025-11-05 | 2025-11-10 | 219, 2468 | 180d | 0d | STRUTTURE IN ACCIAIO Per l'esecuzione di strutture di ponti o viadotti, dato i ... per dare compiuta la lavorazione a perfetta regola d'arte. [114816] | 318,040.32 |
| 221 |  | Posa travi impalcato Campata 41 | 4d | 2025-11-11 | 2025-11-14 | 220, 2398 | 188d | 0d | STRUTTURE IN ACCIAIO Per l'esecuzione di strutture di ponti o viadotti, dato i ... per dare compiuta la lavorazione a perfetta regola d'arte. [114816] | 318,040.32 |
| 222 |  | Posa travi impalcato Campata 40 | 4d | 2025-11-17 | 2025-11-20 | 221, 2328 | 196d | 0d | STRUTTURE IN ACCIAIO Per l'esecuzione di strutture di ponti o viadotti, dato i ... per dare compiuta la lavorazione a perfetta regola d'arte. [114816] | 318,040.32 |
| 223 |  | Posa travi impalcato Campata 39 | 4d | 2025-11-21 | 2025-11-26 | 222, 2258 | 204d | 0d | STRUTTURE IN ACCIAIO Per l'esecuzione di strutture di ponti o viadotti, dato i ... per dare compiuta la lavorazione a perfetta regola d'arte. [114816] | 318,040.32 |
| 224 |  | Posa travi impalcato Campata 38 | 4d | 2025-11-27 | 2025-12-02 | 223, 2188 | 212d | 0d | STRUTTURE IN ACCIAIO Per l'esecuzione di strutture di ponti o viadotti, dato i ... per dare compiuta la lavorazione a perfetta regola d'arte. [114816] | 318,040.32 |
| 225 |  | Posa travi impalcato Campata 37 | 4d | 2025-12-03 | 2025-12-08 | 224, 2118 | 220d | 0d | STRUTTURE IN ACCIAIO Per l'esecuzione di strutture di ponti o viadotti, dato i ... per dare compiuta la lavorazione a perfetta regola d'arte. [114816] | 318,040.32 |
| 226 |  | Posa travi impalcato Campata 36 | 4d | 2025-12-09 | 2025-12-12 | 225, 2048 | 228d | 0d | STRUTTURE IN ACCIAIO Per l'esecuzione di strutture di ponti o viadotti, dato i ... per dare compiuta la lavorazione a perfetta regola d'arte. [114816] | 318,040.32 |
| 227 |  | Posa travi impalcato Campata 35 | 4d | 2025-12-15 | 2025-12-18 | 226, 1978 | 236d | 0d | STRUTTURE IN ACCIAIO Per l'esecuzione di strutture di ponti o viadotti, dato i ... per dare compiuta la lavorazione a perfetta regola d'arte. [114816] | 318,040.32 |
| 228 |  | Posa travi impalcato Campata 34 | 4d | 2025-12-19 | 2025-12-24 | 227, 1908 | 244d | 0d | STRUTTURE IN ACCIAIO Per l'esecuzione di strutture di ponti o viadotti, dato i ... per dare compiuta la lavorazione a perfetta regola d'arte. [114816] | 318,040.32 |
| 229 |  | Posa travi impalcato Campata 33 | 4d | 2025-12-25 | 2025-12-30 | 228, 1838 | 252d | 0d | STRUTTURE IN ACCIAIO Per l'esecuzione di strutture di ponti o viadotti, dato i ... per dare compiuta la lavorazione a perfetta regola d'arte. [114816] | 318,040.32 |
| 230 |  | Posa travi impalcato Campata 32 | 4d | 2025-12-31 | 2026-01-07 | 229, 1768 | 260d | 0d | STRUTTURE IN ACCIAIO Per l'esecuzione di strutture di ponti o viadotti, dato i ... per dare compiuta la lavorazione a perfetta regola d'arte. [114816] | 318,040.32 |
| 231 |  | Posa travi impalcato Campata 31 | 4d | 2026-01-08 | 2026-01-13 | 230, 1698 | 268d |  | STRUTTURE IN ACCIAIO Per l'esecuzione di strutture di ponti o viadotti, dato i ... per dare compiuta la lavorazione a perfetta regola d'arte. [114816] | 318,040.32 |

| ID | WBS | Activity | Duration | Start | Finish | Predecessors | Total float | Free float | Resources | Cost |
| --- | --- | --- | --- | --- | --- | --- | --- | --- | --- | --- |
|  | 3 | **Realizzazione della soletta in cemento armato - Campata da 76 a 56** |  | 2025-06-19 | 2026-08-12 |  |  |  |  |  |
| 148 |  | Realizzazione della soletta in cemento armato Campata 76 | 15d | 2025-06-19 | 2025-07-09 | 126 SS+60d | 105d | 0d | Confezionata con conglomerato cementizio vibrato con Rck ... uto della soletta i volumi di calcestruzzo della coppella. [478.4]; Metallica o in legname, costruita anche a sbalzo a sosteg ... di gallerie artificiali per altezze medie fino a 10 metri. [21.72]; Compresa la fornitura e la posa in opera; - rivestiti con ... giunti. Esclusi eventuali ponteggi da computarsi a parte. [55.2]; CLS Strutturale in Elev. RCK 45 N/mmq A prestazione garantita secondo le UNI EN-206 e UNI 11104 ... o materiale in cantiere, getto, vibrazione e stagionatura. [139.02]; Per strutture in conglomerato cementizio semplice, armato ... , escluse le armature di sostegno oltre i 2 metri di luce. [18.4]; Acciaio classe B450C controllato in stabilimento, di qual ... lo sfrido, ecc. Compresa la fornitura e la posa in opera. [38272] | 106,533.78 |
| 149 |  | Realizzazione della soletta in cemento armato Campata 75 | 14d | 2025-07-10 | 2025-07-29 | 148 | 105d | 0d | Confezionata con conglomerato cementizio vibrato con Rck ... uto della soletta i volumi di calcestruzzo della coppella. [478.4]; Metallica o in legname, costruita anche a sbalzo a sosteg ... di gallerie artificiali per altezze medie fino a 10 metri. [21.72]; Compresa la fornitura e la posa in opera; - rivestiti con ... giunti. Esclusi eventuali ponteggi da computarsi a parte. [55.2]; CLS Strutturale in Elev. RCK 45 N/mmq A prestazione garantita secondo le UNI EN-206 e UNI 11104 ... o materiale in cantiere, getto, vibrazione e stagionatura. [139.02]; Per strutture in conglomerato cementizio semplice, armato ... , escluse le armature di sostegno oltre i 2 metri di luce. [18.4]; Acciaio classe B450C controllato in stabilimento, di qual ... lo sfrido, ecc. Compresa la fornitura e la posa in opera. [38272] | 106,533.78 |
| 150 |  | Realizzazione della soletta in cemento armato Campata 74 | 14d | 2025-07-30 | 2025-08-18 | 149 | 105d | 0d | Confezionata con conglomerato cementizio vibrato con Rck ... uto della soletta i volumi di calcestruzzo della coppella. [478.4]; Metallica o in legname, costruita anche a sbalzo a sosteg ... di gallerie artificiali per altezze medie fino a 10 metri. [21.72]; Compresa la fornitura e la posa in opera; - rivestiti con ... giunti. Esclusi eventuali ponteggi da computarsi a parte. [55.2]; CLS Strutturale in Elev. RCK 45 N/mmq A prestazione garantita secondo le UNI EN-206 e UNI 11104 ... o materiale in cantiere, getto, vibrazione e stagionatura. [139.02]; Per strutture in conglomerato cementizio semplice, armato ... , escluse le armature di sostegno oltre i 2 metri di luce. [18.4]; Acciaio classe B450C controllato in stabilimento, di qual ... lo sfrido, ecc. Compresa la fornitura e la posa in opera. [38272] | 106,533.78 |
| 151 |  | Realizzazione della soletta in cemento armato Campata 73 | 14d | 2025-08-19 | 2025-09-05 | 150 | 105d | 0d | Confezionata con conglomerato cementizio vibrato con Rck ... uto della soletta i volumi di calcestruzzo della coppella. [478.4]; Metallica o in legname, costruita anche a sbalzo a sosteg ... di gallerie artificiali per altezze medie fino a 10 metri. [21.72]; Compresa la fornitura e la posa in opera; - rivestiti con ... giunti. Esclusi eventuali ponteggi da computarsi a parte. [55.2]; CLS Strutturale in Elev. RCK 45 N/mmq A prestazione garantita secondo le UNI EN-206 e UNI 11104 ... o materiale in cantiere, getto, vibrazione e stagionatura. [139.02]; Per strutture in conglomerato cementizio semplice, armato ... , escluse le armature di sostegno oltre i 2 metri di luce. [18.4]; Acciaio classe B450C controllato in stabilimento, di qual ... lo sfrido, ecc. Compresa la fornitura e la posa in opera. [38272] | 106,533.78 |
| 152 |  | Realizzazione della soletta in cemento armato Campata 72 | 14d | 2025-09-08 | 2025-09-25 | 151 | 105d | 0d | Confezionata con conglomerato cementizio vibrato con Rck ... uto della soletta i volumi di calcestruzzo della coppella. [478.4]; Metallica o in legname, costruita anche a sbalzo a sosteg ... di gallerie artificiali per altezze medie fino a 10 metri. [21.72]; Compresa la fornitura e la posa in opera; - rivestiti con ... giunti. Esclusi eventuali ponteggi da computarsi a parte. [55.2]; CLS Strutturale in Elev. RCK 45 N/mmq A prestazione garantita secondo le UNI EN-206 e UNI 11104 ... o materiale in cantiere, getto, vibrazione e stagionatura. [139.02]; Per strutture in conglomerato cementizio semplice, armato ... , escluse le armature di sostegno oltre i 2 metri di luce. [18.4]; Acciaio classe B450C controllato in stabilimento, di qual ... lo sfrido, ecc. Compresa la fornitura e la posa in opera. [38272] | 106,533.78 |
| 153 |  | Realizzazione della soletta in cemento armato Campata 71 | 14d | 2025-09-26 | 2025-10-15 | 152 | 105d | 0d | Confezionata con conglomerato cementizio vibrato con Rck ... uto della soletta i volumi di calcestruzzo della coppella. [478.4]; Metallica o in legname, costruita anche a sbalzo a sosteg ... di gallerie artificiali per altezze medie fino a 10 metri. [21.72]; Compresa la fornitura e la posa in opera; - rivestiti con ... giunti. Esclusi eventuali ponteggi da computarsi a parte. [55.2]; CLS Strutturale in Elev. RCK 45 N/mmq A prestazione garantita secondo le UNI EN-206 e UNI 11104 ... o materiale in cantiere, getto, vibrazione e stagionatura. [139.02]; Per strutture in conglomerato cementizio semplice, armato ... , escluse le armature di sostegno oltre i 2 metri di luce. [18.4]; Acciaio classe B450C controllato in stabilimento, di qual ... lo sfrido, ecc. Compresa la fornitura e la posa in opera. [38272] | 106,533.78 |
| 154 |  | Realizzazione della soletta in cemento armato Campata 70 | 14d | 2025-10-16 | 2025-11-04 | 153 | 105d | 0d | Confezionata con conglomerato cementizio vibrato con Rck ... uto della soletta i volumi di calcestruzzo della coppella. [478.4]; Metallica o in legname, costruita anche a sbalzo a sosteg ... di gallerie artificiali per altezze medie fino a 10 metri. [21.72]; Compresa la fornitura e la posa in opera; - rivestiti con ... giunti. Esclusi eventuali ponteggi da computarsi a parte. [55.2]; CLS Strutturale in Elev. RCK 45 N/mmq A prestazione garantita secondo le UNI EN-206 e UNI 11104 ... o materiale in cantiere, getto, vibrazione e stagionatura. [139.02]; Per strutture in conglomerato cementizio semplice, armato ... , escluse le armature di sostegno oltre i 2 metri di luce. [18.4]; Acciaio classe B450C controllato in stabilimento, di qual ... lo sfrido, ecc. Compresa la fornitura e la posa in opera. [38272] | 106,533.78 |
| 155 |  | Realizzazione della soletta in cemento armato Campata 69 | 14d | 2025-11-05 | 2025-11-24 | 154 | 105d | 0d | Confezionata con conglomerato cementizio vibrato con Rck ... uto della soletta i volumi di calcestruzzo della coppella. [478.4]; Metallica o in legname, costruita anche a sbalzo a sosteg ... di gallerie artificiali per altezze medie fino a 10 metri. [21.72]; Compresa la fornitura e la posa in opera; - rivestiti con ... giunti. Esclusi eventuali ponteggi da computarsi a parte. [55.2]; CLS Strutturale in Elev. RCK 45 N/mmq A prestazione garantita secondo le UNI EN-206 e UNI 11104 ... o materiale in cantiere, getto, vibrazione e stagionatura. [139.02]; Per strutture in conglomerato cementizio semplice, armato ... , escluse le armature di sostegno oltre i 2 metri di luce. [18.4]; Acciaio classe B450C controllato in stabilimento, di qual ... lo sfrido, ecc. Compresa la fornitura e la posa in opera. [38272] | 106,533.78 |
| 156 |  | Realizzazione della soletta in cemento armato Campata 68 | 14d | 2025-11-25 | 2025-12-12 | 155 | 105d | 0d | Confezionata con conglomerato cementizio vibrato con Rck ... uto della soletta i volumi di calcestruzzo della coppella. [478.4]; Metallica o in legname, costruita anche a sbalzo a sosteg ... di gallerie artificiali per altezze medie fino a 10 metri. [21.72]; Compresa la fornitura e la posa in opera; - rivestiti con ... giunti. Esclusi eventuali ponteggi da computarsi a parte. [55.2]; CLS Strutturale in Elev. RCK 45 N/mmq A prestazione garantita secondo le UNI EN-206 e UNI 11104 ... o materiale in cantiere, getto, vibrazione e stagionatura. [139.02]; Per strutture in conglomerato cementizio semplice, armato ... , escluse le armature di sostegno oltre i 2 metri di luce. [18.4]; Acciaio classe B450C controllato in stabilimento, di qual ... lo sfrido, ecc. Compresa la fornitura e la posa in opera. [38272] | 106,533.78 |
| 157 |  | Realizzazione della soletta in cemento armato Campata 67 | 14d | 2025-12-15 | 2026-01-02 | 156 | 105d | 0d | Confezionata con conglomerato cementizio vibrato con Rck ... uto della soletta i volumi di calcestruzzo della coppella. [478.4]; Metallica o in legname, costruita anche a sbalzo a sosteg ... di gallerie artificiali per altezze medie fino a 10 metri. [21.72]; Compresa la fornitura e la posa in opera; - rivestiti con ... giunti. Esclusi eventuali ponteggi da computarsi a parte. [55.2]; CLS Strutturale in Elev. RCK 45 N/mmq A prestazione garantita secondo le UNI EN-206 e UNI 11104 ... o materiale in cantiere, getto, vibrazione e stagionatura. [139.02]; Per strutture in conglomerato cementizio semplice, armato ... , escluse le armature di sostegno oltre i 2 metri di luce. [18.4]; Acciaio classe B450C controllato in stabilimento, di qual ... lo sfrido, ecc. Compresa la fornitura e la posa in opera. [38272] | 106,533.78 |
| 158 |  | Realizzazione della soletta in cemento armato Campata 66 | 14d | 2026-01-05 | 2026-01-23 | 157 | 105d | 0d | Confezionata con conglomerato cementizio vibrato con Rck ... uto della soletta i volumi di calcestruzzo della coppella. [478.4]; Metallica o in legname, costruita anche a sbalzo a sosteg ... di gallerie artificiali per altezze medie fino a 10 metri. [21.72]; Compresa la fornitura e la posa in opera; - rivestiti con ... giunti. Esclusi eventuali ponteggi da computarsi a parte. [55.2]; CLS Strutturale in Elev. RCK 45 N/mmq A prestazione garantita secondo le UNI EN-206 e UNI 11104 ... o materiale in cantiere, getto, vibrazione e stagionatura. [139.02]; Per strutture in conglomerato cementizio semplice, armato ... , escluse le armature di sostegno oltre i 2 metri di luce. [18.4]; Acciaio classe B450C controllato in stabilimento, di qual ... lo sfrido, ecc. Compresa la fornitura e la posa in opera. [38272] | 106,533.78 |
| 159 |  | Realizzazione della soletta in cemento armato Campata 65 | 14d | 2026-01-26 | 2026-02-12 | 158 | 105d | 0d | Confezionata con conglomerato cementizio vibrato con Rck ... uto della soletta i volumi di calcestruzzo della coppella. [478.4]; Metallica o in legname, costruita anche a sbalzo a sosteg ... di gallerie artificiali per altezze medie fino a 10 metri. [21.72]; Compresa la fornitura e la posa in opera; - rivestiti con ... giunti. Esclusi eventuali ponteggi da computarsi a parte. [55.2]; CLS Strutturale in Elev. RCK 45 N/mmq A prestazione garantita secondo le UNI EN-206 e UNI 11104 ... o materiale in cantiere, getto, vibrazione e stagionatura. [139.02]; Per strutture in conglomerato cementizio semplice, armato ... , escluse le armature di sostegno oltre i 2 metri di luce. [18.4]; Acciaio classe B450C controllato in stabilimento, di qual ... lo sfrido, ecc. Compresa la fornitura e la posa in opera. [38272] | 106,533.78 |
| 160 |  | Realizzazione della soletta in cemento armato Campata 64 | 14d | 2026-02-13 | 2026-03-04 | 159 | 105d | 0d | Confezionata con conglomerato cementizio vibrato con Rck ... uto della soletta i volumi di calcestruzzo della coppella. [478.4]; Metallica o in legname, costruita anche a sbalzo a sosteg ... di gallerie artificiali per altezze medie fino a 10 metri. [21.72]; Compresa la fornitura e la posa in opera; - rivestiti con ... giunti. Esclusi eventuali ponteggi da computarsi a parte. [55.2]; Per strutture in conglomerato cementizio semplice, armato ... , escluse le armature di sostegno oltre i 2 metri di luce. [18.4]; Acciaio classe B450C controllato in stabilimento, di qual ... lo sfrido, ecc. Compresa la fornitura e la posa in opera. [38272]; CLS Strutturale in Elev. RCK 45 N/mmq A prestazione garantita secondo le UNI EN-206 e UNI 11104 ... o materiale in cantiere, getto, vibrazione e stagionatura. [139] | 106,532.94 |
| 161 |  | Realizzazione della soletta in cemento armato Campata 63 | 14d | 2026-03-05 | 2026-03-24 | 160 | 105d | 0d | Confezionata con conglomerato cementizio vibrato con Rck ... uto della soletta i volumi di calcestruzzo della coppella. [478.4]; Metallica o in legname, costruita anche a sbalzo a sosteg ... di gallerie artificiali per altezze medie fino a 10 metri. [21.72]; Compresa la fornitura e la posa in opera; - rivestiti con ... giunti. Esclusi eventuali ponteggi da computarsi a parte. [55.2]; Per strutture in conglomerato cementizio semplice, armato ... , escluse le armature di sostegno oltre i 2 metri di luce. [18.4]; Acciaio classe B450C controllato in stabilimento, di qual ... lo sfrido, ecc. Compresa la fornitura e la posa in opera. [38272]; CLS Strutturale in Elev. RCK 45 N/mmq A prestazione garantita secondo le UNI EN-206 e UNI 11104 ... o materiale in cantiere, getto, vibrazione e stagionatura. [139] | 106,579.24 |
| 162 |  | Realizzazione della soletta in cemento armato Campata 62 | 14d | 2026-03-25 | 2026-04-14 | 161 | 105d | 0d | Confezionata con conglomerato cementizio vibrato con Rck ... uto della soletta i volumi di calcestruzzo della coppella. [478.4]; Metallica o in legname, costruita anche a sbalzo a sosteg ... di gallerie artificiali per altezze medie fino a 10 metri. [21.72]; Compresa la fornitura e la posa in opera; - rivestiti con ... giunti. Esclusi eventuali ponteggi da computarsi a parte. [55.2]; Per strutture in conglomerato cementizio semplice, armato ... , escluse le armature di sostegno oltre i 2 metri di luce. [18.4]; Acciaio classe B450C controllato in stabilimento, di qual ... lo sfrido, ecc. Compresa la fornitura e la posa in opera. [38272]; CLS Strutturale in Elev. RCK 45 N/mmq A prestazione garantita secondo le UNI EN-206 e UNI 11104 ... o materiale in cantiere, getto, vibrazione e stagionatura. [139] | 106,579.24 |
| 163 |  | Realizzazione della soletta in cemento armato Campata 61 | 14d | 2026-04-15 | 2026-05-05 | 162 | 105d | 0d | Confezionata con conglomerato cementizio vibrato con Rck ... uto della soletta i volumi di calcestruzzo della coppella. [478.4]; Metallica o in legname, costruita anche a sbalzo a sosteg ... di gallerie artificiali per altezze medie fino a 10 metri. [21.72]; Compresa la fornitura e la posa in opera; - rivestiti con ... giunti. Esclusi eventuali ponteggi da computarsi a parte. [55.2]; Per strutture in conglomerato cementizio semplice, armato ... , escluse le armature di sostegno oltre i 2 metri di luce. [18.4]; Acciaio classe B450C controllato in stabilimento, di qual ... lo sfrido, ecc. Compresa la fornitura e la posa in opera. [38272]; CLS Strutturale in Elev. RCK 45 N/mmq A prestazione garantita secondo le UNI EN-206 e UNI 11104 ... o materiale in cantiere, getto, vibrazione e stagionatura. [139] | 106,579.24 |
| 164 |  | Realizzazione della soletta in cemento armato Campata 60 | 14d | 2026-05-06 | 2026-05-25 | 163 | 105d | 0d | Confezionata con conglomerato cementizio vibrato con Rck ... uto della soletta i volumi di calcestruzzo della coppella. [478.4]; Metallica o in legname, costruita anche a sbalzo a sosteg ... di gallerie artificiali per altezze medie fino a 10 metri. [21.72]; Compresa la fornitura e la posa in opera; - rivestiti con ... giunti. Esclusi eventuali ponteggi da computarsi a parte. [55.2]; Per strutture in conglomerato cementizio semplice, armato ... , escluse le armature di sostegno oltre i 2 metri di luce. [18.4]; Acciaio classe B450C controllato in stabilimento, di qual ... lo sfrido, ecc. Compresa la fornitura e la posa in opera. [38272]; CLS Strutturale in Elev. RCK 45 N/mmq A prestazione garantita secondo le UNI EN-206 e UNI 11104 ... o materiale in cantiere, getto, vibrazione e stagionatura. [139] | 106,579.24 |
| 165 |  | Realizzazione della soletta in cemento armato Campata 59 | 14d | 2026-05-26 | 2026-06-15 | 164, 22 | 105d | 0d | Confezionata con conglomerato cementizio vibrato con Rck ... uto della soletta i volumi di calcestruzzo della coppella. [478.4]; Metallica o in legname, costruita anche a sbalzo a sosteg ... di gallerie artificiali per altezze medie fino a 10 metri. [21.72]; Compresa la fornitura e la posa in opera; - rivestiti con ... giunti. Esclusi eventuali ponteggi da computarsi a parte. [55.2]; Per strutture in conglomerato cementizio semplice, armato ... , escluse le armature di sostegno oltre i 2 metri di luce. [18.4]; Acciaio classe B450C controllato in stabilimento, di qual ... lo sfrido, ecc. Compresa la fornitura e la posa in opera. [38272]; CLS Strutturale in Elev. RCK 45 N/mmq A prestazione garantita secondo le UNI EN-206 e UNI 11104 ... o materiale in cantiere, getto, vibrazione e stagionatura. [139] | 106,579.24 |
| 166 |  | Realizzazione della soletta in cemento armato Campata 58 | 14d | 2026-06-16 | 2026-07-03 | 165 | 105d | 0d | Confezionata con conglomerato cementizio vibrato con Rck ... uto della soletta i volumi di calcestruzzo della coppella. [478.4]; Metallica o in legname, costruita anche a sbalzo a sosteg ... di gallerie artificiali per altezze medie fino a 10 metri. [21.72]; Compresa la fornitura e la posa in opera; - rivestiti con ... giunti. Esclusi eventuali ponteggi da computarsi a parte. [55.2]; Per strutture in conglomerato cementizio semplice, armato ... , escluse le armature di sostegno oltre i 2 metri di luce. [18.4]; Acciaio classe B450C controllato in stabilimento, di qual ... lo sfrido, ecc. Compresa la fornitura e la posa in opera. [38272]; CLS Strutturale in Elev. RCK 45 N/mmq A prestazione garantita secondo le UNI EN-206 e UNI 11104 ... o materiale in cantiere, getto, vibrazione e stagionatura. [139] | 106,579.24 |
| 167 |  | Realizzazione della soletta in cemento armato Campata 57 | 14d | 2026-07-06 | 2026-07-23 | 166 | 105d | 0d | Confezionata con conglomerato cementizio vibrato con Rck ... uto della soletta i volumi di calcestruzzo della coppella. [478.4]; Metallica o in legname, costruita anche a sbalzo a sosteg ... di gallerie artificiali per altezze medie fino a 10 metri. [21.72]; Compresa la fornitura e la posa in opera; - rivestiti con ... giunti. Esclusi eventuali ponteggi da computarsi a parte. [55.2]; Per strutture in conglomerato cementizio semplice, armato ... , escluse le armature di sostegno oltre i 2 metri di luce. [18.4]; Acciaio classe B450C controllato in stabilimento, di qual ... lo sfrido, ecc. Compresa la fornitura e la posa in opera. [38272]; CLS Strutturale in Elev. RCK 45 N/mmq A prestazione garantita secondo le UNI EN-206 e UNI 11104 ... o materiale in cantiere, getto, vibrazione e stagionatura. [139] | 106,579.24 |
| 168 |  | Realizzazione della soletta in cemento armato Campata 56 | 14d | 2026-07-24 | 2026-08-12 | 167 | 105d | 0d | Confezionata con conglomerato cementizio vibrato con Rck ... uto della soletta i volumi di calcestruzzo della coppella. [478.4]; Metallica o in legname, costruita anche a sbalzo a sosteg ... di gallerie artificiali per altezze medie fino a 10 metri. [21.72]; Compresa la fornitura e la posa in opera; - rivestiti con ... giunti. Esclusi eventuali ponteggi da computarsi a parte. [55.2]; Per strutture in conglomerato cementizio semplice, armato ... , escluse le armature di sostegno oltre i 2 metri di luce. [18.4]; Acciaio classe B450C controllato in stabilimento, di qual ... lo sfrido, ecc. Compresa la fornitura e la posa in opera. [38272]; CLS Strutturale in Elev. RCK 45 N/mmq A prestazione garantita secondo le UNI EN-206 e UNI 11104 ... o materiale in cantiere, getto, vibrazione e stagionatura. [139] | 106,579.24 |
|  | 4 | **Realizzazione della soletta in cemento armato - Campata da 55 a 31** |  | 2025-12-15 | 2027-02-18 |  |  |  |  |  |
| 233 |  | Realizzazione della soletta in cemento armato Campata 55 | 12d | 2025-12-15 | 2025-12-30 | 207 SS+80d | 0d |  | Confezionata con conglomerato cementizio vibrato con Rck ... uto della soletta i volumi di calcestruzzo della coppella. [478.4]; Metallica o in legname, costruita anche a sbalzo a sosteg ... di gallerie artificiali per altezze medie fino a 10 metri. [21.72]; Compresa la fornitura e la posa in opera; - rivestiti con ... giunti. Esclusi eventuali ponteggi da computarsi a parte. [55.2]; Per strutture in conglomerato cementizio semplice, armato ... , escluse le armature di sostegno oltre i 2 metri di luce. [18.4]; Acciaio classe B450C controllato in stabilimento, di qual ... lo sfrido, ecc. Compresa la fornitura e la posa in opera. [38272]; CLS Strutturale in Elev. RCK 45 N/mmq A prestazione garantita secondo le UNI EN-206 e UNI 11104 ... o materiale in cantiere, getto, vibrazione e stagionatura. [139] | 106,579.24 |
| 234 |  | Realizzazione della soletta in cemento armato Campata 54 | 12d | 2025-12-31 | 2026-01-19 | 233 | 0d |  | Confezionata con conglomerato cementizio vibrato con Rck ... uto della soletta i volumi di calcestruzzo della coppella. [478.4]; Metallica o in legname, costruita anche a sbalzo a sosteg ... di gallerie artificiali per altezze medie fino a 10 metri. [21.72]; Compresa la fornitura e la posa in opera; - rivestiti con ... giunti. Esclusi eventuali ponteggi da computarsi a parte. [55.2]; Per strutture in conglomerato cementizio semplice, armato ... , escluse le armature di sostegno oltre i 2 metri di luce. [18.4]; Acciaio classe B450C controllato in stabilimento, di qual ... lo sfrido, ecc. Compresa la fornitura e la posa in opera. [38272]; CLS Strutturale in Elev. RCK 45 N/mmq A prestazione garantita secondo le UNI EN-206 e UNI 11104 ... o materiale in cantiere, getto, vibrazione e stagionatura. [139] | 106,579.24 |
| 235 |  | Realizzazione della soletta in cemento armato Campata 53 | 12d | 2026-01-20 | 2026-02-04 | 234, 209 | 0d |  | Confezionata con conglomerato cementizio vibrato con Rck ... uto della soletta i volumi di calcestruzzo della coppella. [478.4]; Metallica o in legname, costruita anche a sbalzo a sosteg ... di gallerie artificiali per altezze medie fino a 10 metri. [21.72]; Compresa la fornitura e la posa in opera; - rivestiti con ... giunti. Esclusi eventuali ponteggi da computarsi a parte. [55.2]; Per strutture in conglomerato cementizio semplice, armato ... , escluse le armature di sostegno oltre i 2 metri di luce. [18.4]; Acciaio classe B450C controllato in stabilimento, di qual ... lo sfrido, ecc. Compresa la fornitura e la posa in opera. [38272]; CLS Strutturale in Elev. RCK 45 N/mmq A prestazione garantita secondo le UNI EN-206 e UNI 11104 ... o materiale in cantiere, getto, vibrazione e stagionatura. [139] | 106,579.24 |
| 236 |  | Realizzazione della soletta in cemento armato Campata 52 | 12d | 2026-02-05 | 2026-02-20 | 235, 210 | 0d |  | Confezionata con conglomerato cementizio vibrato con Rck ... uto della soletta i volumi di calcestruzzo della coppella. [478.4]; Metallica o in legname, costruita anche a sbalzo a sosteg ... di gallerie artificiali per altezze medie fino a 10 metri. [21.72]; Compresa la fornitura e la posa in opera; - rivestiti con ... giunti. Esclusi eventuali ponteggi da computarsi a parte. [55.2]; Per strutture in conglomerato cementizio semplice, armato ... , escluse le armature di sostegno oltre i 2 metri di luce. [18.4]; Acciaio classe B450C controllato in stabilimento, di qual ... lo sfrido, ecc. Compresa la fornitura e la posa in opera. [38272]; CLS Strutturale in Elev. RCK 45 N/mmq A prestazione garantita secondo le UNI EN-206 e UNI 11104 ... o materiale in cantiere, getto, vibrazione e stagionatura. [139] | 106,579.24 |
| 237 |  | Realizzazione della soletta in cemento armato Campata 51 | 12d | 2026-02-23 | 2026-03-10 | 236, 211 | 0d |  | Confezionata con conglomerato cementizio vibrato con Rck ... uto della soletta i volumi di calcestruzzo della coppella. [478.4]; Metallica o in legname, costruita anche a sbalzo a sosteg ... di gallerie artificiali per altezze medie fino a 10 metri. [21.72]; Compresa la fornitura e la posa in opera; - rivestiti con ... giunti. Esclusi eventuali ponteggi da computarsi a parte. [55.2]; Per strutture in conglomerato cementizio semplice, armato ... , escluse le armature di sostegno oltre i 2 metri di luce. [18.4]; Acciaio classe B450C controllato in stabilimento, di qual ... lo sfrido, ecc. Compresa la fornitura e la posa in opera. [38272]; CLS Strutturale in Elev. RCK 45 N/mmq A prestazione garantita secondo le UNI EN-206 e UNI 11104 ... o materiale in cantiere, getto, vibrazione e stagionatura. [139] | 106,579.24 |
| 238 |  | Realizzazione della soletta in cemento armato Campata 50 | 12d | 2026-03-11 | 2026-03-26 | 237, 212 | 0d |  | Confezionata con conglomerato cementizio vibrato con Rck ... uto della soletta i volumi di calcestruzzo della coppella. [478.4]; Metallica o in legname, costruita anche a sbalzo a sosteg ... di gallerie artificiali per altezze medie fino a 10 metri. [21.72]; Compresa la fornitura e la posa in opera; - rivestiti con ... giunti. Esclusi eventuali ponteggi da computarsi a parte. [55.2]; Per strutture in conglomerato cementizio semplice, armato ... , escluse le armature di sostegno oltre i 2 metri di luce. [18.4]; Acciaio classe B450C controllato in stabilimento, di qual ... lo sfrido, ecc. Compresa la fornitura e la posa in opera. [38272]; CLS Strutturale in Elev. RCK 45 N/mmq A prestazione garantita secondo le UNI EN-206 e UNI 11104 ... o materiale in cantiere, getto, vibrazione e stagionatura. [139] | 106,579.24 |
| 239 |  | Realizzazione della soletta in cemento armato Campata 49 | 12d | 2026-03-27 | 2026-04-14 | 238, 213 | 0d |  | Confezionata con conglomerato cementizio vibrato con Rck ... uto della soletta i volumi di calcestruzzo della coppella. [478.4]; Metallica o in legname, costruita anche a sbalzo a sosteg ... di gallerie artificiali per altezze medie fino a 10 metri. [21.72]; Compresa la fornitura e la posa in opera; - rivestiti con ... giunti. Esclusi eventuali ponteggi da computarsi a parte. [55.2]; Per strutture in conglomerato cementizio semplice, armato ... , escluse le armature di sostegno oltre i 2 metri di luce. [18.4]; Acciaio classe B450C controllato in stabilimento, di qual ... lo sfrido, ecc. Compresa la fornitura e la posa in opera. [38272]; CLS Strutturale in Elev. RCK 45 N/mmq A prestazione garantita secondo le UNI EN-206 e UNI 11104 ... o materiale in cantiere, getto, vibrazione e stagionatura. [139] | 106,579.24 |
| 240 |  | Realizzazione della soletta in cemento armato Campata 48 | 12d | 2026-04-15 | 2026-04-30 | 239, 214 | 0d |  | Confezionata con conglomerato cementizio vibrato con Rck ... uto della soletta i volumi di calcestruzzo della coppella. [478.4]; Metallica o in legname, costruita anche a sbalzo a sosteg ... di gallerie artificiali per altezze medie fino a 10 metri. [21.72]; Compresa la fornitura e la posa in opera; - rivestiti con ... giunti. Esclusi eventuali ponteggi da computarsi a parte. [55.2]; Per strutture in conglomerato cementizio semplice, armato ... , escluse le armature di sostegno oltre i 2 metri di luce. [18.4]; Acciaio classe B450C controllato in stabilimento, di qual ... lo sfrido, ecc. Compresa la fornitura e la posa in opera. [38272]; CLS Strutturale in Elev. RCK 45 N/mmq A prestazione garantita secondo le UNI EN-206 e UNI 11104 ... o materiale in cantiere, getto, vibrazione e stagionatura. [139] | 106,579.24 |
| 241 |  | Realizzazione della soletta in cemento armato Campata 47 | 12d | 2026-05-04 | 2026-05-19 | 240, 215 | 0d |  | Confezionata con conglomerato cementizio vibrato con Rck ... uto della soletta i volumi di calcestruzzo della coppella. [478.4]; Metallica o in legname, costruita anche a sbalzo a sosteg ... di gallerie artificiali per altezze medie fino a 10 metri. [21.72]; Compresa la fornitura e la posa in opera; - rivestiti con ... giunti. Esclusi eventuali ponteggi da computarsi a parte. [55.2]; Per strutture in conglomerato cementizio semplice, armato ... , escluse le armature di sostegno oltre i 2 metri di luce. [18.4]; Acciaio classe B450C controllato in stabilimento, di qual ... lo sfrido, ecc. Compresa la fornitura e la posa in opera. [38272]; CLS Strutturale in Elev. RCK 45 N/mmq A prestazione garantita secondo le UNI EN-206 e UNI 11104 ... o materiale in cantiere, getto, vibrazione e stagionatura. [139] | 106,579.24 |
| 242 |  | Realizzazione della soletta in cemento armato Campata 46 | 12d | 2026-05-20 | 2026-06-05 | 241, 216 | 0d |  | Confezionata con conglomerato cementizio vibrato con Rck ... uto della soletta i volumi di calcestruzzo della coppella. [478.4]; Metallica o in legname, costruita anche a sbalzo a sosteg ... di gallerie artificiali per altezze medie fino a 10 metri. [21.72]; Compresa la fornitura e la posa in opera; - rivestiti con ... giunti. Esclusi eventuali ponteggi da computarsi a parte. [55.2]; Per strutture in conglomerato cementizio semplice, armato ... , escluse le armature di sostegno oltre i 2 metri di luce. [18.4]; Acciaio classe B450C controllato in stabilimento, di qual ... lo sfrido, ecc. Compresa la fornitura e la posa in opera. [38272]; CLS Strutturale in Elev. RCK 45 N/mmq A prestazione garantita secondo le UNI EN-206 e UNI 11104 ... o materiale in cantiere, getto, vibrazione e stagionatura. [139] | 106,579.24 |
| 243 |  | Realizzazione della soletta in cemento armato Campata 45 | 12d | 2026-06-08 | 2026-06-23 | 242, 217 | 0d |  | Confezionata con conglomerato cementizio vibrato con Rck ... uto della soletta i volumi di calcestruzzo della coppella. [478.4]; Metallica o in legname, costruita anche a sbalzo a sosteg ... di gallerie artificiali per altezze medie fino a 10 metri. [21.72]; Compresa la fornitura e la posa in opera; - rivestiti con ... giunti. Esclusi eventuali ponteggi da computarsi a parte. [55.2]; Per strutture in conglomerato cementizio semplice, armato ... , escluse le armature di sostegno oltre i 2 metri di luce. [18.4]; Acciaio classe B450C controllato in stabilimento, di qual ... lo sfrido, ecc. Compresa la fornitura e la posa in opera. [38272]; CLS Strutturale in Elev. RCK 45 N/mmq A prestazione garantita secondo le UNI EN-206 e UNI 11104 ... o materiale in cantiere, getto, vibrazione e stagionatura. [139] | 106,579.24 |
| 244 |  | Realizzazione della soletta in cemento armato Campata 44 | 12d | 2026-06-24 | 2026-07-09 | 243, 218 | 0d |  | Confezionata con conglomerato cementizio vibrato con Rck ... uto della soletta i volumi di calcestruzzo della coppella. [478.4]; Metallica o in legname, costruita anche a sbalzo a sosteg ... di gallerie artificiali per altezze medie fino a 10 metri. [21.72]; Compresa la fornitura e la posa in opera; - rivestiti con ... giunti. Esclusi eventuali ponteggi da computarsi a parte. [55.2]; Per strutture in conglomerato cementizio semplice, armato ... , escluse le armature di sostegno oltre i 2 metri di luce. [18.4]; Acciaio classe B450C controllato in stabilimento, di qual ... lo sfrido, ecc. Compresa la fornitura e la posa in opera. [38272]; CLS Strutturale in Elev. RCK 45 N/mmq A prestazione garantita secondo le UNI EN-206 e UNI 11104 ... o materiale in cantiere, getto, vibrazione e stagionatura. [139] | 106,579.24 |
| 245 |  | Realizzazione della soletta in cemento armato Campata 43 | 12d | 2026-07-10 | 2026-07-27 | 244, 219 | 0d |  | Confezionata con conglomerato cementizio vibrato con Rck ... uto della soletta i volumi di calcestruzzo della coppella. [478.4]; Metallica o in legname, costruita anche a sbalzo a sosteg ... di gallerie artificiali per altezze medie fino a 10 metri. [21.72]; Compresa la fornitura e la posa in opera; - rivestiti con ... giunti. Esclusi eventuali ponteggi da computarsi a parte. [55.2]; Per strutture in conglomerato cementizio semplice, armato ... , escluse le armature di sostegno oltre i 2 metri di luce. [18.4]; Acciaio classe B450C controllato in stabilimento, di qual ... lo sfrido, ecc. Compresa la fornitura e la posa in opera. [38272]; CLS Strutturale in Elev. RCK 45 N/mmq A prestazione garantita secondo le UNI EN-206 e UNI 11104 ... o materiale in cantiere, getto, vibrazione e stagionatura. [139] | 106,579.24 |
| 246 |  | Realizzazione della soletta in cemento armato Campata 42 | 12d | 2026-07-28 | 2026-08-12 | 245, 220 | 0d |  | Confezionata con conglomerato cementizio vibrato con Rck ... uto della soletta i volumi di calcestruzzo della coppella. [478.4]; Metallica o in legname, costruita anche a sbalzo a sosteg ... di gallerie artificiali per altezze medie fino a 10 metri. [21.72]; Compresa la fornitura e la posa in opera; - rivestiti con ... giunti. Esclusi eventuali ponteggi da computarsi a parte. [55.2]; Per strutture in conglomerato cementizio semplice, armato ... , escluse le armature di sostegno oltre i 2 metri di luce. [18.4]; Acciaio classe B450C controllato in stabilimento, di qual ... lo sfrido, ecc. Compresa la fornitura e la posa in opera. [38272]; CLS Strutturale in Elev. RCK 45 N/mmq A prestazione garantita secondo le UNI EN-206 e UNI 11104 ... o materiale in cantiere, getto, vibrazione e stagionatura. [139] | 106,579.24 |
| 247 |  | Realizzazione della soletta in cemento armato Campata 41 | 12d | 2026-08-13 | 2026-08-28 | 246, 221 | 0d |  | Confezionata con conglomerato cementizio vibrato con Rck ... uto della soletta i volumi di calcestruzzo della coppella. [478.4]; Metallica o in legname, costruita anche a sbalzo a sosteg ... di gallerie artificiali per altezze medie fino a 10 metri. [21.72]; Compresa la fornitura e la posa in opera; - rivestiti con ... giunti. Esclusi eventuali ponteggi da computarsi a parte. [55.2]; Per strutture in conglomerato cementizio semplice, armato ... , escluse le armature di sostegno oltre i 2 metri di luce. [18.4]; Acciaio classe B450C controllato in stabilimento, di qual ... lo sfrido, ecc. Compresa la fornitura e la posa in opera. [38272]; CLS Strutturale in Elev. RCK 45 N/mmq A prestazione garantita secondo le UNI EN-206 e UNI 11104 ... o materiale in cantiere, getto, vibrazione e stagionatura. [139] | 106,579.24 |
| 248 |  | Realizzazione della soletta in cemento armato Campata 40 | 12d | 2026-08-31 | 2026-09-15 | 247, 222 | 0d |  | Confezionata con conglomerato cementizio vibrato con Rck ... uto della soletta i volumi di calcestruzzo della coppella. [478.4]; Metallica o in legname, costruita anche a sbalzo a sosteg ... di gallerie artificiali per altezze medie fino a 10 metri. [21.72]; Compresa la fornitura e la posa in opera; - rivestiti con ... giunti. Esclusi eventuali ponteggi da computarsi a parte. [55.2]; Per strutture in conglomerato cementizio semplice, armato ... , escluse le armature di sostegno oltre i 2 metri di luce. [18.4]; Acciaio classe B450C controllato in stabilimento, di qual ... lo sfrido, ecc. Compresa la fornitura e la posa in opera. [38272]; CLS Strutturale in Elev. RCK 45 N/mmq A prestazione garantita secondo le UNI EN-206 e UNI 11104 ... o materiale in cantiere, getto, vibrazione e stagionatura. [139] | 106,579.24 |
| 249 |  | Realizzazione della soletta in cemento armato Campata 39 | 12d | 2026-09-16 | 2026-10-01 | 248, 223 | 0d |  | Confezionata con conglomerato cementizio vibrato con Rck ... uto della soletta i volumi di calcestruzzo della coppella. [478.4]; Metallica o in legname, costruita anche a sbalzo a sosteg ... di gallerie artificiali per altezze medie fino a 10 metri. [21.72]; Compresa la fornitura e la posa in opera; - rivestiti con ... giunti. Esclusi eventuali ponteggi da computarsi a parte. [55.2]; Per strutture in conglomerato cementizio semplice, armato ... , escluse le armature di sostegno oltre i 2 metri di luce. [18.4]; Acciaio classe B450C controllato in stabilimento, di qual ... lo sfrido, ecc. Compresa la fornitura e la posa in opera. [38272]; CLS Strutturale in Elev. RCK 45 N/mmq A prestazione garantita secondo le UNI EN-206 e UNI 11104 ... o materiale in cantiere, getto, vibrazione e stagionatura. [139] | 106,579.24 |
| 250 |  | Realizzazione della soletta in cemento armato Campata 38 | 12d | 2026-10-02 | 2026-10-19 | 249, 224 | 0d |  | Confezionata con conglomerato cementizio vibrato con Rck ... uto della soletta i volumi di calcestruzzo della coppella. [478.4]; Metallica o in legname, costruita anche a sbalzo a sosteg ... di gallerie artificiali per altezze medie fino a 10 metri. [21.72]; Compresa la fornitura e la posa in opera; - rivestiti con ... giunti. Esclusi eventuali ponteggi da computarsi a parte. [55.2]; Per strutture in conglomerato cementizio semplice, armato ... , escluse le armature di sostegno oltre i 2 metri di luce. [18.4]; Acciaio classe B450C controllato in stabilimento, di qual ... lo sfrido, ecc. Compresa la fornitura e la posa in opera. [38272]; CLS Strutturale in Elev. RCK 45 N/mmq A prestazione garantita secondo le UNI EN-206 e UNI 11104 ... o materiale in cantiere, getto, vibrazione e stagionatura. [139] | 106,579.24 |
| 251 |  | Realizzazione della soletta in cemento armato Campata 37 | 12d | 2026-10-20 | 2026-11-04 | 250, 225 | 0d |  | Confezionata con conglomerato cementizio vibrato con Rck ... uto della soletta i volumi di calcestruzzo della coppella. [478.4]; Metallica o in legname, costruita anche a sbalzo a sosteg ... di gallerie artificiali per altezze medie fino a 10 metri. [21.72]; Compresa la fornitura e la posa in opera; - rivestiti con ... giunti. Esclusi eventuali ponteggi da computarsi a parte. [55.2]; Per strutture in conglomerato cementizio semplice, armato ... , escluse le armature di sostegno oltre i 2 metri di luce. [18.4]; Acciaio classe B450C controllato in stabilimento, di qual ... lo sfrido, ecc. Compresa la fornitura e la posa in opera. [38272]; CLS Strutturale in Elev. RCK 45 N/mmq A prestazione garantita secondo le UNI EN-206 e UNI 11104 ... o materiale in cantiere, getto, vibrazione e stagionatura. [139] | 106,579.24 |
| 252 |  | Realizzazione della soletta in cemento armato Campata 36 | 12d | 2026-11-05 | 2026-11-20 | 251, 226 | 0d |  | Confezionata con conglomerato cementizio vibrato con Rck ... uto della soletta i volumi di calcestruzzo della coppella. [478.4]; Metallica o in legname, costruita anche a sbalzo a sosteg ... di gallerie artificiali per altezze medie fino a 10 metri. [21.72]; Compresa la fornitura e la posa in opera; - rivestiti con ... giunti. Esclusi eventuali ponteggi da computarsi a parte. [55.2]; Per strutture in conglomerato cementizio semplice, armato ... , escluse le armature di sostegno oltre i 2 metri di luce. [18.4]; Acciaio classe B450C controllato in stabilimento, di qual ... lo sfrido, ecc. Compresa la fornitura e la posa in opera. [38272]; CLS Strutturale in Elev. RCK 45 N/mmq A prestazione garantita secondo le UNI EN-206 e UNI 11104 ... o materiale in cantiere, getto, vibrazione e stagionatura. [139] | 106,579.24 |
| 253 |  | Realizzazione della soletta in cemento armato Campata 35 | 12d | 2026-11-23 | 2026-12-09 | 252, 227 | 0d |  | Confezionata con conglomerato cementizio vibrato con Rck ... uto della soletta i volumi di calcestruzzo della coppella. [478.4]; Metallica o in legname, costruita anche a sbalzo a sosteg ... di gallerie artificiali per altezze medie fino a 10 metri. [21.72]; Compresa la fornitura e la posa in opera; - rivestiti con ... giunti. Esclusi eventuali ponteggi da computarsi a parte. [55.2]; Per strutture in conglomerato cementizio semplice, armato ... , escluse le armature di sostegno oltre i 2 metri di luce. [18.4]; Acciaio classe B450C controllato in stabilimento, di qual ... lo sfrido, ecc. Compresa la fornitura e la posa in opera. [38272]; CLS Strutturale in Elev. RCK 45 N/mmq A prestazione garantita secondo le UNI EN-206 e UNI 11104 ... o materiale in cantiere, getto, vibrazione e stagionatura. [139] | 106,579.24 |
| 254 |  | Realizzazione della soletta in cemento armato Campata 34 | 12d | 2026-12-10 | 2026-12-28 | 253, 228 | 0d |  | Confezionata con conglomerato cementizio vibrato con Rck ... uto della soletta i volumi di calcestruzzo della coppella. [478.4]; Metallica o in legname, costruita anche a sbalzo a sosteg ... di gallerie artificiali per altezze medie fino a 10 metri. [21.72]; Compresa la fornitura e la posa in opera; - rivestiti con ... giunti. Esclusi eventuali ponteggi da computarsi a parte. [55.2]; Per strutture in conglomerato cementizio semplice, armato ... , escluse le armature di sostegno oltre i 2 metri di luce. [18.4]; Acciaio classe B450C controllato in stabilimento, di qual ... lo sfrido, ecc. Compresa la fornitura e la posa in opera. [38272]; CLS Strutturale in Elev. RCK 45 N/mmq A prestazione garantita secondo le UNI EN-206 e UNI 11104 ... o materiale in cantiere, getto, vibrazione e stagionatura. [139] | 106,579.24 |
| 255 |  | Realizzazione della soletta in cemento armato Campata 33 | 12d | 2026-12-29 | 2027-01-15 | 254, 229 | 0d |  | Confezionata con conglomerato cementizio vibrato con Rck ... uto della soletta i volumi di calcestruzzo della coppella. [478.4]; Metallica o in legname, costruita anche a sbalzo a sosteg ... di gallerie artificiali per altezze medie fino a 10 metri. [21.72]; Compresa la fornitura e la posa in opera; - rivestiti con ... giunti. Esclusi eventuali ponteggi da computarsi a parte. [55.2]; Per strutture in conglomerato cementizio semplice, armato ... , escluse le armature di sostegno oltre i 2 metri di luce. [18.4]; Acciaio classe B450C controllato in stabilimento, di qual ... lo sfrido, ecc. Compresa la fornitura e la posa in opera. [38272]; CLS Strutturale in Elev. RCK 45 N/mmq A prestazione garantita secondo le UNI EN-206 e UNI 11104 ... o materiale in cantiere, getto, vibrazione e stagionatura. [139] | 106,579.24 |
| 256 |  | Realizzazione della soletta in cemento armato Campata 32 | 12d | 2027-01-18 | 2027-02-02 | 255, 230 | 0d |  | Confezionata con conglomerato cementizio vibrato con Rck ... uto della soletta i volumi di calcestruzzo della coppella. [478.4]; Metallica o in legname, costruita anche a sbalzo a sosteg ... di gallerie artificiali per altezze medie fino a 10 metri. [21.72]; Compresa la fornitura e la posa in opera; - rivestiti con ... giunti. Esclusi eventuali ponteggi da computarsi a parte. [55.2]; Per strutture in conglomerato cementizio semplice, armato ... , escluse le armature di sostegno oltre i 2 metri di luce. [18.4]; Acciaio classe B450C controllato in stabilimento, di qual ... lo sfrido, ecc. Compresa la fornitura e la posa in opera. [38272]; CLS Strutturale in Elev. RCK 45 N/mmq A prestazione garantita secondo le UNI EN-206 e UNI 11104 ... o materiale in cantiere, getto, vibrazione e stagionatura. [139] | 106,579.24 |
| 257 |  | Realizzazione della soletta in cemento armato Campata 31 | 12d | 2027-02-03 | 2027-02-18 | 256, 231 | 0d |  | Confezionata con conglomerato cementizio vibrato con Rck ... uto della soletta i volumi di calcestruzzo della coppella. [478.4]; Metallica o in legname, costruita anche a sbalzo a sosteg ... di gallerie artificiali per altezze medie fino a 10 metri. [21.72]; Compresa la fornitura e la posa in opera; - rivestiti con ... giunti. Esclusi eventuali ponteggi da computarsi a parte. [55.2]; Per strutture in conglomerato cementizio semplice, armato ... , escluse le armature di sostegno oltre i 2 metri di luce. [18.4]; Acciaio classe B450C controllato in stabilimento, di qual ... lo sfrido, ecc. Compresa la fornitura e la posa in opera. [38272]; CLS Strutturale in Elev. RCK 45 N/mmq A prestazione garantita secondo le UNI EN-206 e UNI 11104 ... o materiale in cantiere, getto, vibrazione e stagionatura. [139] | 106,579.24 |

| ID | WBS | Activity | Duration | Start | Finish | Predecessors | Total float | Free float | Resources | Cost |
| --- | --- | --- | --- | --- | --- | --- | --- | --- | --- | --- |
|  | 015 | **NUOVA PILA BY PASS** |  | 2025-05-05 | 2027-03-31 |  |  |  |  |  |
|  | 5 | **COSTRUZIONE CAMPATA 58bis - 59bis** |  | 2025-05-05 | 2025-08-25 |  |  |  |  |  |
|  | 1 | **FASE 1 Opere di sottofondazione PILA** |  | 2025-05-05 | 2025-05-28 |  |  |  |  |  |
| 14 |  | Realizzazione di n.9 pali fondazione Pila 58 bis (perforazione,posa armatura e getto) | 15d | 2025-05-05 | 2025-05-23 | 58 | 0d |  | Eseguiti con perforazione a percussione o rotopercussione ... alo misurato secondo le prescrizioni delle Norme Tecniche. [240]; Acciaio classe B450C controllato in stabilimento, di qual ... lo sfrido, ecc. Compresa la fornitura e la posa in opera. [28800] | 85,053.6 |
| 15 |  | Scapitozzatura n.9 pali | 3d | 2025-05-26 | 2025-05-28 | 14 | 0d |  | Dal perimetro del lotto con autocarro, per ogni mc e km. ... metrico o misurato in banco per il solo viaggio di andata. [6780 mc x km]; TERRA E ROCCE, DIVERSE DA QUELLE DI CUI ALLA VOCE 17 05 03 Provenienti dalle attività di costruzione e demolizione. ... ione. Compreso il terreno proveniente da siti contaminati. [542.4] | 4,339.2 |
|  | 2 | **FASE 2 -FONDAZIONE ELEVAZIONE -PULVINO -BAGGIOLI** |  | 2025-05-29 | 2025-07-18 |  |  |  |  |  |
| 17 |  | Realizzazione della fondazione Pila 58 bis | 15d | 2025-05-29 | 2025-06-18 | 15 | 0d |  | anche a campioni di qualsiasi lunghezza, in materie di qu ... superiori a 0,5 mc, nonché le murature a calce o cemento. [764.36]; Sotto il piano di sbancamento e per ogni 2,00 m o frazioni di 2,00 m superanti la suddetta profondità. [123.69]; Di cavi o a precarica di rilevati, senza compattamento me ... e, terreno ed elementi vegetali ecc.) ed ogni altro onere. [501.08]; Calcestruzzo Magrone 150 kg/mc Confezionato a prestazione garantita fornito a piè d'oper ... esclusi i ponteggi, le casseforme ed il ferro d'armatura. [88.42]; CLS Strutturale in Fond. RCK 30 N/mmq A prestazione garantita secondo le UNI EN-206 e UNI 11104 ... o materiale in cantiere, getto, vibrazione e stagionatura. [216.6]; Acciaio classe B450C controllato in stabilimento, di qual ... lo sfrido, ecc. Compresa la fornitura e la posa in opera. [28158]; Per strutture in conglomerato cementizio semplice, armato ... , escluse le armature di sostegno oltre i 2 metri di luce. [91.2]; Scavo di sbancamento …..anche a campioni di qualsiasi lunghezza, a mano o con mez ... realizzazione della lavorazione a perfetta regola d'arte. [13362 mc]; TERRA E ROCCE, DIVERSE DA QUELLE DI CUI ALLA VOCE 17 05 03 Provenienti dalle attività di costruzione e demolizione. ... ione. Compreso il terreno proveniente da siti contaminati. [1068] | 175,500.96 |
| 18 |  | Realizzazione elevazione Pila 58 bis | 12d | 2025-06-19 | 2025-07-04 | 17 | 0d |  | CLS Strutturale in Elev. RCK 40 N/mmq A prestazione garantita secondo le UNI EN-206 e UNI 11104 ... o materiale in cantiere, getto, vibrazione e stagionatura. [114.08]; Per strutture in conglomerato cementizio semplice, armato ... , escluse le armature di sostegno oltre i 2 metri di luce. [310.97]; Sovrapprezzo alla voce di armature per casseforme di stru ... maggiorazione di essa per seguire le linee curve disposte. [5439.95]; Acciaio classe B450C controllato in stabilimento, di qual ... lo sfrido, ecc. Compresa la fornitura e la posa in opera. [19286] | 172,493.72 |
| 19 |  | Realizzazione pulvino e baggioli 58 bis | 10d | 2025-07-07 | 2025-07-18 | 18 | 0d |  | CLS Strutturale in Elev. RCK 45 N/mmq A prestazione garantita secondo le UNI EN-206 e UNI 11104 ... o materiale in cantiere, getto, vibrazione e stagionatura. [150]; Per strutture in conglomerato cementizio semplice, armato ... , escluse le armature di sostegno oltre i 2 metri di luce. [7.49]; Acciaio classe B450C controllato in stabilimento, di qual ... lo sfrido, ecc. Compresa la fornitura e la posa in opera. [1800]; Avente le caratteristiche tecniche prescritte dal Capitol ... iunti o appoggi. Compresa la fornitura e la posa in opera. [115.2] | 36,234.49 |
|  | 3 | **FASE 3-APPOGGI VARO TRAVI IMPALCATO E SOLETTA** |  | 2025-07-21 | 2025-08-20 |  |  |  |  |  |
| 21 |  | Posa travi impalcato e appoggi 58 bis - 59 bis | 13d | 2025-07-21 | 2025-08-06 | 29 SS, 19 | 0d |  |  |  |
| 22 |  | Realizzazione della soletta impalcato 58 bis - 59bis | 10d | 2025-08-07 | 2025-08-20 | 21 | 299d | 0d |  |  |
|  | 4 | **FASE 4 PAVIMENTAZIONE** |  | 2025-08-21 | 2025-08-25 |  |  |  |  |  |
| 24 |  | Realizzazione della piattaforma stradale 58-59 | 3d | 2025-08-21 | 2025-08-25 | 22 | 399d |  |  |  |
|  | 1 | **BY-PASS - TRA PILA 58 E PILA 60 FASE 02** |  | 2025-06-17 | 2027-03-31 |  |  |  |  |  |
|  | 8 | **BY-PASS - PILA 58-PILA 59** |  | 2027-03-19 | 2027-03-31 |  |  |  |  |  |
| 264 |  | Posa giunto su impalcato DIR PA | 8d | 2027-03-19 | 2027-03-31 | 173, 261, 24 | 0d |  | Per disallineamento verticale adottato nei collegamenti t ... pera compresi tutti i magisteri e le forniture necessarie. [180] | 199,683 |
|  | 3 | **COSTRUZIONE CAMPATA 59-60** |  | 2025-06-17 | 2025-08-07 |  |  |  |  |  |
| 28 |  | Ricostruzione baggioli 59-60 | 7d | 2025-06-17 | 2025-06-25 | 26 | 17d | 0d |  |  |
| 29 |  | Posa n.3 travi in acciaio e appoggi 59-60 | 10d | 2025-06-26 | 2025-07-09 | 28, 126, 142 SS | 17d | 0d |  |  |
| 30 |  | Realizzazione soletta impalcato 59-60 | 10d | 2025-07-10 | 2025-07-23 | 29 | 449d | 0d |  |  |
| 31 |  | Posa della pavimentazione 59-60 | 3d | 2025-07-24 | 2025-07-28 | 30 | 449d | 0d |  |  |
| 32 |  | Posa giunto su impalcato DIR CT 59-60 | 8d | 2025-07-29 | 2025-08-07 | 31 | 449d |  |  |  |
|  | 005 | **IMPERMEABILIZZAZIONE IMPALCATI** |  | 2026-07-23 | 2027-03-18 |  |  |  |  |  |
| 169 |  | Realizzazione dell'impermeabilizzazione degli impalcati 55 - 31 | 40d | 2026-07-23 | 2026-09-16 | 168 FS-15d | 105d | 0d | Semplice o armato, di superfici in acciaio ecc., eseguita ... , la stuccatura e simili non sono compresi in questa voce. [9312] | 227,864.64 |
| 258 |  | Realizzazione dell'impermeabilizzazione degli impalcati 56 - 76 | 40d | 2027-01-22 | 2027-03-18 | 257 FS-20d | 0d |  | Semplice o armato, di superfici in acciaio ecc., eseguita ... , la stuccatura e simili non sono compresi in questa voce. [11387] | 278,638.91 |

| ID | WBS | Activity | Duration | Start | Finish | Predecessors | Total float | Free float | Resources | Cost |
| --- | --- | --- | --- | --- | --- | --- | --- | --- | --- | --- |
|  | 006 | **PAVIMENTAZIONI** |  | 2026-08-06 | 2027-04-16 |  |  |  |  |  |
| 171 |  | Realizzazione della pavimentazione stradale 55 - 31 | 54d | 2026-08-06 | 2026-10-20 | 170 SS+10d | 105d | 0d | Fornitura e posa in opera di conglomerato bituminoso per ... tteristiche rispondenti al CSA. PER METRO CUBO COMPATTATO. [536.64]; Fornitura e posa in opera di conglomerato bituminoso per ... tteristiche rispondenti al CSA. PER METRO CUBO COMPATTATO. [349.98]; Fornitura e spruzzatura di mano di ancoraggio o di attacc ... onere per una corretta e omogenea spruzzatura del legante. [8749.57] | 205,987.27 |
| 260 |  | Realizzazione della pavimentazione stradale 56 - 76 | 55d | 2027-01-29 | 2027-04-16 | 259 SS+5d | 0d |  | Fornitura e posa in opera di conglomerato bituminoso per ... tteristiche rispondenti al CSA. PER METRO CUBO COMPATTATO. [656.22]; Fornitura e posa in opera di conglomerato bituminoso per ... tteristiche rispondenti al CSA. PER METRO CUBO COMPATTATO. [437.48]; Fornitura e spruzzatura di mano di ancoraggio o di attacc ... onere per una corretta e omogenea spruzzatura del legante. [10937] | 254,332.23 |
|  | 013 | **NUOVO SISTEMA DI RACCOLTA ACQUE DI PIATTAFORMA** |  | 2026-07-23 | 2027-03-18 |  |  |  |  |  |
| 170 |  | Realizzazione sistema di smaltimento acque di piattaforma 55 - 31 | 40d | 2026-07-23 | 2026-09-16 | 169 SS | 105d | 0d | O c.a.p. per alloggiamento di bocchettoni o tubi per emun ... er ogni foro. Per fori di lunghezza non superiore a cm 50. [63]; Complesso di bocchetta per la raccolta e lo scarico di ac ... one ed il loro avvio alla caditoia di scarico delle acque. [63]; Realizzati con tubazioni PVC ad alta durabilità di diamet ... i costruzione dell'impalcato che a completamento avvenuto. [170.1] | 11,803.04 |
| 259 |  | Realizzazione sistema di smaltimento acque di piattaforma 56 - 76 | 40d | 2027-01-22 | 2027-03-18 | 258 SS | 0d |  | O c.a.p. per alloggiamento di bocchettoni o tubi per emun ... er ogni foro. Per fori di lunghezza non superiore a cm 50. [75]; Complesso di bocchetta per la raccolta e lo scarico di ac ... one ed il loro avvio alla caditoia di scarico delle acque. [75]; Realizzati con tubazioni PVC ad alta durabilità di diamet ... i costruzione dell'impalcato che a completamento avvenuto. [202.5] | 14,051.24 |
|  | 007 | **BARRIERE DI SICUREZZA E RETI DI PROTEZIONE** |  | 2026-09-03 | 2027-03-25 |  |  |  |  |  |
| 173 |  | Posa delle barriere di sicurezza e segnaletica 55 - 31 | 32d | 2026-09-03 | 2026-10-16 | 172 SS+15d | 105d |  | Fornitura e posa in opera di barriere stradali di sicurez ... istero per dare il lavoro finito a perfetta regola d'arte. [1850.67]; Rispondente al D.M. 21.06.04 di lunghezza minima di 40 ml ... ico fissa. Per ogni metro effettivo di barriera amovibile. [54.67] | 370,982.59 |
| 262 |  | Posa delle barriere di sicurezza e segnaletica 56 - 76 | 30d | 2027-02-12 | 2027-03-25 | 261 SS+5d | 33d |  | Fornitura e posa in opera di barriere stradali di sicurez ... istero per dare il lavoro finito a perfetta regola d'arte. [2263.04]; Rispondente al D.M. 21.06.04 di lunghezza minima di 40 ml ... ico fissa. Per ogni metro effettivo di barriera amovibile. [66.85] | 453,643.66 |
|  | 008 | **SEGNALETICA ORIZZONTALE E VERTICALE** |  |  |  |  |  |  |  |  |
|  | 016 | **PONTEGGI** |  | 2025-03-03 | 2025-09-23 |  |  |  |  |  |
|  | 1 | **Ponteggi da Pila 76 a 56** |  | 2025-03-03 | 2025-06-12 |  |  |  |  |  |
| 1438 |  | Montaggio Ponteggi Pila 74 | 1.88d | 2025-03-03 | 2025-03-04 | 1568 SS | 26.75d | 0d | Da eseguirsi nel rispetto della normativa vigente, dato i ... ggio. A mq, per tutto il tempo di utilizzo del ponteggio. [15]; CNR-BU 146. [15] | 988.43 |
| 1568 |  | Montaggio Ponteggi Pila 76 | 2d | 2025-03-03 | 2025-03-04 | 43 | 18d | 0d | Da eseguirsi nel rispetto della normativa vigente, dato i ... ggio. A mq, per tutto il tempo di utilizzo del ponteggio. [16]; CNR-BU 146. [16] | 1,054.32 |
| 1368 |  | Montaggio Ponteggi Pila 73 | 1.88d | 2025-03-04 | 2025-03-06 | 1438 | 28.88d | 1d | Da eseguirsi nel rispetto della normativa vigente, dato i ... ggio. A mq, per tutto il tempo di utilizzo del ponteggio. [15]; CNR-BU 146. [15] | 988.43 |
| 1498 |  | Montaggio Ponteggi Pila 75 | 1.88d | 2025-03-05 | 2025-03-06 | 1568 | 20.75d | 1.12d | Da eseguirsi nel rispetto della normativa vigente, dato i ... ggio. A mq, per tutto il tempo di utilizzo del ponteggio. [15]; CNR-BU 146. [15] | 988.43 |
| 1298 |  | Montaggio Ponteggi Pila 72 | 1.88d | 2025-03-19 | 2025-03-20 | 47, 1498 | 22.75d | 0d | Da eseguirsi nel rispetto della normativa vigente, dato i ... ggio. A mq, per tutto il tempo di utilizzo del ponteggio. [15]; CNR-BU 146. [15] | 988.43 |
| 1238 |  | Montaggio Ponteggi Pila 71 | 1.88d | 2025-03-20 | 2025-03-24 | 1298 | 24.88d | 0d | Da eseguirsi nel rispetto della normativa vigente, dato i ... ggio. A mq, per tutto il tempo di utilizzo del ponteggio. [15]; CNR-BU 146. [15] | 988.43 |
| 1168 |  | Montaggio Ponteggi Pila 70 | 1.88d | 2025-03-24 | 2025-03-26 | 48, 1238 | 27d | 0d | Da eseguirsi nel rispetto della normativa vigente, dato i ... ggio. A mq, per tutto il tempo di utilizzo del ponteggio. [15]; CNR-BU 146. [15] | 988.43 |
| 1098 |  | Montaggio Ponteggi Pila 69 | 1.88d | 2025-03-26 | 2025-03-28 | 1168 | 29.12d | 0d | Da eseguirsi nel rispetto della normativa vigente, dato i ... ggio. A mq, per tutto il tempo di utilizzo del ponteggio. [15]; CNR-BU 146. [15] | 988.43 |
| 1628 |  | Smontaggio Ponteggi Pila 76 | 1d | 2025-03-27 | 2025-03-27 | 1618 | 81.25d | 1.38d | Da eseguirsi nel rispetto della normativa vigente, dato i ... ggio. A mq, per tutto il tempo di utilizzo del ponteggio. [7]; CNR-BU 146. [7] | 461.27 |
| 98 |  | Montaggio Ponteggi Pila 68 | 1.88d | 2025-03-28 | 2025-04-01 | 1098 | 31.25d | 0d | Da eseguirsi nel rispetto della normativa vigente, dato i ... ggio. A mq, per tutto il tempo di utilizzo del ponteggio. [15]; CNR-BU 146. [15] | 988.43 |
| 1558 |  | Smontaggio Ponteggi Pila 75 | 0.88d | 2025-03-31 | 2025-04-01 | 1548, 1628 | 79.88d | 0d | Da eseguirsi nel rispetto della normativa vigente, dato i ... ggio. A mq, per tutto il tempo di utilizzo del ponteggio. [7]; CNR-BU 146. [7] | 461.27 |
| 1488 |  | Smontaggio Ponteggi Pila 74 | 0.88d | 2025-04-01 | 2025-04-02 | 1478, 1558 | 79.88d | 0d | Da eseguirsi nel rispetto della normativa vigente, dato i ... ggio. A mq, per tutto il tempo di utilizzo del ponteggio. [7]; CNR-BU 146. [7] | 461.27 |
| 978 |  | Montaggio Ponteggi Pila 67 | 1.88d | 2025-04-01 | 2025-04-03 | 98 | 33.38d | 0d | Da eseguirsi nel rispetto della normativa vigente, dato i ... ggio. A mq, per tutto il tempo di utilizzo del ponteggio. [15]; CNR-BU 146. [15] | 988.43 |
| 1428 |  | Smontaggio Ponteggi Pila 73 | 0.88d | 2025-04-02 | 2025-04-02 | 1418, 1488 | 79.88d | 6.25d | Da eseguirsi nel rispetto della normativa vigente, dato i ... ggio. A mq, per tutto il tempo di utilizzo del ponteggio. [7]; CNR-BU 146. [7] | 461.27 |
| 908 |  | Montaggio Ponteggi Pila 66 | 1.88d | 2025-04-03 | 2025-04-07 | 978 | 35.5d | 0d | Da eseguirsi nel rispetto della normativa vigente, dato i ... ggio. A mq, per tutto il tempo di utilizzo del ponteggio. [15]; CNR-BU 146. [15] | 988.43 |
| 838 |  | Montaggio Ponteggi Pila 65 | 1.88d | 2025-04-07 | 2025-04-08 | 908 | 37.62d | 0d | Da eseguirsi nel rispetto della normativa vigente, dato i ... ggio. A mq, per tutto il tempo di utilizzo del ponteggio. [15]; CNR-BU 146. [15] | 988.43 |
| 1358 |  | Smontaggio Ponteggi Pila 72 | 0.88d | 2025-04-11 | 2025-04-14 | 1348, 1428 | 73.62d | 1d | Da eseguirsi nel rispetto della normativa vigente, dato i ... ggio. A mq, per tutto il tempo di utilizzo del ponteggio. [7]; CNR-BU 146. [7] | 461.27 |
| 1288 |  | Smontaggio Ponteggi Pila 71 | 0.88d | 2025-04-15 | 2025-04-15 | 1278, 1358 | 72.62d | 1d | Da eseguirsi nel rispetto della normativa vigente, dato i ... ggio. A mq, per tutto il tempo di utilizzo del ponteggio. [7]; CNR-BU 146. [7] | 461.27 |
| 1228 |  | Smontaggio Ponteggi Pila 70 | 0.88d | 2025-04-17 | 2025-04-17 | 1218, 1288 | 71.62d | 1d | Da eseguirsi nel rispetto della normativa vigente, dato i ... ggio. A mq, per tutto il tempo di utilizzo del ponteggio. [7]; CNR-BU 146. [7] | 461.27 |
| 778 |  | Montaggio Ponteggi Pila 64 | 1.88d | 2025-04-17 | 2025-04-18 | 838, 54 | 33.75d | 0d | Da eseguirsi nel rispetto della normativa vigente, dato i ... ggio. A mq, per tutto il tempo di utilizzo del ponteggio. [15]; CNR-BU 146. [15] | 988.43 |
| 1158 |  | Smontaggio Ponteggi Pila 69 | 0.88d | 2025-04-18 | 2025-04-21 | 1148, 1228 | 70.62d | 1d | Da eseguirsi nel rispetto della normativa vigente, dato i ... ggio. A mq, per tutto il tempo di utilizzo del ponteggio. [7]; CNR-BU 146. [7] | 461.27 |
| 718 |  | Montaggio Ponteggi Pila 63 | 1.88d | 2025-04-18 | 2025-04-22 | 778 | 35.88d | 0d | Da eseguirsi nel rispetto della normativa vigente, dato i ... ggio. A mq, per tutto il tempo di utilizzo del ponteggio. [15]; CNR-BU 146. [15] | 988.43 |
| 1088 |  | Smontaggio Ponteggi Pila 68 | 0.88d | 2025-04-22 | 2025-04-23 | 1078, 1158 | 69.62d | 1d | Da eseguirsi nel rispetto della normativa vigente, dato i ... ggio. A mq, per tutto il tempo di utilizzo del ponteggio. [7]; CNR-BU 146. [7] | 461.27 |
| 648 |  | Montaggio Ponteggi Pila 62 | 1.88d | 2025-04-22 | 2025-04-24 | 718 | 38d | 0d | Da eseguirsi nel rispetto della normativa vigente, dato i ... ggio. A mq, per tutto il tempo di utilizzo del ponteggio. [15]; CNR-BU 146. [15] | 988.43 |
| 1038 |  | Smontaggio Ponteggi Pila 67 | 0.88d | 2025-04-24 | 2025-04-25 | 1028, 1088 | 68.62d | 1d | Da eseguirsi nel rispetto della normativa vigente, dato i ... ggio. A mq, per tutto il tempo di utilizzo del ponteggio. [7]; CNR-BU 146. [7] | 461.27 |
| 578 |  | Montaggio Ponteggi Pila 61 | 1.88d | 2025-04-24 | 2025-04-28 | 648 | 40.12d | 0d | Da eseguirsi nel rispetto della normativa vigente, dato i ... ggio. A mq, per tutto il tempo di utilizzo del ponteggio. [15]; CNR-BU 146. [15] | 988.43 |
| 528 |  | Montaggio Ponteggi Pila 60 | 1.88d | 2025-04-28 | 2025-04-30 | 578 | 42.25d | 0d | Da eseguirsi nel rispetto della normativa vigente, dato i ... ggio. A mq, per tutto il tempo di utilizzo del ponteggio. [15]; CNR-BU 146. [15] | 988.43 |
| 968 |  | Smontaggio Ponteggi Pila 66 | 0.88d | 2025-04-28 | 2025-04-29 | 958, 1038 | 67.62d | 1d | Da eseguirsi nel rispetto della normativa vigente, dato i ... ggio. A mq, per tutto il tempo di utilizzo del ponteggio. [7]; CNR-BU 146. [7] | 461.27 |
| 468 |  | Montaggio Ponteggi Pila 59 | 2d | 2025-04-30 | 2025-05-02 | 528 | 48.62d | 0d | Da eseguirsi nel rispetto della normativa vigente, dato i ... ggio. A mq, per tutto il tempo di utilizzo del ponteggio. [16]; CNR-BU 146. [16] | 1,054.32 |
| 898 |  | Smontaggio Ponteggi Pila 65 | 0.88d | 2025-04-30 | 2025-05-01 | 888, 968 | 66.62d | 7d | Da eseguirsi nel rispetto della normativa vigente, dato i ... ggio. A mq, per tutto il tempo di utilizzo del ponteggio. [7]; CNR-BU 146. [7] | 461.27 |
| 828 |  | Smontaggio Ponteggi Pila 64 | 0.88d | 2025-05-12 | 2025-05-13 | 818, 898 | 59.62d | 1d | Da eseguirsi nel rispetto della normativa vigente, dato i ... ggio. A mq, per tutto il tempo di utilizzo del ponteggio. [7]; CNR-BU 146. [7] | 461.27 |
| 418 |  | Montaggio Ponteggi Pila 58 | 1.88d | 2025-05-13 | 2025-05-14 | 468, 60, 43, 58 | 43.95d | 0d | Da eseguirsi nel rispetto della normativa vigente, dato i ... ggio. A mq, per tutto il tempo di utilizzo del ponteggio. [15]; CNR-BU 146. [15] | 988.43 |
| 64 |  | Smontaggio Ponteggi Pila 63 | 0.88d | 2025-05-14 | 2025-05-14 | 768, 828 | 58.62d | 1d | Da eseguirsi nel rispetto della normativa vigente, dato i ... ggio. A mq, per tutto il tempo di utilizzo del ponteggio. [7]; CNR-BU 146. [7] | 461.27 |
| 388 |  | Montaggio Ponteggi Pila 57 | 1.88d | 2025-05-14 | 2025-05-16 | 418, 59 | 43.95d | 0d | Da eseguirsi nel rispetto della normativa vigente, dato i ... ggio. A mq, per tutto il tempo di utilizzo del ponteggio. [15]; CNR-BU 146. [15] | 988.43 |
| 708 |  | Smontaggio Ponteggi Pila 62 | 0.88d | 2025-05-16 | 2025-05-16 | 698, 64 | 57.62d | 1d | Da eseguirsi nel rispetto della normativa vigente, dato i ... ggio. A mq, per tutto il tempo di utilizzo del ponteggio. [7]; CNR-BU 146. [7] | 461.27 |
| 328 |  | Montaggio Ponteggi Pila 56 | 2d | 2025-05-16 | 2025-05-20 | 388, 60 | 43.95d | 0d | Da eseguirsi nel rispetto della normativa vigente, dato i ... ggio. A mq, per tutto il tempo di utilizzo del ponteggio. [16]; CNR-BU 146. [16] | 1,054.32 |
| 638 |  | Smontaggio Ponteggi Pila 61 | 0.88d | 2025-05-19 | 2025-05-20 | 628, 708 | 56.62d | 1d | Da eseguirsi nel rispetto della normativa vigente, dato i ... ggio. A mq, per tutto il tempo di utilizzo del ponteggio. [7]; CNR-BU 146. [7] | 461.27 |
| 568 |  | Smontaggio Ponteggi Pila 60 | 0.88d | 2025-05-21 | 2025-05-22 | 39, 638 | 55.62d | 1.75d | Da eseguirsi nel rispetto della normativa vigente, dato i ... ggio. A mq, per tutto il tempo di utilizzo del ponteggio. [7]; CNR-BU 146. [7] | 461.27 |
| 518 |  | Smontaggio Ponteggi Pila 59 | 1d | 2025-05-26 | 2025-05-27 | 508, 568 | 53.88d | 6.88d | Da eseguirsi nel rispetto della normativa vigente, dato i ... ggio. A mq, per tutto il tempo di utilizzo del ponteggio. [8]; CNR-BU 146. [8] | 527.16 |
| 458 |  | Smontaggio Ponteggi Pila 58 | 0.88d | 2025-06-05 | 2025-06-06 | 23, 518 | 47d | 1d | Da eseguirsi nel rispetto della normativa vigente, dato i ... ggio. A mq, per tutto il tempo di utilizzo del ponteggio. [7]; CNR-BU 146. [7] | 461.27 |
| 16 |  | Smontaggio Ponteggi Pila 57 | 0.88d | 2025-06-09 | 2025-06-09 | 408, 458 | 46d | 1.75d | Da eseguirsi nel rispetto della normativa vigente, dato i ... ggio. A mq, per tutto il tempo di utilizzo del ponteggio. [7]; CNR-BU 146. [7] | 461.27 |
| 378 |  | Smontaggio Ponteggi Pila 56 | 1d | 2025-06-11 | 2025-06-12 | 368, 16 | 47.25d |  | Da eseguirsi nel rispetto della normativa vigente, dato i ... ggio. A mq, per tutto il tempo di utilizzo del ponteggio. [8]; CNR-BU 146. [8] | 527.16 |

| ID | WBS | Activity | Duration | Start | Finish | Predecessors | Total float | Free float | Resources | Cost | MSP Activity ID |
| --- | --- | --- | --- | --- | --- | --- | --- | --- | --- | --- | --- |
|  | 2 | **Ponteggi da Pila 55 a 31** |  | 2025-05-26 | 2025-09-23 |  |  |  |  |  |  |
| 3298 |  | Montaggio Ponteggi Pila 55 | 2d | 2025-05-26 | 2025-05-27 | 328, 71, 69 | 40.7d | 0d | Da eseguirsi nel rispetto della normativa vigente, dato i ... ggio. A mq, per tutto il tempo di utilizzo del ponteggio. [16]; CNR-BU 146. [16] | 1,054.32 | 210 |
| 3288 |  | Montaggio Ponteggi Pila 54 | 0.88d | 2025-05-28 | 2025-05-28 | 3298, 70 | 134.7d | 0d | Da eseguirsi nel rispetto della normativa vigente, dato i ... ggio. A mq, per tutto il tempo di utilizzo del ponteggio. [7]; CNR-BU 146. [7] | 461.27 | 208 |
| 3218 |  | Montaggio Ponteggi Pila 53 | 0.88d | 2025-05-28 | 2025-05-29 | 3288, 71 | 137.82d | 0d | Da eseguirsi nel rispetto della normativa vigente, dato i ... ggio. A mq, per tutto il tempo di utilizzo del ponteggio. [7]; CNR-BU 146. [7] | 461.27 | 200 |
| 3108 |  | Montaggio Ponteggi Pila 52 | 0.88d | 2025-06-06 | 2025-06-06 | 328, 3218, 74, 72 | 144.82d | 0d | Da eseguirsi nel rispetto della normativa vigente, dato i ... ggio. A mq, per tutto il tempo di utilizzo del ponteggio. [7]; CNR-BU 146. [7] | 461.27 | 186 |
| 3038 |  | Montaggio Ponteggi Pila 51 | 1.88d | 2025-06-06 | 2025-06-10 | 3108, 73 | 155.07d | 0d | Da eseguirsi nel rispetto della normativa vigente, dato i ... ggio. A mq, per tutto il tempo di utilizzo del ponteggio. [15]; CNR-BU 146. [15] | 988.43 | 178 |
| 2968 |  | Montaggio Ponteggi Pila 50 | 1.88d | 2025-06-10 | 2025-06-12 | 3038, 74 | 165.2d | 0d | Da eseguirsi nel rispetto della normativa vigente, dato i ... ggio. A mq, per tutto il tempo di utilizzo del ponteggio. [15]; CNR-BU 146. [15] | 988.43 | 170 |
| 2898 |  | Montaggio Ponteggi Pila 49 | 1.88d | 2025-06-12 | 2025-06-16 | 2968, 75 | 175.32d | 0d | Da eseguirsi nel rispetto della normativa vigente, dato i ... ggio. A mq, per tutto il tempo di utilizzo del ponteggio. [15]; CNR-BU 146. [15] | 988.43 | 162 |
| 2828 |  | Montaggio Ponteggi Pila 48 | 1.88d | 2025-06-16 | 2025-06-18 | 2898, 76 | 185.45d | 0d | Da eseguirsi nel rispetto della normativa vigente, dato i ... ggio. A mq, per tutto il tempo di utilizzo del ponteggio. [15]; CNR-BU 146. [15] | 988.43 | 154 |
| 2758 |  | Montaggio Ponteggi Pila 47 | 1.88d | 2025-06-19 | 2025-06-20 | 2828, 77 | 194.95d | 0d | Da eseguirsi nel rispetto della normativa vigente, dato i ... ggio. A mq, per tutto il tempo di utilizzo del ponteggio. [15]; CNR-BU 146. [15] | 988.43 | 146 |
| 3358 |  | Smontaggio Ponteggi Pila 55 | 0.88d | 2025-06-26 | 2025-06-27 | 3348 | 40.7d | 7d | Da eseguirsi nel rispetto della normativa vigente, dato i ... ggio. A mq, per tutto il tempo di utilizzo del ponteggio. [7]; CNR-BU 146. [7] | 461.27 | 216 |
| 3228 |  | Smontaggio Ponteggi Pila 54 | 2d | 2025-06-27 | 2025-07-01 | 3278 | 134.7d | 0d | Da eseguirsi nel rispetto della normativa vigente, dato i ... ggio. A mq, per tutto il tempo di utilizzo del ponteggio. [16]; CNR-BU 146. [16] | 1,054.32 | 202 |
| 3158 |  | Smontaggio Ponteggi Pila 53 | 2d | 2025-07-01 | 2025-07-03 | 3228, 3208 | 136.7d | 0d | Da eseguirsi nel rispetto della normativa vigente, dato i ... ggio. A mq, per tutto il tempo di utilizzo del ponteggio. [16]; CNR-BU 146. [16] | 1,054.32 | 194 |
| 2688 |  | Montaggio Ponteggi Pila 46 | 1.88d | 2025-07-03 | 2025-07-07 | 3158, 80, 2758, 78 | 196.65d | 0d | Da eseguirsi nel rispetto della normativa vigente, dato i ... ggio. A mq, per tutto il tempo di utilizzo del ponteggio. [15]; CNR-BU 146. [15] | 988.43 | 138 |
| 2618 |  | Montaggio Ponteggi Pila 45 | 1.88d | 2025-07-07 | 2025-07-09 | 2688, 79 | 206.78d | 0d | Da eseguirsi nel rispetto della normativa vigente, dato i ... ggio. A mq, per tutto il tempo di utilizzo del ponteggio. [15]; CNR-BU 146. [15] | 988.43 | 130 |
| 3148 |  | Smontaggio Ponteggi Pila 52 | 0.88d | 2025-07-08 | 2025-07-09 | 175, 3358 | 144.82d | 0.88d | Da eseguirsi nel rispetto della normativa vigente, dato i ... ggio. A mq, per tutto il tempo di utilizzo del ponteggio. [7]; CNR-BU 146. [7] | 461.27 | 192 |
| 2548 |  | Montaggio Ponteggi Pila 44 | 1.88d | 2025-07-09 | 2025-07-10 | 2618, 80 | 216.9d | 0d | Da eseguirsi nel rispetto della normativa vigente, dato i ... ggio. A mq, per tutto il tempo di utilizzo del ponteggio. [15]; CNR-BU 146. [15] | 988.43 | 122 |
| 3098 |  | Smontaggio Ponteggi Pila 51 | 0.88d | 2025-07-10 | 2025-07-10 | 3088, 3148 | 155.07d | 1d | Da eseguirsi nel rispetto della normativa vigente, dato i ... ggio. A mq, per tutto il tempo di utilizzo del ponteggio. [7]; CNR-BU 146. [7] | 461.27 | 184 |
| 2478 |  | Montaggio Ponteggi Pila 43 | 1.88d | 2025-07-10 | 2025-07-14 | 2548, 81 | 227.03d | 0d | Da eseguirsi nel rispetto della normativa vigente, dato i ... ggio. A mq, per tutto il tempo di utilizzo del ponteggio. [15]; CNR-BU 146. [15] | 988.43 | 114 |
| 3028 |  | Smontaggio Ponteggi Pila 50 | 0.88d | 2025-07-11 | 2025-07-14 | 3018, 3098 | 165.2d | 1d | Da eseguirsi nel rispetto della normativa vigente, dato i ... ggio. A mq, per tutto il tempo di utilizzo del ponteggio. [7]; CNR-BU 146. [7] | 461.27 | 176 |
| 2408 |  | Montaggio Ponteggi Pila 42 | 1.88d | 2025-07-14 | 2025-07-16 | 2478, 82 | 237.15d | 0d | Da eseguirsi nel rispetto della normativa vigente, dato i ... ggio. A mq, per tutto il tempo di utilizzo del ponteggio. [15]; CNR-BU 146. [15] | 988.43 | 106 |
| 2958 |  | Smontaggio Ponteggi Pila 49 | 0.88d | 2025-07-15 | 2025-07-16 | 2948, 3028 | 175.32d | 1d | Da eseguirsi nel rispetto della normativa vigente, dato i ... ggio. A mq, per tutto il tempo di utilizzo del ponteggio. [7]; CNR-BU 146. [7] | 461.27 | 168 |
| 2338 |  | Montaggio Ponteggi Pila 41 | 1.88d | 2025-07-16 | 2025-07-18 | 2408, 83 | 247.28d | 0d | Da eseguirsi nel rispetto della normativa vigente, dato i ... ggio. A mq, per tutto il tempo di utilizzo del ponteggio. [15]; CNR-BU 146. [15] | 988.43 | 98 |
| 2888 |  | Smontaggio Ponteggi Pila 48 | 0.88d | 2025-07-17 | 2025-07-18 | 2878, 2958 | 185.45d | 1.62d | Da eseguirsi nel rispetto della normativa vigente, dato i ... ggio. A mq, per tutto il tempo di utilizzo del ponteggio. [7]; CNR-BU 146. [7] | 461.27 | 160 |
| 2818 |  | Smontaggio Ponteggi Pila 47 | 0.88d | 2025-07-22 | 2025-07-23 | 2808, 2888 | 194.95d | 9.43d | Da eseguirsi nel rispetto della normativa vigente, dato i ... ggio. A mq, per tutto il tempo di utilizzo del ponteggio. [7]; CNR-BU 146. [7] | 461.27 | 152 |
| 2268 |  | Montaggio Ponteggi Pila 40 | 1.88d | 2025-07-28 | 2025-07-29 | 86, 2338, 84 | 251.95d | 0d | Da eseguirsi nel rispetto della normativa vigente, dato i ... ggio. A mq, per tutto il tempo di utilizzo del ponteggio. [15]; CNR-BU 146. [15] | 988.43 | 90 |
| 2198 |  | Montaggio Ponteggi Pila 39 | 1.88d | 2025-07-29 | 2025-07-31 | 2268, 85 | 262.07d | 0d | Da eseguirsi nel rispetto della normativa vigente, dato i ... ggio. A mq, per tutto il tempo di utilizzo del ponteggio. [15]; CNR-BU 146. [15] | 988.43 | 82 |
| 2128 |  | Montaggio Ponteggi Pila 38 | 1.88d | 2025-07-31 | 2025-08-04 | 2198, 86 | 272.2d | 0d | Da eseguirsi nel rispetto della normativa vigente, dato i ... ggio. A mq, per tutto il tempo di utilizzo del ponteggio. [15]; CNR-BU 146. [15] | 988.43 | 74 |
| 2058 |  | Montaggio Ponteggi Pila 37 | 1.88d | 2025-08-04 | 2025-08-06 | 2128 | 285.48d | 0d | Da eseguirsi nel rispetto della normativa vigente, dato i ... ggio. A mq, per tutto il tempo di utilizzo del ponteggio. [15]; CNR-BU 146. [15] | 988.43 | 66 |
| 2748 |  | Smontaggio Ponteggi Pila 46 | 0.88d | 2025-08-05 | 2025-08-06 | 2738, 2818 | 196.65d | 1d | Da eseguirsi nel rispetto della normativa vigente, dato i ... ggio. A mq, per tutto il tempo di utilizzo del ponteggio. [7]; CNR-BU 146. [7] | 461.27 | 144 |
| 1988 |  | Montaggio Ponteggi Pila 36 | 1.88d | 2025-08-06 | 2025-08-08 | 2058, 88 | 295.61d | 0d | Da eseguirsi nel rispetto della normativa vigente, dato i ... ggio. A mq, per tutto il tempo di utilizzo del ponteggio. [15]; CNR-BU 146. [15] | 988.43 | 58 |
| 2678 |  | Smontaggio Ponteggi Pila 45 | 0.88d | 2025-08-07 | 2025-08-08 | 2668, 2748 | 206.78d | 1d | Da eseguirsi nel rispetto della normativa vigente, dato i ... ggio. A mq, per tutto il tempo di utilizzo del ponteggio. [7]; CNR-BU 146. [7] | 461.27 | 136 |
| 1918 |  | Montaggio Ponteggi Pila 35 | 1.88d | 2025-08-08 | 2025-08-12 | 1988, 89 | 305.73d | 0d | Da eseguirsi nel rispetto della normativa vigente, dato i ... ggio. A mq, per tutto il tempo di utilizzo del ponteggio. [15]; CNR-BU 146. [15] | 988.43 | 50 |
| 2608 |  | Smontaggio Ponteggi Pila 44 | 0.88d | 2025-08-11 | 2025-08-12 | 2598, 2678 | 216.9d | 1d | Da eseguirsi nel rispetto della normativa vigente, dato i ... ggio. A mq, per tutto il tempo di utilizzo del ponteggio. [7]; CNR-BU 146. [7] | 461.27 | 128 |
| 1848 |  | Montaggio Ponteggi Pila 34 | 1.88d | 2025-08-13 | 2025-08-14 | 1918, 90 | 315.11d | 0d | Da eseguirsi nel rispetto della normativa vigente, dato i ... ggio. A mq, per tutto il tempo di utilizzo del ponteggio. [15]; CNR-BU 146. [15] | 988.43 | 42 |
| 2538 |  | Smontaggio Ponteggi Pila 43 | 0.88d | 2025-08-13 | 2025-08-13 | 2528, 2608 | 227.03d | 1d | Da eseguirsi nel rispetto della normativa vigente, dato i ... ggio. A mq, per tutto il tempo di utilizzo del ponteggio. [7]; CNR-BU 146. [7] | 461.27 | 120 |
| 2468 |  | Smontaggio Ponteggi Pila 42 | 0.88d | 2025-08-14 | 2025-08-15 | 2458, 2538 | 237.15d | 1d | Da eseguirsi nel rispetto della normativa vigente, dato i ... ggio. A mq, per tutto il tempo di utilizzo del ponteggio. [7]; CNR-BU 146. [7] | 461.27 | 112 |
| 1778 |  | Montaggio Ponteggi Pila 33 | 1.88d | 2025-08-18 | 2025-08-19 | 1848, 91 | 324.11d | 0d | Da eseguirsi nel rispetto della normativa vigente, dato i ... ggio. A mq, per tutto il tempo di utilizzo del ponteggio. [15]; CNR-BU 146. [15] | 988.43 | 34 |
| 2398 |  | Smontaggio Ponteggi Pila 41 | 0.88d | 2025-08-18 | 2025-08-19 | 2388, 2468 | 247.28d | 6.45d | Da eseguirsi nel rispetto della normativa vigente, dato i ... ggio. A mq, per tutto il tempo di utilizzo del ponteggio. [7]; CNR-BU 146. [7] | 461.27 | 104 |
| 1708 |  | Montaggio Ponteggi Pila 32 | 1.88d | 2025-08-21 | 2025-08-22 | 1778, 92 | 333.11d | 0d | Da eseguirsi nel rispetto della normativa vigente, dato i ... ggio. A mq, per tutto il tempo di utilizzo del ponteggio. [15]; CNR-BU 146. [15] | 988.43 | 26 |
| 1638 |  | Montaggio Ponteggi Pila 31 | 1.88d | 2025-08-26 | 2025-08-27 | 1708, 93 | 342.11d | 0d | Da eseguirsi nel rispetto della normativa vigente, dato i ... ggio. A mq, per tutto il tempo di utilizzo del ponteggio. [15]; CNR-BU 146. [15] | 988.43 | 18 |
| 2328 |  | Smontaggio Ponteggi Pila 40 | 0.88d | 2025-08-28 | 2025-08-29 | 2318, 2398 | 251.95d | 1d | Da eseguirsi nel rispetto della normativa vigente, dato i ... ggio. A mq, per tutto il tempo di utilizzo del ponteggio. [7]; CNR-BU 146. [7] | 461.27 | 96 |
| 2258 |  | Smontaggio Ponteggi Pila 39 | 0.88d | 2025-09-01 | 2025-09-01 | 2248, 2328 | 262.07d | 1d | Da eseguirsi nel rispetto della normativa vigente, dato i ... ggio. A mq, per tutto il tempo di utilizzo del ponteggio. [7]; CNR-BU 146. [7] | 461.27 | 88 |
| 2188 |  | Smontaggio Ponteggi Pila 38 | 0.88d | 2025-09-02 | 2025-09-03 | 2178, 2258 | 272.2d | 0d | Da eseguirsi nel rispetto della normativa vigente, dato i ... ggio. A mq, per tutto il tempo di utilizzo del ponteggio. [7]; CNR-BU 146. [7] | 461.27 | 80 |
| 2118 |  | Smontaggio Ponteggi Pila 37 | 0.88d | 2025-09-03 | 2025-09-04 | 2108, 2188 | 283.32d | 0d | Da eseguirsi nel rispetto della normativa vigente, dato i ... ggio. A mq, per tutto il tempo di utilizzo del ponteggio. [7]; CNR-BU 146. [7] | 461.27 | 72 |
| 2048 |  | Smontaggio Ponteggi Pila 36 | 0.88d | 2025-09-04 | 2025-09-05 | 2038, 2118 | 294.45d | 0d | Da eseguirsi nel rispetto della normativa vigente, dato i ... ggio. A mq, per tutto il tempo di utilizzo del ponteggio. [7]; CNR-BU 146. [7] | 461.27 | 64 |
| 1978 |  | Smontaggio Ponteggi Pila 35 | 0.88d | 2025-09-05 | 2025-09-08 | 1968, 2048 | 305.57d | 1.59d | Da eseguirsi nel rispetto della normativa vigente, dato i ... ggio. A mq, per tutto il tempo di utilizzo del ponteggio. [7]; CNR-BU 146. [7] | 461.27 | 56 |
| 1908 |  | Smontaggio Ponteggi Pila 34 | 0.88d | 2025-09-10 | 2025-09-10 | 1898, 1978, 1888 | 315.11d | 2.12d | Da eseguirsi nel rispetto della normativa vigente, dato i ... ggio. A mq, per tutto il tempo di utilizzo del ponteggio. [7]; CNR-BU 146. [7] | 461.27 | 48 |
| 1838 |  | Smontaggio Ponteggi Pila 33 | 0.88d | 2025-09-15 | 2025-09-15 | 1828, 1908 | 324.11d | 2.12d | Da eseguirsi nel rispetto della normativa vigente, dato i ... ggio. A mq, per tutto il tempo di utilizzo del ponteggio. [7]; CNR-BU 146. [7] | 461.27 | 40 |
| 1768 |  | Smontaggio Ponteggi Pila 32 | 0.88d | 2025-09-18 | 2025-09-18 | 1758, 1838 | 333.11d | 2.12d | Da eseguirsi nel rispetto della normativa vigente, dato i ... ggio. A mq, per tutto il tempo di utilizzo del ponteggio. [7]; CNR-BU 146. [7] | 461.27 | 32 |
| 1698 |  | Smontaggio Ponteggi Pila 31 | 0.88d | 2025-09-23 | 2025-09-23 | 1688, 1768 | 342.11d | 74.11d | Da eseguirsi nel rispetto della normativa vigente, dato i ... ggio. A mq, per tutto il tempo di utilizzo del ponteggio. [7]; CNR-BU 146. [7] | 461.27 | 24 |

| ID | WBS | Activity | Duration | Start | Finish | Predecessors | Total float | Free float | Resources | Cost |
| --- | --- | --- | --- | --- | --- | --- | --- | --- | --- | --- |
|  | 2 | **DEMOLIZIONI CAMPATA 59-60** |  |  |  |  |  |  |  |  |
|  | 004 | **ATTIVITA' DI COMPLETAMENTO** |  | 2025-02-11 | 2027-05-12 |  |  |  |  |  |
| 266 |  | Dismisisione aree di cantiere | 30d | 2027-04-01 | 2027-05-12 | 173, 264 | 0d |  |  |  |
| 268 |  | ULTIMAZIONE LAVORI | 5d | 2027-04-29 | 2027-05-05 | 267 | 5d |  |  |  |
|  | 024 | **LINEE TELEFONICHE INTERFERENTI** |  | 2025-02-11 | 2025-03-03 |  |  |  |  |  |
| A1000 |  | Linee Telefoniche Interferenti Demolizione | 5d | 2025-02-11 | 2025-02-17 | 9 | 557d | 0d | Compreso ogni onere per la demolizione eventuale taglio c ... per carico, trasporto e scarico dei pali ai depositi ANAS. [2]; RIMOZIONE DI ARMATURA COMPRESI GLI ACCESSORI ELETTRICI [2]; Entro e fuori terra con i mezzi che l'impresa sceglierà i ... rata sulla struttura da demolire per l'effettiva cubatura. [51.65]; CEMENTO Provenienti dalle attività di costruzione e demolizione. ... ione. Compreso il terreno proveniente da siti contaminati. [44.13 T] | 2,437.38 |
| A1010 |  | Linee Telefoniche Interferenti Ricostruzione | 10d | 2025-02-18 | 2025-03-03 | A1000 | 562d |  | Conforme CEI EN 61386 Per cavidotto e per la protezione d ... rati. Con marchio IMQ. Compresa fornitura e posa in opera. [87]; In terreno di qualsiasi natura e consistenza delle dimens ... compreso ogni onere per il rinterro e quant'altro occorra. [174]; Calcestruzzo Magrone 150 kg/mc Confezionato a prestazione garantita fornito a piè d'oper ... esclusi i ponteggi, le casseforme ed il ferro d'armatura. [17.4]; Per strutture in conglomerato cementizio semplice, armato ... , escluse le armature di sostegno oltre i 2 metri di luce. [34.8]; Conforme alla norma UNI EN 1917. Fornitura e posa in ope ... essari per dare il lavoro finito a perfetta regola d'arte. [2]; Conforme alle norma UNI EN 1917. Fornitura e posa in oper ... usino/coperchio da pagarsi con le relative voci di elenco. [2]; Fornitura e posa in opera di chiusino, posato su pozzetti ... a perfetta regola d'arte. Conforme alla norma UNI EN 1563. [2]; Con diametro in sommità 60 mm, stampato e saldato in long ... di derivazione. Compresa la fornitura e la posa in opera. [2]; Fornitura e posa in opera di plinto prefabbricato in cls ... dello scavo e il ripristino dei fianchi con terreno arido. [2]; PLASTICA Provenienti dalle attività di costruzione e demolizione. ... ione. Compreso il terreno proveniente da siti contaminati. [0.17 T] | 6,845.02 |
|  | 025 | **LINEE ELETTRICHE BT INTERFERENTI** |  | 2025-02-18 | 2025-03-10 |  |  |  |  |  |
| A1020 |  | Linee Elettriche BT interferenti Demilizione | 5d | 2025-02-18 | 2025-02-24 | A1000 | 557d | 0d | Compreso ogni onere per la demolizione eventuale taglio c ... per carico, trasporto e scarico dei pali ai depositi ANAS. [2]; RIMOZIONE DI ARMATURA COMPRESI GLI ACCESSORI ELETTRICI [2]; Entro e fuori terra con i mezzi che l'impresa sceglierà i ... rata sulla struttura da demolire per l'effettiva cubatura. [51.65]; CEMENTO Provenienti dalle attività di costruzione e demolizione. ... ione. Compreso il terreno proveniente da siti contaminati. [129.13 T] | 4,179.88 |
| A1030 |  | Linee Elettriche BT interferenti Ricostruzione | 10d | 2025-02-25 | 2025-03-10 | A1020 | 557d |  | Conforme CEI EN 61386 Per cavidotto e per la protezione d ... rati. Con marchio IMQ. Compresa fornitura e posa in opera. [257]; In terreno di qualsiasi natura e consistenza delle dimens ... compreso ogni onere per il rinterro e quant'altro occorra. [514]; Calcestruzzo Magrone 150 kg/mc Confezionato a prestazione garantita fornito a piè d'oper ... esclusi i ponteggi, le casseforme ed il ferro d'armatura. [51.54]; Per strutture in conglomerato cementizio semplice, armato ... , escluse le armature di sostegno oltre i 2 metri di luce. [102]; Conforme alla norma UNI EN 1917. Fornitura e posa in ope ... essari per dare il lavoro finito a perfetta regola d'arte. [4]; Conforme alle norma UNI EN 1917. Fornitura e posa in oper ... usino/coperchio da pagarsi con le relative voci di elenco. [4]; Fornitura e posa in opera di chiusino, posato su pozzetti ... a perfetta regola d'arte. Conforme alla norma UNI EN 1563. [4]; Con diametro in sommità 60 mm, stampato e saldato in long ... di derivazione. Compresa la fornitura e la posa in opera. [2]; Fornitura e posa in opera di plinto prefabbricato in cls ... dello scavo e il ripristino dei fianchi con terreno arido. [2]; PLASTICA Provenienti dalle attività di costruzione e demolizione. ... ione. Compreso il terreno proveniente da siti contaminati. [0.52 T] | 16,887.08 |
|  | 005 | **RIPRISTINI AMBIENTALI** |  | 2027-04-01 | 2027-04-28 |  |  |  |  |  |
|  | 026 | **RIPRISTINI AMBIENTALI** |  | 2027-04-01 | 2027-04-28 |  |  |  |  |  |
| 267 |  | Realizzazione opere a verde e ripristino dei luoghi ante operam | 20d | 2027-04-01 | 2027-04-28 | 266 SS | 5d | 0d | Fornitura e stesa di terreno vegetale per la formazione d ... sferimento dallo scavo al sito di collocazione definitiva. [19746.6 mc]; Con semi da prato compresi semi di trifoglio repens compr ... dare il lavoro finito e completo a perfetta regola d'arte. [65822]; Le piante devono essere complete di certificato di proven ... mazione, la garanzia di attecchimento ed ogni altro onere. [1743]; Le piante devono essere complete di certificato di proven ... affiamento, garanzia di attecchimento ed ogni altro onere. [138]; Le piante devono essere complete di certificato di proven ... affiamento, garanzia di attecchimento ed ogni altro onere. [484] | 611,893.1 |
|  | 3 | **OVERHEAD** |  |  |  |  |  |  |  |  |
|  | A | **COSTI PER PERSONALE IMPIEGATO** |  |  |  |  |  |  |  |  |
|  | 1 | **Costi personale Impiegato** |  |  |  |  |  |  |  |  |
|  | 2 | **Note Spese** |  |  |  |  |  |  |  |  |
|  | 3 | **Vitto (Impiegati + Operai)** |  |  |  |  |  |  |  |  |
|  | 4 | **Alloggi (affitto + spese gestione)** |  |  |  |  |  |  |  |  |
|  | 5 | **Viaggi, soggiorni, trasferte** |  |  |  |  |  |  |  |  |
|  | 6 | **Oneri di rappresentanza** |  |  |  |  |  |  |  |  |
|  | 7 | **EUROMED1 - QUALITA' SICUREZZA AMBIENTE** |  |  |  |  |  |  |  |  |
|  | B | **GESTIONE UFFICI DI CANTIERE E SERVIZI GENERALI** |  |  |  |  |  |  |  |  |
|  | 1 | **Allacci e consumi acqua ed elettricità (30KW contratto)** |  |  |  |  |  |  |  |  |
|  | 2 | **Pulizie** |  |  |  |  |  |  |  |  |
|  | 3 | **Spese telefoniche/internet/cellulari azien.** |  |  |  |  |  |  |  |  |
|  | 4 | **Hardware/Software/Rete/VOiP** |  |  |  |  |  |  |  |  |
|  | 5 | **Postali, cancelleria, fotocopie, stampe ect.** |  |  |  |  |  |  |  |  |
|  | 6 | **Varie** |  |  |  |  |  |  |  |  |
|  | 7 | **Videosorveglianza e allarme (videocam; cablaggio; postazione controllo)** |  |  |  |  |  |  |  |  |
|  | 8 | **Guardiania, portierato** |  |  |  |  |  |  |  |  |
|  | 9 | **Imposte e tasse** |  |  |  |  |  |  |  |  |
|  | C | **VEICOLI, MEZZI, ATTREZZATURE DI CANTIERE** |  |  |  |  |  |  |  |  |
|  | 1 | **Automobili e furgoni** |  |  |  |  |  |  |  |  |
|  | 2 | **Consumi automobili e furgoni** |  |  |  |  |  |  |  |  |
|  | 3 | **Altri mezzi a servizio del cantiere** |  |  |  |  |  |  |  |  |
|  | 4 | **Consumi altri mezzi** |  |  |  |  |  |  |  |  |
|  | 5 | **Strumenti topografici /software e simili** |  |  |  |  |  |  |  |  |
|  | 6 | **Manutenzione mezzi** |  |  |  |  |  |  |  |  |
|  | 7 | **Materiale vario** |  |  |  |  |  |  |  |  |
|  | D | **IMPIANTO E SMONTAGGIO UFFICI CANTIERE** |  |  |  |  |  |  |  |  |
|  | 1 | **Realizzazione Impianto Cantiere (opere accessorie per baraccamenti e piazzale)** |  |  |  |  |  |  |  |  |
|  | 2 | **Baraccamenti (uffici imprese e DL, mensa, infermeria e dormitori)(aquisto e trasporti baraccamenti)** |  |  |  |  |  |  |  |  |
|  | 3 | **Arredamenti cantiere** |  |  |  |  |  |  |  |  |
|  | 4 | **Segnaletica e mantenimento viabilità e recinzione cantiere + segnaletica di deviazione** |  |  |  |  |  |  |  |  |
|  | 5 | **Tabelle lavori + spese pubblicità** |  |  |  |  |  |  |  |  |
|  | 6 | **Lavori disimpianto cantiere** |  |  |  |  |  |  |  |  |
|  | 7 | **Pesa a ponte** |  |  |  |  |  |  |  |  |
|  | 8 | **Impianto idrico cantiere** |  |  |  |  |  |  |  |  |
|  | 9 | **Impianto elettrico, illuminazione, messa a terra (montaggio e smont)** |  |  |  |  |  |  |  |  |
|  | 10 | **Manutenzione straordinaria apprestamenti di cantiere esistenti** |  |  |  |  |  |  |  |  |
|  | 11 | **WC chimico (mensile) + spurgo fossa Himoff (n. 5 spurghi x 700 € = 3.500 € /15 mesi = 230 €/mese)** |  |  |  |  |  |  |  |  |
|  | 12 | **Containers corazzato per ricovero attrezzatura** |  |  |  |  |  |  |  |  |
|  | 13 | **Recinzione con pannelli modulari elettrosaldati e piedini in cls** |  |  |  |  |  |  |  |  |
|  | 14 | **Andatoie e passerelle** |  |  |  |  |  |  |  |  |
|  | 15 | **Trasporti viaggi A/R sede** |  |  |  |  |  |  |  |  |
|  | 16 | **Trasporto A/R montaggio e smontaggio gru a torre** |  |  |  |  |  |  |  |  |
|  | 17 | **Acquisto tronchetto di base gru a torre da annegare** |  |  |  |  |  |  |  |  |
|  | 18 | **Realizzazione basamento gru a torre in C.A.** |  |  |  |  |  |  |  |  |
|  | 19 | **Demolizione basamento gru a torre** |  |  |  |  |  |  |  |  |
|  | E | **RAPPORTI CON PUBBLICO** |  |  |  |  |  |  |  |  |
|  | 1 | **Infopoint-video-rendering** |  |  |  |  |  |  |  |  |
|  | 2 | **Report fotografico per Committenza** |  |  |  |  |  |  |  |  |
|  | F | **CONSULENZE PROFESSIONISTI** |  |  |  |  |  |  |  |  |
|  | 1 | **RSPP** |  |  |  |  |  |  |  |  |
|  | 2 | **Consulente progettazione in corso d'opera (Antonelli - ACS ingegneri)** |  |  |  |  |  |  |  |  |
|  | 3 | **Altre consulenze (archeologia, botanica, ecc.)** |  |  |  |  |  |  |  |  |
|  | 4 | **Consulenza ambientale** |  |  |  |  |  |  |  |  |
|  | 5 | **Controllo Tecnico Costruzioni per decennale postuma** |  |  |  |  |  |  |  |  |
|  | 6 | **Consulenze legali e contenzioso** |  |  |  |  |  |  |  |  |

Notes:
- 268: Expenses: ULTIMAZIONE LAVORI - (cost) 0

| WBS | Activity |
| --- | --- |
| 7 | **Consulenza tecnica per impianti** |
| 8 | **Consulenza legale per pratiche civili** |
| 9 | **Topografia** |
| G | **ONERI GENERALI DI CONTRATTO - ASSICURAZIONI** |
| 1 | **Fidejussione definitiva** |
| 2 | **Assicurazioni contrattuali (CAR, RCT e RCO aziendale)** |
| 3 | **Assicurazioni contrattuali (postuma)** |
| 4 | **Polizza per Anticipazione Contrattuale** |
| 5 | **Polizza per svincolo ritenute** |
| 6 | **Testimoniali di stato** |
| 7 | **Qualifiche materiali** |
| 8 | **Spese per Prove e collaudi** |
| 9 | **Oneri generici (0,1% su ricavi Lavori)** |
| 10 | **Spese pubblicazione bando** |
| 11 | **Spese registrazione contratto** |
| 12 | **Oneri a rimborso** |
| 13 | **Controllo tecnico gara** |
| 14 | **Oneri di conferimento a discarica imballaggi e simili/ test di cessione** |
| 15 | **Imprevisti** |
| 16 | **Oneri di sicurezza (100% COVID + 15% ALTRI)** |
| 17 | **Manutenzione fino a collaudo (1 squadra con furgone 1 volta a settimana x 3 mesi)** |
| 18 | **Riproduzione cartacea progetto** |
| 19 | **consorzio VALORI** |
| H | **ONERI GENERALI DI CONTRATTO PER MIGLIORIE** |
| 1 | **Criterio B.5.1 – Materiali per la realizzazione dei conglomerati cementizi e malte** |
| 2 | **Criterio B.5.2 – Materiali per la realizzazione di congl. bitum, imperm. e vernic.** |
| 3 | **Criterio B.5.3 – Materiali/Tecnologie per la realizzazione di prefabbricati e demolizioni** |
| 4 | **Offerta B.2 – Gestione del cantiere** |
| 5 | **Offerta B.3.1 – Redazione elaborati in carico all’appaltatore con metodologia BIM** |
| 6 | **Offerta B.6 – Pari opportunità di genere, generazionali ed inclusione lavorativa** |
| I | **MAGAZZINO** |
| 1 | **Magazzino** |
| L | **CISTERNA CARBURANTE** |
| 1 | **Cisterna carburante** |
| M | **FERMO MEZZI** |
| 1 | **Fermo mezzi** |
